# CR-F0009-0305-MB-F-00001

Schedule from MS Project, 2026-04-27 to 2026-07-29, status date 2026-07-14, A marks actual dates.

## Calendars

- Padrão: Mon-Fri 09:00-12:00, 13:00-18:00; Sat-Sun off. Exceptions (off unless hours are given): 2026-06-04 to 2026-06-05 (FERIADO), 2026-07-09 to 2026-07-10.

## Schedule

| ID | WBS | Task | Type | Duration | Start | Finish | Predecessors | Complete | Remaining | Baseline start | Baseline finish | Baseline duration | Total slack | Free slack | Constraint | Disciplina | Início_LB_R0 | Término_LB_R0 | Text5 | ILB_2 | TLB_2 | Sprints |
| --- | --- | --- | --- | --- | --- | --- | --- | --- | --- | --- | --- | --- | --- | --- | --- | --- | --- | --- | --- | --- | --- | --- |
| 1 | 1 | **F0009 - Programa Marabá** |  | 55d | 2026-04-27 A | 2026-07-16 |  | 67% | 17.89d | 2026-04-27 | 2026-07-08 | 53d | 0d |  |  | GERAL | Seg 27/04/26 | Ter 07/07/26 | F0009 - Programa Marabá | Seg 27/04/26 | Ter 07/07/26 | Sprint 2 |
| 2 | 1.1 | **Área 0306 - Sopradores** |  | 55d | 2026-04-27 A | 2026-07-16 |  | 67% | 17.89d | 2026-04-27 | 2026-07-08 | 53d | 0d |  |  | GERAL | Seg 27/04/26 | Ter 07/07/26 | Área 0306 - Sopradores | Seg 27/04/26 | Ter 07/07/26 | Sprint 2 |
| 3 | 1.1.1 | KOM - Início de projeto |  | 1d | 2026-04-27 A | 2026-04-27 A |  | 100% |  | 2026-04-27 | 2026-04-27 | 0d |  |  |  | GERAL | Seg 27/04/26 | Seg 27/04/26 | KOM - Início de projeto | Seg 27/04/26 | Seg 27/04/26 | Sprint 2 |
| 4 | 1.1.2 | **Marcos** |  | 36d | 2026-05-19 A | 2026-07-13 |  | 78% | 7.8d | 2026-05-19 | 2026-06-05 | 13d | 0d |  |  | MARCOS | Ter 19/05/26 | Sex 05/06/26 | Marcos | Ter 19/05/26 | Sex 05/06/26 | Sprint 4 |
| 5 | 1.1.2.1 | Critério de Projeto de Processo | manual | 1d | 2026-06-30 A | 2026-06-30 |  | 70% | 0.3d | 2026-06-05 | 2026-06-05 | 0d |  |  |  | MARCOS | Sex 05/06/26 | Sex 05/06/26 | Critério de Projeto de Processo | Sex 05/06/26 | Sex 05/06/26 | Sprint 10 |
| 6 | 1.1.2.2 | Critério de Projeto de Mecânica | manual | 1d | 2026-05-19 A | 2026-05-19 A |  | 100% |  | 2026-05-19 | 2026-05-19 | 0d |  |  |  | MARCOS | Ter 19/05/26 | Ter 19/05/26 | Critério de Projeto de Mecânica | Ter 19/05/26 | Ter 19/05/26 | Sprint 4 |
| 7 | 1.1.2.3 | Critério de Projeto de Elétrica | manual | 1d | 2026-06-15 A | 2026-06-15 A |  | 100% |  | 2026-06-05 | 2026-06-05 | 0d |  |  |  | MARCOS | Sex 05/06/26 | Sex 05/06/26 | Critério de Projeto de Elétrica | Sex 05/06/26 | Sex 05/06/26 | Sprint 8 |
| 8 | 1.1.2.4 | Critério de Projeto de Automação | manual | 1d | 2026-06-09 A | 2026-06-09 A |  | 100% |  | 2026-06-05 | 2026-06-05 | 0d |  |  |  | MARCOS | Sex 05/06/26 | Sex 05/06/26 | Critério de Projeto de automação | Sex 05/06/26 | Sex 05/06/26 | Sprint 7 |
| 9 | 1.1.2.5 | Critério de Projeto de Tubulação | manual | 1d | 2026-05-22 A | 2026-05-22 A |  | 100% |  | 2026-05-22 | 2026-05-22 | 0d |  |  |  | MARCOS | Sex 22/05/26 | Sex 22/05/26 | Critério de Projeto de Tubulação | Sex 22/05/26 | Sex 22/05/26 | Sprint 4 |
| 10 | 1.1.2.6 | Critério de Projeto de Estrutura metálica | manual | 1d | 2026-07-13 | 2026-07-13 |  |  |  | 2026-06-05 | 2026-06-05 | 0d |  |  |  | MARCOS | Sex 05/06/26 | Sex 05/06/26 | Critério de Projeto de Estrutura metálica | Sex 05/06/26 | Sex 05/06/26 | Sprint 2 |
| 11 | 1.1.3 | **Pendências** |  | 1d | 2026-04-29 A | 2026-04-29 A |  | 100% |  | 2026-04-29 | 2026-04-29 | 0d |  |  |  | PENDÊNCIAS | Qua 29/04/26 | Qua 29/04/26 | Pendências | Qua 29/04/26 | Qua 29/04/26 | Sprint 2 |
| 12 | 1.1.3.1 | Recebimento de dados de entrada |  | 1d | 2026-04-29 A | 2026-04-29 A |  | 100% |  | 2026-04-29 | 2026-04-29 | 0d |  |  | finish no earlier than 2026-04-29 | PENDÊNCIAS | Qua 29/04/26 | Qua 29/04/26 | Recebimento de dados de entrada | Qua 29/04/26 | Qua 29/04/26 | Sprint 2 |
| 13 | 1.1.4 | **Planejamento** |  | 27d | 2026-04-27 A | 2026-06-02 A |  | 100% |  | 2026-04-27 | 2026-06-01 | 25.4d |  |  |  | PLANEJAMENTO | Seg 27/04/26 | Seg 18/05/26 | Planejamento | Seg 27/04/26 | Seg 18/05/26 | Sprint 2 |
| 14 | 1.1.4.1 | **LD-F0009-0306-MB-F-00001** |  | 27d | 2026-04-27 A | 2026-06-02 A |  | 100% |  | 2026-04-27 | 2026-06-01 | 25.4d |  |  |  | PLANEJAMENTO | Seg 27/04/26 | Qua 13/05/26 | LD-F0009-0306-MB-F-00001 | Seg 27/04/26 | Qua 13/05/26 | Sprint 2 |
| 15 | 1.1.4.1.1 | Emissão inicial |  | 3d | 2026-04-27 A | 2026-04-29 A | 3 | 100% |  | 2026-04-27 | 2026-04-29 | 3d |  |  |  | PLANEJAMENTO | Seg 27/04/26 | 07/07/2026 | Emissão inicial | Seg 27/04/26 | 07/07/2026 | Sprint 2 |
| 16 | 1.1.4.1.2 | Análise Tecnored |  | 1d | 2026-04-30 A | 2026-04-30 A | 15 | 100% |  | 2026-04-30 | 2026-04-30 | 1d |  |  |  | PLANEJAMENTO | Qui 30/04/26 | Qui 30/04/26 | Análise Tecnored | Qui 30/04/26 | Qui 30/04/26 | Sprint 2 |
| 17 | 1.1.4.1.3 | Atendimento de comentários |  | 2.6d | 2026-05-01 A | 2026-05-12 A | 16FS+7d | 100% |  | 2026-05-01 | 2026-05-12 | 2d |  |  | finish no earlier than 2026-05-12 | PLANEJAMENTO | Sex 01/05/26 | Ter 12/05/26 | Atendimento de comentários | Sex 01/05/26 | Ter 12/05/26 | Sprint 2 |
| 18 | 1.1.4.1.4 | Aprovação |  | 2d | 2026-06-01 A | 2026-06-02 A | 17FS+13d | 100% |  | 2026-05-29 | 2026-06-01 | 1d |  |  | finish no earlier than 2026-06-01 | PLANEJAMENTO | Ter 12/05/26 | Qua 13/05/26 | Aprovação | Ter 12/05/26 | Qua 13/05/26 | Sprint 6 |
| 19 | 1.1.4.2 | **CR-F0009-0306-MB-F-00001** |  | 23d | 2026-04-30 A | 2026-06-01 A |  | 100% |  | 2026-04-30 | 2026-05-29 | 21.4d |  |  |  | PLANEJAMENTO | Qui 30/04/26 | Seg 18/05/26 | CR-F0009-0306-MB-F-00001 | Qui 30/04/26 | Seg 18/05/26 | Sprint 2 |
| 20 | 1.1.4.2.1 | Emissão inicial |  | 3d | 2026-04-30 A | 2026-05-04 A | 15 | 100% |  | 2026-04-30 | 2026-05-04 | 3d |  |  |  | PLANEJAMENTO | Qui 30/04/26 | Seg 04/05/26 | Emissão inicial | Qui 30/04/26 | Seg 04/05/26 | Sprint 2 |
| 21 | 1.1.4.2.2 | Análise Tecnored |  | 1d | 2026-05-05 A | 2026-05-05 A | 20 | 100% |  | 2026-05-05 | 2026-05-05 | 1d |  |  |  | PLANEJAMENTO | Ter 05/05/26 | Ter 05/05/26 | Análise Tecnored | Ter 05/05/26 | Ter 05/05/26 | Sprint 2 |
| 22 | 1.1.4.2.3 | Atendimento de comentários |  | 2.6d | 2026-05-06 A | 2026-05-15 A | 21FS+7d | 100% |  | 2026-05-06 | 2026-05-15 | 2d |  |  | finish no earlier than 2026-05-15 | PLANEJAMENTO | Qua 06/05/26 | Sex 15/05/26 | Atendimento de comentários | Qua 06/05/26 | Sex 15/05/26 | Sprint 2 |
| 23 | 1.1.4.2.4 | Aprovação |  | 2d | 2026-05-29 A | 2026-06-01 A | 22FS+9d | 100% |  | 2026-05-28 | 2026-05-29 | 1d |  |  | finish no earlier than 2026-05-29 | PLANEJAMENTO | Sex 15/05/26 | Seg 18/05/26 | Aprovação | Sex 15/05/26 | Seg 18/05/26 | Sprint 5 |
| 24 | 1.1.5 | **Coordenação** | inactive | 44d | 2026-04-28 | 2026-06-30 |  |  |  | 2026-04-27 | 2026-07-07 | 52d | 10d |  |  | COORDENAÇÃO | Seg 27/04/26 | Qua 01/07/26 | Coordenação | Seg 27/04/26 | Qua 01/07/26 | Sprint 2 |
| 25 | 1.1.5.1 | **RM-F0009-0306-MB-G-00001** | inactive | 6d | 2026-06-11 | 2026-06-18 |  |  |  | 2026-06-01 | 2026-06-09 | 7d | 11d |  |  | COORDENAÇÃO | Seg 25/05/26 | Ter 02/06/26 | RM-F0009-0306-MB-G-00001 | Seg 25/05/26 | Ter 02/06/26 | Sprint 7 |
| 26 | 1.1.5.1.1 | Emissão inicial | inactive | 3d | 2026-06-11 | 2026-06-15 | 3FS+25d |  |  | 2026-06-01 | 2026-06-03 | 3d | 11d | 0d | finish no earlier than 2026-06-15 | COORDENAÇÃO | Seg 25/05/26 | Qua 27/05/26 | Emissão inicial | Seg 25/05/26 | Qua 27/05/26 | Sprint 7 |
| 27 | 1.1.5.1.2 | Análise Tecnored | inactive | 1d | 2026-06-16 | 2026-06-16 | 26 |  |  | 2026-06-04 | 2026-06-04 | 1d | 16d | 0d |  | COORDENAÇÃO | Qui 28/05/26 | Qui 28/05/26 | Análise Tecnored | Qui 28/05/26 | Qui 28/05/26 | Sprint 8 |
| 28 | 1.1.5.1.3 | Atendimento de comentários | inactive | 1d | 2026-06-17 | 2026-06-17 | 27 |  |  | 2026-06-05 | 2026-06-08 | 2d | 18d | 0d |  | COORDENAÇÃO | Sex 29/05/26 | Seg 01/06/26 | Atendimento de comentários | Sex 29/05/26 | Seg 01/06/26 | Sprint 8 |
| 29 | 1.1.5.1.4 | Aprovação | inactive | 1d | 2026-06-18 | 2026-06-18 | 28 |  |  | 2026-06-09 | 2026-06-09 | 1d | 18d |  |  | COORDENAÇÃO | Ter 02/06/26 | Ter 02/06/26 | Aprovação | Ter 02/06/26 | Ter 02/06/26 | Sprint 8 |

| ID | WBS | Task | Type | Duration | Start | Finish | Predecessors | Complete | Baseline start | Baseline finish | Baseline duration | Total slack | Free slack | Constraint | Baseline cost | Disciplina | Início_LB_R0 | Término_LB_R0 | Text5 | ILB_2 | TLB_2 | Sprints |
| --- | --- | --- | --- | --- | --- | --- | --- | --- | --- | --- | --- | --- | --- | --- | --- | --- | --- | --- | --- | --- | --- | --- |
| 30 | 1.1.5.2 | **RM-F0009-0306-MB-G-00002** | inactive | 5d | 2026-06-23 | 2026-06-29 |  |  | 2026-06-18 | 2026-06-26 | 7d | 11d |  |  |  | COORDENAÇÃO | Qui 11/06/26 | Sex 19/06/26 | RM-F0009-0306-MB-G-00002 | Qui 11/06/26 | Sex 19/06/26 | Sprint 9 |
| 31 | 1.1.5.2.1 | Emissão inicial | inactive | 2d | 2026-06-23 | 2026-06-24 | 26FS+5d |  | 2026-06-18 | 2026-06-22 | 3d | 11d | 0d |  |  | COORDENAÇÃO | Qui 11/06/26 | Seg 15/06/26 | Emissão inicial | Qui 11/06/26 | Seg 15/06/26 | Sprint 9 |
| 32 | 1.1.5.2.2 | Análise Tecnored | inactive | 1d | 2026-06-25 | 2026-06-25 | 31 |  | 2026-06-23 | 2026-06-23 | 1d | 11d | 0d |  |  | COORDENAÇÃO | Ter 16/06/26 | Ter 16/06/26 | Análise Tecnored | Ter 16/06/26 | Ter 16/06/26 | Sprint 9 |
| 33 | 1.1.5.2.3 | Atendimento de comentários | inactive | 1d | 2026-06-26 | 2026-06-26 | 32 |  | 2026-06-24 | 2026-06-25 | 2d | 11d | 0d |  |  | COORDENAÇÃO | Qua 17/06/26 | Qui 18/06/26 | Atendimento de comentários | Qua 17/06/26 | Qui 18/06/26 | Sprint 9 |
| 34 | 1.1.5.2.4 | Aprovação | inactive | 1d | 2026-06-29 | 2026-06-29 | 33 |  | 2026-06-26 | 2026-06-26 | 1d | 11d |  |  |  | COORDENAÇÃO | Sex 19/06/26 | Sex 19/06/26 | Aprovação | Sex 19/06/26 | Sex 19/06/26 | Sprint 10 |
| 35 | 1.1.5.3 | **RM-F0009-0306-MB-G-00003** | inactive | 5d | 2026-06-23 | 2026-06-29 |  |  | 2026-06-18 | 2026-06-26 | 7d | 11d |  |  |  | COORDENAÇÃO | Qui 11/06/26 | Sex 19/06/26 | RM-F0009-0306-MB-G-00002 | Qui 11/06/26 | Sex 19/06/26 | Sprint 9 |
| 36 | 1.1.5.3.1 | Emissão inicial | inactive | 2d | 2026-06-23 | 2026-06-24 | 26FS+5d |  | 2026-06-18 | 2026-06-22 | 3d | 11d | 0d |  |  | COORDENAÇÃO | Qui 11/06/26 | Seg 15/06/26 | Emissão inicial | Qui 11/06/26 | Seg 15/06/26 | Sprint 9 |
| 37 | 1.1.5.3.2 | Análise Tecnored | inactive | 1d | 2026-06-25 | 2026-06-25 | 36 |  | 2026-06-23 | 2026-06-23 | 1d | 11d | 0d |  |  | COORDENAÇÃO | Ter 16/06/26 | Ter 16/06/26 | Análise Tecnored | Ter 16/06/26 | Ter 16/06/26 | Sprint 9 |
| 38 | 1.1.5.3.3 | Atendimento de comentários | inactive | 1d | 2026-06-26 | 2026-06-26 | 37 |  | 2026-06-24 | 2026-06-25 | 2d | 11d | 0d |  |  | COORDENAÇÃO | Qua 17/06/26 | Qui 18/06/26 | Atendimento de comentários | Qua 17/06/26 | Qui 18/06/26 | Sprint 9 |
| 39 | 1.1.5.3.4 | Aprovação | inactive | 1d | 2026-06-29 | 2026-06-29 | 38 |  | 2026-06-26 | 2026-06-26 | 1d | 11d |  |  |  | COORDENAÇÃO | Sex 19/06/26 | Sex 19/06/26 | Aprovação | Sex 19/06/26 | Sex 19/06/26 | Sprint 10 |
| 40 | 1.1.5.4 | **RL-F0009-0306-MB-G-00001** | inactive | 4d | 2026-06-25 | 2026-06-30 |  |  | 2026-06-30 | 2026-07-07 | 6d | 10d |  |  |  | COORDENAÇÃO | Ter 23/06/26 | Qua 01/07/26 | RL-F0009-0306-MB-G-00001 | Ter 23/06/26 | Qua 01/07/26 | Sprint 9 |
| 41 | 1.1.5.4.1 | Emissão inicial | inactive | 1d | 2026-06-25 | 2026-06-25 | 27 |  | 2026-06-30 | 2026-07-01 | 2d | 10d | 0d | start no earlier than 2026-06-25 |  | COORDENAÇÃO | Ter 23/06/26 | Qui 25/06/26 | Emissão inicial | Ter 23/06/26 | Qui 25/06/26 | Sprint 9 |
| 42 | 1.1.5.4.2 | Análise Tecnored | inactive | 1d | 2026-06-26 | 2026-06-26 | 41 |  | 2026-07-02 | 2026-07-02 | 1d | 10d | 0d |  |  | COORDENAÇÃO | Sex 26/06/26 | Sex 26/06/26 | Análise Tecnored | Sex 26/06/26 | Sex 26/06/26 | Sprint 9 |
| 43 | 1.1.5.4.3 | Atendimento de comentários | inactive | 1d | 2026-06-29 | 2026-06-29 | 42 |  | 2026-07-03 | 2026-07-06 | 2d | 10d | 0d |  |  | COORDENAÇÃO | Seg 29/06/26 | Ter 30/06/26 | Atendimento de comentários | Seg 29/06/26 | Ter 30/06/26 | Sprint 10 |
| 44 | 1.1.5.4.4 | Aprovação | inactive | 1d | 2026-06-30 | 2026-06-30 | 43 |  | 2026-07-07 | 2026-07-07 | 1d | 10d |  |  |  | COORDENAÇÃO | Qua 01/07/26 | Qua 01/07/26 | Aprovação | Qua 01/07/26 | Qua 01/07/26 | Sprint 10 |
| 45 | 1.1.5.5 | **LP-F0009-0306-MB-G-00001** | inactive | 44d | 2026-04-28 | 2026-06-30 |  |  | 2026-04-27 | 2026-06-30 | 47d | 10d |  |  |  | COORDENAÇÃO | Seg 27/04/26 | Ter 30/06/26 | LP-F0009-0306-MB-G-00001 | Seg 27/04/26 | Ter 30/06/26 | Sprint 2 |
| 46 | 1.1.5.5.1 | Emissão inicial | inactive | 3d | 2026-04-28 | 2026-04-30 | 3 |  | 2026-04-27 | 2026-04-29 | 3d | 17d | 7d |  |  | COORDENAÇÃO | Seg 27/04/26 | Qua 29/04/26 | Emissão inicial | Seg 27/04/26 | Qua 29/04/26 | Sprint 2 |
| 47 | 1.1.5.5.2 | Análise Tecnored | inactive | 1d | 2026-06-18 | 2026-06-18 | 46FS+25d |  | 2026-06-11 | 2026-06-11 | 1d | 10d | 0d | start no earlier than 2026-06-18 |  | COORDENAÇÃO | Qui 11/06/26 | Qui 11/06/26 | Análise Tecnored | Qui 11/06/26 | Qui 11/06/26 | Sprint 8 |
| 48 | 1.1.5.5.3 | Atendimento de comentários | inactive | 2d | 2026-06-26 | 2026-06-29 | 47FS+5d |  | 2026-06-26 | 2026-06-29 | 2d | 10d | 0d |  |  | COORDENAÇÃO | Sex 26/06/26 | Seg 29/06/26 | Atendimento de comentários | Sex 26/06/26 | Seg 29/06/26 | Sprint 9 |
| 49 | 1.1.5.5.4 | Aprovação | inactive | 1d | 2026-06-30 | 2026-06-30 | 48 |  | 2026-06-30 | 2026-06-30 | 1d | 10d |  |  |  | COORDENAÇÃO | Ter 30/06/26 | Ter 30/06/26 | Aprovação | Ter 30/06/26 | Ter 30/06/26 | Sprint 10 |
| 50 | 1.1.6 | **Processo** |  | 4d | 2026-06-05 A | 2026-06-11 A |  | 100% | 2026-06-05 | 2026-06-11 | 5d |  |  |  |  | PROCESSOS | Ter 05/05/26 | Seg 22/06/26 | Processo | Ter 05/05/26 | Seg 22/06/26 | Sprint 6 |
| 51 | 1.1.6.1 | **CP-F0009-0306-MB-P-00001** | inactive | 43d | 2026-05-05 | 2026-07-06 |  |  |  |  |  | 6d |  |  | -0 |  |  |  |  |  |  | Sprint 2 |
| 52 | 1.1.6.1.1 | Emissão inicial | inactive | 7d | 2026-05-05 | 2026-05-13 | 20 |  |  |  |  | 38d | 32d |  | -0 |  |  |  |  |  |  | Sprint 2 |
| 53 | 1.1.6.1.2 | Análise Tecnored | inactive | 1d | 2026-07-01 | 2026-07-01 | 52, 5 |  |  |  |  | 6d | 0d |  | -0 |  |  |  |  |  |  | Sprint 10 |
| 54 | 1.1.6.1.3 | Atendimento de comentários | inactive | 2d | 2026-07-02 | 2026-07-03 | 53 |  |  |  |  | 6d | 0d |  | -0 |  |  |  |  |  |  | Sprint 10 |
| 55 | 1.1.6.1.4 | Aprovação | inactive | 1d | 2026-07-06 | 2026-07-06 | 54 |  |  |  |  | 6d |  |  | -0 |  |  |  |  |  |  | Sprint 11 |

| ID | WBS | Task | Type | Duration | Start | Finish | Predecessors | Complete | Remaining | Baseline start | Baseline finish | Baseline duration | Total slack | Free slack | Constraint | Baseline cost | Sprints | Disciplina | Início_LB_R0 | Término_LB_R0 | Text5 | ILB_2 | TLB_2 |
| --- | --- | --- | --- | --- | --- | --- | --- | --- | --- | --- | --- | --- | --- | --- | --- | --- | --- | --- | --- | --- | --- | --- | --- |
| 56 | 1.1.6.2 | **MD-F0009-0306-MB-P-00001** | inactive | 7d | 2026-06-22 | 2026-06-30 |  |  |  |  |  |  | 10d |  |  | -0 | Sprint 9 |  |  |  |  |  |  |
| 57 | 1.1.6.2.1 | Emissão inicial | inactive | 3d | 2026-06-22 | 2026-06-24 | 62FS+10d |  |  |  |  |  | 10d | 0d |  | -0 | Sprint 9 |  |  |  |  |  |  |
| 58 | 1.1.6.2.2 | Análise Tecnored | inactive | 1d | 2026-06-25 | 2026-06-25 | 57 |  |  |  |  |  | 10d | 0d |  | -0 | Sprint 9 |  |  |  |  |  |  |
| 59 | 1.1.6.2.3 | Atendimento de comentários | inactive | 2d | 2026-06-26 | 2026-06-29 | 58 |  |  |  |  |  | 10d | 0d |  | -0 | Sprint 9 |  |  |  |  |  |  |
| 60 | 1.1.6.2.4 | Aprovação | inactive | 1d | 2026-06-30 | 2026-06-30 | 59 |  |  |  |  |  | 10d |  |  | -0 | Sprint 10 |  |  |  |  |  |  |
| 61 | 1.1.6.3 | **FG-F0009-0306-MB-P-00001** |  | 4d | 2026-06-05 A | 2026-06-11 A |  | 100% |  | 2026-06-05 | 2026-06-11 | 5d |  |  |  |  | Sprint 6 | PROCESSOS | Qui 14/05/26 | Qua 20/05/26 | FG-F0009-0306-MB-P-00001 | Qui 14/05/26 | Qua 20/05/26 |
| 62 | 1.1.6.3.1 | Emissão inicial |  | 1d | 2026-06-05 A | 2026-06-05 A | 52, 5 | 100% |  | 2026-06-05 | 2026-06-05 | 1d |  |  |  |  | Sprint 6 | PROCESSOS | Qui 14/05/26 | Qui 14/05/26 | Emissão inicial | Qui 14/05/26 | Qui 14/05/26 |
| 63 | 1.1.6.3.2 | Análise Tecnored |  | 1d | 2026-06-08 A | 2026-06-08 A | 62 | 100% |  | 2026-06-08 | 2026-06-08 | 1d |  |  |  |  | Sprint 7 | PROCESSOS | Sex 15/05/26 | Sex 15/05/26 | Análise Tecnored | Sex 15/05/26 | Sex 15/05/26 |
| 64 | 1.1.6.3.3 | Atendimento de comentários |  | 2d | 2026-06-09 A | 2026-06-10 A | 63 | 100% |  | 2026-06-09 | 2026-06-10 | 2d |  |  |  |  | Sprint 7 | PROCESSOS | Seg 18/05/26 | Ter 19/05/26 | Atendimento de comentários | Seg 18/05/26 | Ter 19/05/26 |
| 65 | 1.1.6.3.4 | Aprovação |  | 1d | 2026-06-11 A | 2026-06-11 A | 64 | 100% |  | 2026-06-11 | 2026-06-11 | 1d |  |  |  |  | Sprint 7 | PROCESSOS | Qua 20/05/26 | Qua 20/05/26 | Aprovação | Qua 20/05/26 | Qua 20/05/26 |
| 66 | 1.1.7 | **Mecânica** |  | 39d | 2026-05-18 A | 2026-07-15 |  | 62% | 14.99d | 2026-05-26 | 2026-06-30 | 26d | 1d |  |  |  | Sprint 4 | MECÂNICA | Ter 05/05/26 | Seg 22/06/26 | Mecânica | Ter 05/05/26 | Seg 22/06/26 |
| 67 | 1.1.7.1 | **CP-F0009-0306-MB-M-00001** | inactive | 15d | 2026-05-05 | 2026-05-25 |  |  |  |  |  |  | 34d |  |  | -0 | Sprint 2 |  |  |  |  |  |  |
| 68 | 1.1.7.1.1 | Emissão inicial | inactive | 7d | 2026-05-05 | 2026-05-13 | 20 |  |  |  |  |  | 35d | 4d |  | -0 | Sprint 2 |  |  |  |  |  |  |
| 69 | 1.1.7.1.2 | Análise Tecnored | inactive | 1d | 2026-05-20 | 2026-05-20 | 68, 6 |  |  |  |  |  | 34d | 0d |  | -0 | Sprint 4 |  |  |  |  |  |  |
| 70 | 1.1.7.1.3 | Atendimento de comentários | inactive | 2d | 2026-05-21 | 2026-05-22 | 69 |  |  |  |  |  | 34d | 0d |  | -0 | Sprint 4 |  |  |  |  |  |  |
| 71 | 1.1.7.1.4 | Aprovação | inactive | 1d | 2026-05-25 | 2026-05-25 | 70 |  |  |  |  |  | 34d |  |  | -0 | Sprint 5 |  |  |  |  |  |  |
| 72 | 1.1.7.2 | **MD-F0009-0306-MB-M-00001** | inactive | 7d | 2026-06-22 | 2026-06-30 |  |  |  |  |  |  | 10d |  |  | -0 | Sprint 9 |  |  |  |  |  |  |
| 73 | 1.1.7.2.1 | Emissão inicial | inactive | 3d | 2026-06-22 | 2026-06-24 | 68, 80, 6 |  |  |  |  |  | 10d | 0d |  | -0 | Sprint 9 |  |  |  |  |  |  |
| 74 | 1.1.7.2.2 | Análise Tecnored | inactive | 1d | 2026-06-25 | 2026-06-25 | 73 |  |  |  |  |  | 10d | 0d |  | -0 | Sprint 9 |  |  |  |  |  |  |
| 75 | 1.1.7.2.3 | Atendimento de comentários | inactive | 2d | 2026-06-26 | 2026-06-29 | 74 |  |  |  |  |  | 10d | 0d |  | -0 | Sprint 9 |  |  |  |  |  |  |
| 76 | 1.1.7.2.4 | Aprovação | inactive | 1d | 2026-06-30 | 2026-06-30 | 75 |  |  |  |  |  | 10d |  |  | -0 | Sprint 10 |  |  |  |  |  |  |
| 77 | 1.1.7.3 | **LE-F0009-0306-MB-M-00001** |  | 8d | 2026-06-11 A | 2026-06-22 A |  | 100% |  | 2026-05-26 | 2026-06-02 | 6d |  |  |  |  | Sprint 7 | MECÂNICA | Qui 14/05/26 | Qui 21/05/26 | LE-F0009-0306-MB-M-00001 | Qui 14/05/26 | Qui 21/05/26 |
| 78 | 1.1.7.3.1 | Emissão inicial |  | 2d | 2026-06-11 A | 2026-06-12 A | 68, 6FS+5d | 100% |  | 2026-05-26 | 2026-05-27 | 2d |  |  |  |  | Sprint 7 | MECÂNICA | Qui 14/05/26 | Sex 15/05/26 | Emissão inicial | Qui 14/05/26 | Sex 15/05/26 |
| 79 | 1.1.7.3.2 | Análise Tecnored |  | 4d | 2026-06-12 A | 2026-06-17 A | 78 | 100% |  | 2026-05-28 | 2026-05-28 | 1d |  |  | finish no earlier than 2026-06-17 |  | Sprint 7 | MECÂNICA | Seg 18/05/26 | Seg 18/05/26 | Análise Tecnored | Seg 18/05/26 | Seg 18/05/26 |
| 80 | 1.1.7.3.3 | Atendimento de comentários |  | 2d | 2026-06-18 A | 2026-06-19 A | 79 | 100% |  | 2026-05-29 | 2026-06-01 | 2d |  |  |  |  | Sprint 8 | MECÂNICA | Ter 19/05/26 | Qua 20/05/26 | Atendimento de comentários | Ter 19/05/26 | Qua 20/05/26 |
| 81 | 1.1.7.3.4 | Aprovação |  | 2d | 2026-06-19 A | 2026-06-22 A | 80 | 100% |  | 2026-06-02 | 2026-06-02 | 1d |  |  | finish no earlier than 2026-06-22 |  | Sprint 8 | MECÂNICA | Qui 21/05/26 | Qui 21/05/26 | Aprovação | Qui 21/05/26 | Qui 21/05/26 |

| ID | WBS | Task | Duration | Start | Finish | Predecessors | Complete | Remaining | Baseline start | Baseline finish | Baseline duration | Total slack | Free slack | Constraint | Disciplina | Início_LB_R0 | Término_LB_R0 | Text5 | ILB_2 | TLB_2 | Sprints |
| --- | --- | --- | --- | --- | --- | --- | --- | --- | --- | --- | --- | --- | --- | --- | --- | --- | --- | --- | --- | --- | --- |
| 82 | 1.1.7.4 | **PQ-F0009-0306-MB-M-00001** | 7d | 2026-06-09 A | 2026-06-17 |  | 50% | 3.5d | 2026-06-02 | 2026-06-10 | 7d | 19d |  |  | MECÂNICA | Ter 26/05/26 | Qua 03/06/26 | PQ-F0009-0306-MB-M-00001 | Ter 26/05/26 | Qua 03/06/26 | Sprint 7 |
| 83 | 1.1.7.4.1 | Emissão inicial | 3d | 2026-06-09 A | 2026-06-12 A | 73FS+30d | 100% |  | 2026-06-02 | 2026-06-04 | 3d |  |  | finish no earlier than 2026-06-12 | MECÂNICA | Ter 26/05/26 | Qui 28/05/26 | Emissão inicial | Ter 26/05/26 | Qui 28/05/26 | Sprint 7 |
| 84 | 1.1.7.4.2 | Análise Tecnored | 1d | 2026-06-15 | 2026-06-15 | 83 |  |  | 2026-06-05 | 2026-06-05 | 1d | 19d | 0d | start no earlier than 2026-06-15 | MECÂNICA | Sex 29/05/26 | Sex 29/05/26 | Análise Tecnored | Sex 29/05/26 | Sex 29/05/26 | Sprint 8 |
| 85 | 1.1.7.4.3 | Atendimento de comentários | 1d | 2026-06-16 | 2026-06-16 | 84 |  |  | 2026-06-08 | 2026-06-09 | 2d | 19d | 0d | finish no earlier than 2026-06-16 | MECÂNICA | Seg 01/06/26 | Ter 02/06/26 | Atendimento de comentários | Seg 01/06/26 | Ter 02/06/26 | Sprint 8 |
| 86 | 1.1.7.4.4 | Aprovação | 1d | 2026-06-17 | 2026-06-17 | 85 |  |  | 2026-06-10 | 2026-06-10 | 1d | 19d |  | finish no earlier than 2026-06-17 | MECÂNICA | Qua 03/06/26 | Qua 03/06/26 | Aprovação | Qua 03/06/26 | Qua 03/06/26 | Sprint 8 |
| 87 | 1.1.7.5 | **AG-F0009-0306-MB-L-00001** | 10d | 2026-06-30 A | 2026-07-15 |  | 40% | 6d | 2026-06-18 | 2026-06-30 | 9d | 1d |  |  | MECÂNICA | Qua 10/06/26 | Seg 22/06/26 | AG-F0009-0306-MB-L-00001 | Qua 10/06/26 | Seg 22/06/26 | Sprint 10 |
| 88 | 1.1.7.5.1 | Emissão inicial | 4d | 2026-06-30 A | 2026-07-03 A | 245 | 100% |  | 2026-06-18 | 2026-06-24 | 5d |  |  | finish no earlier than 2026-06-25 | MECÂNICA | Qua 10/06/26 | Ter 16/06/26 | Emissão inicial | Qua 10/06/26 | Ter 16/06/26 | Sprint 10 |
| 89 | 1.1.7.5.2 | Análise Tecnored | 4d | 2026-07-06 | 2026-07-13 | 88 |  |  | 2026-06-25 | 2026-06-25 | 1d | 1d | 0d | finish no earlier than 2026-06-26 | MECÂNICA | Qua 17/06/26 | Qua 17/06/26 | Análise Tecnored | Qua 17/06/26 | Qua 17/06/26 | Sprint 11 |
| 90 | 1.1.7.5.3 | Atendimento de comentários | 1d | 2026-07-14 | 2026-07-14 | 89 |  |  | 2026-06-26 | 2026-06-29 | 2d | 1d | 0d | finish no earlier than 2026-06-29 | MECÂNICA | Qui 18/06/26 | Sex 19/06/26 | Atendimento de comentários | Qui 18/06/26 | Sex 19/06/26 | Sprint 12 |
| 91 | 1.1.7.5.4 | Aprovação | 1d | 2026-07-15 | 2026-07-15 | 90 |  |  | 2026-06-30 | 2026-06-30 | 1d | 1d |  | finish no earlier than 2026-06-30 | MECÂNICA | Seg 22/06/26 | Seg 22/06/26 | Aprovação | Seg 22/06/26 | Seg 22/06/26 | Sprint 12 |
| 92 | 1.1.7.6 | **AG-F0009-0306-MB-L-00002** | 10d | 2026-06-30 A | 2026-07-15 |  | 40% | 6d | 2026-06-18 | 2026-06-30 | 9d | 1d |  |  | MECÂNICA | Qua 10/06/26 | Seg 22/06/26 | AG-F0009-0306-MB-L-00002 | Qua 10/06/26 | Seg 22/06/26 | Sprint 10 |
| 93 | 1.1.7.6.1 | Emissão inicial | 4d | 2026-06-30 A | 2026-07-03 A | 245 | 100% |  | 2026-06-18 | 2026-06-24 | 5d |  |  | finish no earlier than 2026-06-25 | MECÂNICA | Qua 10/06/26 | Ter 16/06/26 | Emissão inicial | Qua 10/06/26 | Ter 16/06/26 | Sprint 10 |
| 94 | 1.1.7.6.2 | Análise Tecnored | 4d | 2026-07-06 | 2026-07-13 | 93 |  |  | 2026-06-25 | 2026-06-25 | 1d | 1d | 0d | finish no earlier than 2026-07-13 | MECÂNICA | Qua 17/06/26 | Qua 17/06/26 | Análise Tecnored | Qua 17/06/26 | Qua 17/06/26 | Sprint 11 |
| 95 | 1.1.7.6.3 | Atendimento de comentários | 1d | 2026-07-14 | 2026-07-14 | 94 |  |  | 2026-06-26 | 2026-06-29 | 2d | 1d | 0d | start no earlier than 2026-07-14 | MECÂNICA | Qui 18/06/26 | Sex 19/06/26 | Atendimento de comentários | Qui 18/06/26 | Sex 19/06/26 | Sprint 12 |
| 96 | 1.1.7.6.4 | Aprovação | 1d | 2026-07-15 | 2026-07-15 | 95 |  |  | 2026-06-30 | 2026-06-30 | 1d | 1d |  | start no earlier than 2026-07-15 | MECÂNICA | Seg 22/06/26 | Seg 22/06/26 | Aprovação | Seg 22/06/26 | Seg 22/06/26 | Sprint 12 |
| 97 | 1.1.7.7 | **AG-F0009-0306-MB-L-00003** | 10d | 2026-06-30 A | 2026-07-15 |  | 40% | 6d | 2026-06-18 | 2026-06-30 | 9d | 1d |  |  | MECÂNICA | Qua 10/06/26 | Seg 22/06/26 | AG-F0009-0306-MB-L-00003 | Qua 10/06/26 | Seg 22/06/26 | Sprint 10 |
| 98 | 1.1.7.7.1 | Emissão inicial | 4d | 2026-06-30 A | 2026-07-03 A | 245 | 100% |  | 2026-06-18 | 2026-06-24 | 5d |  |  | finish no earlier than 2026-06-25 | MECÂNICA | Qua 10/06/26 | Ter 16/06/26 | Emissão inicial | Qua 10/06/26 | Ter 16/06/26 | Sprint 10 |
| 99 | 1.1.7.7.2 | Análise Tecnored | 4d | 2026-07-06 | 2026-07-13 | 98 |  |  | 2026-06-25 | 2026-06-25 | 1d | 1d | 0d | finish no earlier than 2026-07-13 | MECÂNICA | Qua 17/06/26 | Qua 17/06/26 | Análise Tecnored | Qua 17/06/26 | Qua 17/06/26 | Sprint 11 |
| 100 | 1.1.7.7.3 | Atendimento de comentários | 1d | 2026-07-14 | 2026-07-14 | 99 |  |  | 2026-06-26 | 2026-06-29 | 2d | 1d | 0d | start no earlier than 2026-07-14 | MECÂNICA | Qui 18/06/26 | Sex 19/06/26 | Atendimento de comentários | Qui 18/06/26 | Sex 19/06/26 | Sprint 12 |
| 101 | 1.1.7.7.4 | Aprovação | 1d | 2026-07-15 | 2026-07-15 | 100 |  |  | 2026-06-30 | 2026-06-30 | 1d | 1d |  | start no earlier than 2026-07-15 | MECÂNICA | Seg 22/06/26 | Seg 22/06/26 | Aprovação | Seg 22/06/26 | Seg 22/06/26 | Sprint 12 |
| 102 | 1.1.7.8 | **AG-F0009-0306-MB-L-00004** | 10d | 2026-06-30 A | 2026-07-15 |  | 40% | 6d | 2026-06-18 | 2026-06-30 | 9d | 1d |  |  | MECÂNICA | Qua 10/06/26 | Seg 22/06/26 | AG-F0009-0306-MB-L-00004 | Qua 10/06/26 | Seg 22/06/26 | Sprint 10 |
| 103 | 1.1.7.8.1 | Emissão inicial | 4d | 2026-06-30 A | 2026-07-03 A | 245 | 100% |  | 2026-06-18 | 2026-06-24 | 5d |  |  | finish no earlier than 2026-06-25 | MECÂNICA | Qua 10/06/26 | Ter 16/06/26 | Emissão inicial | Qua 10/06/26 | Ter 16/06/26 | Sprint 10 |
| 104 | 1.1.7.8.2 | Análise Tecnored | 4d | 2026-07-06 | 2026-07-13 | 103 |  |  | 2026-06-25 | 2026-06-25 | 1d | 1d | 0d | finish no earlier than 2026-07-13 | MECÂNICA | Qua 17/06/26 | Qua 17/06/26 | Análise Tecnored | Qua 17/06/26 | Qua 17/06/26 | Sprint 11 |
| 105 | 1.1.7.8.3 | Atendimento de comentários | 1d | 2026-07-14 | 2026-07-14 | 104 |  |  | 2026-06-26 | 2026-06-29 | 2d | 1d | 0d | start no earlier than 2026-07-14 | MECÂNICA | Qui 18/06/26 | Sex 19/06/26 | Atendimento de comentários | Qui 18/06/26 | Sex 19/06/26 | Sprint 12 |
| 106 | 1.1.7.8.4 | Aprovação | 1d | 2026-07-15 | 2026-07-15 | 105 |  |  | 2026-06-30 | 2026-06-30 | 1d | 1d |  | start no earlier than 2026-07-15 | MECÂNICA | Seg 22/06/26 | Seg 22/06/26 | Aprovação | Seg 22/06/26 | Seg 22/06/26 | Sprint 12 |

| ID | WBS | Task | Type | Duration | Start | Finish | Predecessors | Complete | Remaining | Baseline start | Baseline finish | Baseline duration | Total slack | Free slack | Constraint | Disciplina | Início_LB_R0 | Término_LB_R0 | Text5 | ILB_2 | TLB_2 | Sprints |
| --- | --- | --- | --- | --- | --- | --- | --- | --- | --- | --- | --- | --- | --- | --- | --- | --- | --- | --- | --- | --- | --- | --- |
| 107 | 1.1.7.9 | **PL-F0009-0306-MB-M-00001** |  | 10d | 2026-06-03 A | 2026-06-18 A |  | 100% |  | 2026-06-03 | 2026-06-18 | 12d |  |  |  | MECÂNICA | Qui 21/05/26 | Sex 05/06/26 | PL-F0009-0306-MB-M-00001 | Qui 21/05/26 | Sex 05/06/26 | Sprint 6 |
| 108 | 1.1.7.9.1 | Emissão inicial |  | 6d | 2026-06-03 A | 2026-06-12 A | 129 | 100% |  | 2026-06-03 | 2026-06-12 | 8d |  |  | finish no earlier than 2026-06-12 | MECÂNICA | Qui 21/05/26 | Seg 01/06/26 | Emissão inicial | Qui 21/05/26 | Seg 01/06/26 | Sprint 6 |
| 109 | 1.1.7.9.2 | Análise Tecnored |  | 1d | 2026-06-15 A | 2026-06-15 A | 108 | 100% |  | 2026-06-15 | 2026-06-15 | 1d |  |  |  | MECÂNICA | Ter 02/06/26 | Ter 02/06/26 | Análise Tecnored | Ter 02/06/26 | Ter 02/06/26 | Sprint 8 |
| 110 | 1.1.7.9.3 | Atendimento de comentários |  | 2d | 2026-06-16 A | 2026-06-17 A | 109 | 100% |  | 2026-06-16 | 2026-06-17 | 2d |  |  |  | MECÂNICA | Qua 03/06/26 | Qui 04/06/26 | Atendimento de comentários | Qua 03/06/26 | Qui 04/06/26 | Sprint 8 |
| 111 | 1.1.7.9.4 | Aprovação |  | 1d | 2026-06-18 A | 2026-06-18 A | 110 | 100% |  | 2026-06-18 | 2026-06-18 | 1d |  |  |  | MECÂNICA | Sex 05/06/26 | Sex 05/06/26 | Aprovação | Sex 05/06/26 | Sex 05/06/26 | Sprint 8 |
| 112 | 1.1.7.10 | **PL-F0009-0306-MB-M-00002** | inactive | 12d | 2026-06-03 | 2026-06-22 |  |  |  | 2026-06-03 | 2026-06-18 | 12d |  |  |  | MECÂNICA | Qui 21/05/26 | Sex 05/06/26 | PL-F0009-0306-MB-M-00002 | Qui 21/05/26 | Sex 05/06/26 | Sprint 6 |
| 113 | 1.1.7.10.1 | Emissão inicial | inactive | 8d | 2026-06-03 | 2026-06-16 | 129 |  |  | 2026-06-03 | 2026-06-12 | 8d | 16d | 0d |  | MECÂNICA | Qui 21/05/26 | Seg 01/06/26 | Emissão inicial | Qui 21/05/26 | Seg 01/06/26 | Sprint 6 |
| 114 | 1.1.7.10.2 | Análise Tecnored | inactive | 1d | 2026-06-17 | 2026-06-17 | 113 |  |  | 2026-06-15 | 2026-06-15 | 1d | 16d | 0d |  | MECÂNICA | Ter 02/06/26 | Ter 02/06/26 | Análise Tecnored | Ter 02/06/26 | Ter 02/06/26 | Sprint 8 |
| 115 | 1.1.7.10.3 | Atendimento de comentários | inactive | 2d | 2026-06-18 | 2026-06-19 | 114 |  |  | 2026-06-16 | 2026-06-17 | 2d | 16d | 0d |  | MECÂNICA | Qua 03/06/26 | Qui 04/06/26 | Atendimento de comentários | Qua 03/06/26 | Qui 04/06/26 | Sprint 8 |
| 116 | 1.1.7.10.4 | Aprovação | inactive | 1d | 2026-06-22 | 2026-06-22 | 115 |  |  | 2026-06-18 | 2026-06-18 | 1d | 16d |  |  | MECÂNICA | Sex 05/06/26 | Sex 05/06/26 | Aprovação | Sex 05/06/26 | Sex 05/06/26 | Sprint 9 |
| 117 | 1.1.7.11 | **MC-F0009-0306-MB-M-00001** |  | 19d | 2026-06-12 A | 2026-07-08 |  | 67% | 6.33d | 2026-06-03 | 2026-06-15 | 9d | 4d |  |  | MECÂNICA | Qui 21/05/26 | Ter 02/06/26 | MC-F0009-0306-MB-M-00001 | Qui 21/05/26 | Ter 02/06/26 | Sprint 7 |
| 118 | 1.1.7.11.1 | Emissão inicial |  | 2d | 2026-06-12 A | 2026-06-15 A | 129 | 100% |  | 2026-06-03 | 2026-06-09 | 5d |  |  | finish no earlier than 2026-06-16 | MECÂNICA | Qui 21/05/26 | Qua 27/05/26 | Emissão inicial | Qui 21/05/26 | Qua 27/05/26 | Sprint 7 |
| 119 | 1.1.7.11.2 | Análise Tecnored |  | 1d | 2026-06-16 A | 2026-06-17 A | 118 | 100% |  | 2026-06-10 | 2026-06-10 | 1d |  |  | finish no earlier than 2026-06-17 | MECÂNICA | Qui 28/05/26 | Qui 28/05/26 | Análise Tecnored | Qui 28/05/26 | Qui 28/05/26 | Sprint 8 |
| 120 | 1.1.7.11.3 | Atendimento de comentários |  | 2d | 2026-07-06 A | 2026-07-07 | 119 | 50% | 1d | 2026-06-11 | 2026-06-12 | 2d | 4d | 0d | finish no earlier than 2026-06-19 | MECÂNICA | Sex 29/05/26 | Seg 01/06/26 | Atendimento de comentários | Sex 29/05/26 | Seg 01/06/26 | Sprint 11 |
| 121 | 1.1.7.11.4 | Aprovação |  | 1d | 2026-07-08 | 2026-07-08 | 120 |  |  | 2026-06-15 | 2026-06-15 | 1d | 4d |  | finish no earlier than 2026-06-23 | MECÂNICA | Ter 02/06/26 | Ter 02/06/26 | Aprovação | Ter 02/06/26 | Ter 02/06/26 | Sprint 11 |
| 122 | 1.1.7.12 | **MC-F0009-0306-MB-M-00002** |  | 19d | 2026-06-12 A | 2026-07-08 |  | 67% | 6.33d | 2026-06-03 | 2026-06-15 | 9d | 4d |  |  | MECÂNICA | Qui 21/05/26 | Ter 02/06/26 | MC-F0009-0306-MB-M-00001 | Qui 21/05/26 | Ter 02/06/26 | Sprint 7 |
| 123 | 1.1.7.12.1 | Emissão inicial |  | 2d | 2026-06-12 A | 2026-06-15 A | 129 | 100% |  | 2026-06-12 | 2026-06-15 | 5d |  |  | finish no earlier than 2026-06-16 | MECÂNICA | Sex 12/06/26 | Seg 15/06/26 | Emissão inicial | Qui 21/05/26 | Qua 27/05/26 | Sprint 7 |
| 124 | 1.1.7.12.2 | Análise Tecnored |  | 1d | 2026-06-17 A | 2026-06-17 A | 123 | 100% |  | 2026-06-17 | 2026-06-17 | 1d |  |  | finish no earlier than 2026-06-17 | MECÂNICA | Qua 17/06/26 | Qua 17/06/26 | Análise Tecnored | Qui 28/05/26 | Qui 28/05/26 | Sprint 8 |
| 125 | 1.1.7.12.3 | Atendimento de comentários |  | 2d | 2026-07-06 A | 2026-07-07 | 124 | 50% | 1d | 2026-06-18 | 2026-06-19 | 2d | 4d | 0d | finish no earlier than 2026-06-19 | MECÂNICA | Qui 18/06/26 | Sex 19/06/26 | Atendimento de comentários | Sex 29/05/26 | Seg 01/06/26 | Sprint 11 |
| 126 | 1.1.7.12.4 | Aprovação |  | 1d | 2026-07-08 | 2026-07-08 | 125 |  |  | 2026-06-23 | 2026-06-23 | 1d | 4d |  | finish no earlier than 2026-06-23 | MECÂNICA | Ter 23/06/26 | Ter 23/06/26 | Aprovação | Ter 02/06/26 | Ter 02/06/26 | Sprint 11 |
| 127 | 1.1.7.13 | **ML-F0009-0306-MB-M-00001** |  | 9d | 2026-05-18 A | 2026-05-28 A |  | 100% |  | 2026-05-26 | 2026-06-05 | 9d |  |  |  | MECÂNICA | Qui 14/05/26 | Seg 25/05/26 | ML-F0009-0306-MB-M-00001 | Qui 14/05/26 | Seg 25/05/26 | Sprint 4 |
| 128 | 1.1.7.13.1 | Emissão inicial |  | 5d | 2026-05-18 A | 2026-05-22 A | 68, 6FS+5d | 100% |  | 2026-05-26 | 2026-06-01 | 5d |  |  |  | MECÂNICA | Qui 14/05/26 | Ter 19/05/26 | Emissão inicial | Qui 14/05/26 | Ter 19/05/26 | Sprint 4 |
| 129 | 1.1.7.13.2 | Análise Tecnored |  | 1d | 2026-05-25 A | 2026-05-25 A | 128 | 100% |  | 2026-06-02 | 2026-06-02 | 1d |  |  |  | MECÂNICA | Qua 20/05/26 | Qua 20/05/26 | Análise Tecnored | Qua 20/05/26 | Qua 20/05/26 | Sprint 5 |
| 130 | 1.1.7.13.3 | Atendimento de comentários |  | 2d | 2026-05-26 A | 2026-05-27 A | 129 | 100% |  | 2026-06-03 | 2026-06-04 | 2d |  |  |  | MECÂNICA | Qui 21/05/26 | Sex 22/05/26 | Atendimento de comentários | Qui 21/05/26 | Sex 22/05/26 | Sprint 5 |
| 131 | 1.1.7.13.4 | Aprovação |  | 1d | 2026-05-28 A | 2026-05-28 A | 130 | 100% |  | 2026-06-05 | 2026-06-05 | 1d |  |  |  | MECÂNICA | Seg 25/05/26 | Seg 25/05/26 | Aprovação | Seg 25/05/26 | Seg 25/05/26 | Sprint 5 |

| ID | WBS | Task | Type | Duration | Start | Finish | Predecessors | Complete | Remaining | Baseline start | Baseline finish | Baseline duration | Total slack | Free slack | Constraint | Baseline cost | Disciplina | Início_LB_R0 | Término_LB_R0 | Text5 | ILB_2 | TLB_2 | Sprints |
| --- | --- | --- | --- | --- | --- | --- | --- | --- | --- | --- | --- | --- | --- | --- | --- | --- | --- | --- | --- | --- | --- | --- | --- |
| 132 | 1.1.7.14 | **FD-F0009-0306-MB-M-00001** |  | 7d | 2026-06-17 A | 2026-06-25 |  | 50% | 3.5d | 2026-06-10 | 2026-06-18 | 7d | 13d |  |  |  | MECÂNICA | Qui 28/05/26 | Sex 05/06/26 | FD-F0009-0306-MB-M-00001 | Qui 28/05/26 | Sex 05/06/26 | Sprint 8 |
| 133 | 1.1.7.14.1 | Emissão inicial |  | 3d | 2026-06-17 A | 2026-06-19 A | 118, 123 | 100% |  | 2026-06-10 | 2026-06-12 | 3d |  |  | finish no earlier than 2026-06-19 |  | MECÂNICA | Qui 28/05/26 | Seg 01/06/26 | Emissão inicial | Qui 28/05/26 | Seg 01/06/26 | Sprint 8 |
| 134 | 1.1.7.14.2 | Análise Tecnored |  | 1d | 2026-06-22 A | 2026-06-22 | 133 | 50% | 0.5d | 2026-06-15 | 2026-06-15 | 1d | 13d | 0d | finish no earlier than 2026-06-22 |  | MECÂNICA | Ter 02/06/26 | Ter 02/06/26 | Análise Tecnored | Ter 02/06/26 | Ter 02/06/26 | Sprint 9 |
| 135 | 1.1.7.14.3 | Atendimento de comentários |  | 2d | 2026-06-23 | 2026-06-24 | 134 |  |  | 2026-06-16 | 2026-06-17 | 2d | 13d | 0d | finish no earlier than 2026-06-24 |  | MECÂNICA | Qua 03/06/26 | Qui 04/06/26 | Atendimento de comentários | Qua 03/06/26 | Qui 04/06/26 | Sprint 9 |
| 136 | 1.1.7.14.4 | Aprovação |  | 1d | 2026-06-25 | 2026-06-25 | 135 |  |  | 2026-06-18 | 2026-06-18 | 1d | 13d |  | finish no earlier than 2026-06-25 |  | MECÂNICA | Sex 05/06/26 | Sex 05/06/26 | Aprovação | Sex 05/06/26 | Sex 05/06/26 | Sprint 9 |
| 137 | 1.1.7.15 | **FD-F0009-0306-MB-M-00002** |  | 7d | 2026-06-17 A | 2026-06-25 |  | 50% | 3.5d | 2026-06-10 | 2026-06-18 | 7d | 13d |  |  |  | MECÂNICA | Qui 28/05/26 | Sex 05/06/26 | FD-F0009-0306-MB-M-00002 | Qui 28/05/26 | Sex 05/06/26 | Sprint 8 |
| 138 | 1.1.7.15.1 | Emissão inicial |  | 3d | 2026-06-17 A | 2026-06-19 A | 118, 123 | 100% |  | 2026-06-10 | 2026-06-12 | 3d |  |  | finish no earlier than 2026-06-19 |  | MECÂNICA | Qui 28/05/26 | Seg 01/06/26 | Emissão inicial | Qui 28/05/26 | Seg 01/06/26 | Sprint 8 |
| 139 | 1.1.7.15.2 | Análise Tecnored |  | 1d | 2026-06-22 A | 2026-06-22 | 138 | 50% | 0.5d | 2026-06-15 | 2026-06-15 | 1d | 13d | 0d | finish no earlier than 2026-06-22 |  | MECÂNICA | Ter 02/06/26 | Ter 02/06/26 | Análise Tecnored | Ter 02/06/26 | Ter 02/06/26 | Sprint 9 |
| 140 | 1.1.7.15.3 | Atendimento de comentários |  | 2d | 2026-06-23 | 2026-06-24 | 139 |  |  | 2026-06-16 | 2026-06-17 | 2d | 13d | 0d | finish no earlier than 2026-06-24 |  | MECÂNICA | Qua 03/06/26 | Qui 04/06/26 | Atendimento de comentários | Qua 03/06/26 | Qui 04/06/26 | Sprint 9 |
| 141 | 1.1.7.15.4 | Aprovação |  | 1d | 2026-06-25 | 2026-06-25 | 140 |  |  | 2026-06-18 | 2026-06-18 | 1d | 13d |  | finish no earlier than 2026-06-25 |  | MECÂNICA | Sex 05/06/26 | Sex 05/06/26 | Aprovação | Sex 05/06/26 | Sex 05/06/26 | Sprint 9 |
| 142 | 1.1.7.16 | **FD-F0009-0306-MB-M-00003** |  | 7d | 2026-06-17 A | 2026-06-25 |  | 50% | 3.5d | 2026-06-10 | 2026-06-18 | 7d | 13d |  |  |  | MECÂNICA | Qui 28/05/26 | Sex 05/06/26 | FD-F0009-0306-MB-M-00002 | Qui 28/05/26 | Sex 05/06/26 | Sprint 8 |
| 143 | 1.1.7.16.1 | Emissão inicial |  | 3d | 2026-06-17 A | 2026-06-19 A | 118, 123 | 100% |  | 2026-06-17 | 2026-06-19 | 3d |  |  | finish no earlier than 2026-06-19 |  | MECÂNICA | Qua 17/06/26 | Sex 19/06/26 | Emissão inicial | Qui 28/05/26 | Seg 01/06/26 | Sprint 8 |
| 144 | 1.1.7.16.2 | Análise Tecnored |  | 1d | 2026-06-22 A | 2026-06-22 | 143 | 50% | 0.5d | 2026-06-22 | 2026-06-22 | 1d | 13d | 0d | finish no earlier than 2026-06-22 |  | MECÂNICA | Seg 22/06/26 | Seg 22/06/26 | Análise Tecnored | Ter 02/06/26 | Ter 02/06/26 | Sprint 9 |
| 145 | 1.1.7.16.3 | Atendimento de comentários |  | 2d | 2026-06-23 | 2026-06-24 | 144 |  |  | 2026-06-23 | 2026-06-24 | 2d | 13d | 0d | finish no earlier than 2026-06-24 |  | MECÂNICA | Ter 23/06/26 | Qua 24/06/26 | Atendimento de comentários | Qua 03/06/26 | Qui 04/06/26 | Sprint 9 |
| 146 | 1.1.7.16.4 | Aprovação |  | 1d | 2026-06-25 | 2026-06-25 | 145 |  |  | 2026-06-25 | 2026-06-25 | 1d | 13d |  | finish no earlier than 2026-06-25 |  | MECÂNICA | Qui 25/06/26 | Qui 25/06/26 | Aprovação | Sex 05/06/26 | Sex 05/06/26 | Sprint 9 |
| 147 | 1.1.8 | **Tubulação/Utilidades** |  | 22d | 2026-06-08 A | 2026-07-07 |  | 50% | 11d | 2026-06-02 | 2026-06-29 | 20d | 5d |  |  |  | TUBULAÇÃO / UTILIDADES | Ter 05/05/26 | Ter 16/06/26 | Tubulação/Utilidades | Ter 05/05/26 | Ter 16/06/26 | Sprint 7 |
| 148 | 1.1.8.1 | **CP-F0009-0306-MB-T-00001** | inactive | 18d | 2026-05-05 | 2026-05-28 |  |  |  |  |  |  | 31d |  |  | -0 |  |  |  |  |  |  | Sprint 2 |
| 149 | 1.1.8.1.1 | Emissão inicial | inactive | 7d | 2026-05-05 | 2026-05-13 | 20 |  |  |  |  |  | 38d | 7d |  | -0 |  |  |  |  |  |  | Sprint 2 |
| 150 | 1.1.8.1.2 | Análise Tecnored | inactive | 1d | 2026-05-25 | 2026-05-25 | 149, 9 |  |  |  |  |  | 31d | 0d |  | -0 |  |  |  |  |  |  | Sprint 5 |
| 151 | 1.1.8.1.3 | Atendimento de comentários | inactive | 2d | 2026-05-26 | 2026-05-27 | 150 |  |  |  |  |  | 31d | 0d |  | -0 |  |  |  |  |  |  | Sprint 5 |
| 152 | 1.1.8.1.4 | Aprovação | inactive | 1d | 2026-05-28 | 2026-05-28 | 151 |  |  |  |  |  | 31d |  |  | -0 |  |  |  |  |  |  | Sprint 5 |
| 153 | 1.1.8.2 | **MD-F0009-0306-MB-U-00001** | inactive | 7d | 2026-07-02 | 2026-07-15 |  |  |  | 2026-06-16 | 2026-06-24 | 7d | 1.5d |  |  |  |  |  |  |  |  |  | Sprint 10 |
| 154 | 1.1.8.2.1 | Emissão inicial | inactive | 3d | 2026-07-02 | 2026-07-07 | 198 |  |  | 2026-06-16 | 2026-06-18 | 3d | 1.5d | 0d |  |  |  |  |  |  |  |  | Sprint 10 |
| 155 | 1.1.8.2.2 | Análise Tecnored | inactive | 1d | 2026-07-07 | 2026-07-08 | 154 |  |  | 2026-06-19 | 2026-06-19 | 1d | 1.5d | 0d |  |  |  |  |  |  |  |  | Sprint 11 |
| 156 | 1.1.8.2.3 | Atendimento de comentários | inactive | 2d | 2026-07-08 | 2026-07-14 | 155 |  |  | 2026-06-22 | 2026-06-23 | 2d | 1.5d | 0d |  |  |  |  |  |  |  |  | Sprint 11 |
| 157 | 1.1.8.2.4 | Aprovação | inactive | 1d | 2026-07-14 | 2026-07-15 | 156 |  |  | 2026-06-24 | 2026-06-24 | 1d | 1.5d |  |  |  |  |  |  |  |  |  | Sprint 12 |

| ID | WBS | Task | Type | Duration | Start | Finish | Predecessors | Complete | Remaining | Baseline start | Baseline finish | Baseline duration | Total slack | Free slack | Constraint | Disciplina | Início_LB_R0 | Término_LB_R0 | Text5 | ILB_2 | TLB_2 | Sprints |
| --- | --- | --- | --- | --- | --- | --- | --- | --- | --- | --- | --- | --- | --- | --- | --- | --- | --- | --- | --- | --- | --- | --- |
| 158 | 1.1.8.3 | **ML-F0009-0306-MB-T-00001** |  | 11d | 2026-06-15 A | 2026-06-29 |  | 64% | 4d | 2026-06-02 | 2026-06-10 | 7d | 11d |  |  | TUBULAÇÃO / UTILIDADES | Qua 20/05/26 | Qui 28/05/26 | MD-F0009-0306-MB-U-00001 | Qua 03/06/26 | Qui 11/06/26 | Sprint 8 |
| 159 | 1.1.8.3.1 | Emissão inicial |  | 7d | 2026-06-15 A | 2026-06-23 A |  | 100% |  | 2026-06-02 | 2026-06-04 | 3d |  |  | finish no earlier than 2026-06-19 | TUBULAÇÃO / UTILIDADES | Qua 20/05/26 | Sex 22/05/26 | Emissão inicial | Qua 03/06/26 | Sex 05/06/26 | Sprint 8 |
| 160 | 1.1.8.3.2 | Análise Tecnored |  | 1d | 2026-06-24 | 2026-06-24 | 159 |  |  | 2026-06-05 | 2026-06-05 | 1d | 11d | 0d |  | TUBULAÇÃO / UTILIDADES | Seg 25/05/26 | Seg 25/05/26 | Análise Tecnored | Seg 08/06/26 | Seg 08/06/26 | Sprint 9 |
| 161 | 1.1.8.3.3 | Atendimento de comentários |  | 2d | 2026-06-25 | 2026-06-26 | 160 |  |  | 2026-06-08 | 2026-06-09 | 2d | 11d | 0d |  | TUBULAÇÃO / UTILIDADES | Ter 26/05/26 | Qua 27/05/26 | Atendimento de comentários | Ter 09/06/26 | Qua 10/06/26 | Sprint 9 |
| 162 | 1.1.8.3.4 | Aprovação |  | 1d | 2026-06-29 | 2026-06-29 | 161 |  |  | 2026-06-10 | 2026-06-10 | 1d | 11d |  |  | TUBULAÇÃO / UTILIDADES | Qui 28/05/26 | Qui 28/05/26 | Aprovação | Qui 11/06/26 | Qui 11/06/26 | Sprint 10 |
| 163 | 1.1.8.4 | **ET-F0009-0306-MB-T-00001** | inactive | 7d | 2026-07-07 | 2026-07-17 |  |  |  | 2026-06-10 | 2026-06-18 | 7d | -1d | 0d |  |  |  |  |  |  |  | Sprint 11 |
| 164 | 1.1.8.4.1 | Emissão inicial | inactive | 3d | 2026-07-07 | 2026-07-13 | 169 |  |  | 2026-06-10 | 2026-06-12 | 3d | -1d | 0d |  |  |  |  |  |  |  | Sprint 11 |
| 165 | 1.1.8.4.2 | Análise Tecnored | inactive | 1d | 2026-07-14 | 2026-07-14 | 164 |  |  | 2026-06-15 | 2026-06-15 | 1d | -1d | 0d |  |  |  |  |  |  |  | Sprint 12 |
| 166 | 1.1.8.4.3 | Atendimento de comentários | inactive | 2d | 2026-07-15 | 2026-07-16 | 165 |  |  | 2026-06-16 | 2026-06-17 | 2d | -1d | 0d |  |  |  |  |  |  |  | Sprint 12 |
| 167 | 1.1.8.4.4 | Aprovação | inactive | 1d | 2026-07-17 | 2026-07-17 | 166 |  |  | 2026-06-18 | 2026-06-18 | 1d | -1d | 0d |  |  |  |  |  |  |  | Sprint 12 |
| 168 | 1.1.8.5 | **FD-F0009-0306-MB-T-00001** | inactive | 7d | 2026-07-02 | 2026-07-14 |  |  |  | 2026-06-05 | 2026-06-15 | 7d | -1d | 0d |  | TUBULAÇÃO / UTILIDADES | Seg 25/05/26 | Ter 02/06/26 | ML-F0009-0306-MB-T-00001 | Qua 20/05/26 | Qui 28/05/26 | Sprint 10 |
| 169 | 1.1.8.5.1 | Emissão inicial | inactive | 3d | 2026-07-02 | 2026-07-06 | 184, 62FS+3d |  |  | 2026-06-05 | 2026-06-09 | 3d | -1d | 0d | start no earlier than 2026-06-25 | TUBULAÇÃO / UTILIDADES | Seg 25/05/26 | Qua 27/05/26 | Emissão inicial | Qua 20/05/26 | Sex 22/05/26 | Sprint 10 |
| 170 | 1.1.8.5.2 | Análise Tecnored | inactive | 1d | 2026-07-07 | 2026-07-07 | 169 |  |  | 2026-06-10 | 2026-06-10 | 1d | 2d | 0d | start no earlier than 2026-06-18 | TUBULAÇÃO / UTILIDADES | Qui 28/05/26 | Qui 28/05/26 | Análise Tecnored | Seg 25/05/26 | Seg 25/05/26 | Sprint 11 |
| 171 | 1.1.8.5.3 | Atendimento de comentários | inactive | 2d | 2026-07-08 | 2026-07-13 | 170 |  |  | 2026-06-11 | 2026-06-12 | 2d | 2d | 0d | start no earlier than 2026-06-19 | TUBULAÇÃO / UTILIDADES | Sex 29/05/26 | Seg 01/06/26 | Atendimento de comentários | Ter 26/05/26 | Qua 27/05/26 | Sprint 11 |
| 172 | 1.1.8.5.4 | Aprovação | inactive | 1d | 2026-07-14 | 2026-07-14 | 171 |  |  | 2026-06-15 | 2026-06-15 | 1d | 2d |  | start no earlier than 2026-06-23 | TUBULAÇÃO / UTILIDADES | Ter 02/06/26 | Ter 02/06/26 | Aprovação | Qui 28/05/26 | Qui 28/05/26 | Sprint 12 |
| 173 | 1.1.8.6 | **FD-F0009-0306-MB-T-00002** | inactive | 7d | 2026-07-02 | 2026-07-14 |  |  |  | 2026-06-05 | 2026-06-15 | 7d | 2d |  |  |  |  |  |  |  |  | Sprint 10 |
| 174 | 1.1.8.6.1 | Emissão inicial | inactive | 3d | 2026-07-02 | 2026-07-06 | 184 |  |  | 2026-06-05 | 2026-06-09 | 3d | 2d | 0d |  |  |  |  |  |  |  | Sprint 10 |
| 175 | 1.1.8.6.2 | Análise Tecnored | inactive | 1d | 2026-07-07 | 2026-07-07 | 174 |  |  | 2026-06-10 | 2026-06-10 | 1d | 2d | 0d |  |  |  |  |  |  |  | Sprint 11 |
| 176 | 1.1.8.6.3 | Atendimento de comentários | inactive | 2d | 2026-07-08 | 2026-07-13 | 175 |  |  | 2026-06-11 | 2026-06-12 | 2d | 2d | 0d |  |  |  |  |  |  |  | Sprint 11 |
| 177 | 1.1.8.6.4 | Aprovação | inactive | 1d | 2026-07-14 | 2026-07-14 | 176 |  |  | 2026-06-15 | 2026-06-15 | 1d | 2d |  |  |  |  |  |  |  |  | Sprint 12 |
| 178 | 1.1.8.7 | **PQ-F0009-0306-MB-T-00001** |  | 8d | 2026-06-22 A | 2026-07-01 |  | 33% | 5.33d | 2026-06-19 | 2026-06-29 | 7d | 9d |  |  | TUBULAÇÃO / UTILIDADES | Seg 08/06/26 | Ter 16/06/26 | ET-F0009-0306-MB-T-00001 | Qui 28/05/26 | Sex 05/06/26 | Sprint 9 |
| 179 | 1.1.8.7.1 | Emissão inicial |  | 2d | 2026-06-22 A | 2026-06-25 A | 185 | 100% |  | 2026-06-19 | 2026-06-23 | 3d |  |  | finish no earlier than 2026-06-25 | TUBULAÇÃO / UTILIDADES | Seg 08/06/26 | Qua 10/06/26 | Emissão inicial | Qui 28/05/26 | Seg 01/06/26 | Sprint 9 |
| 180 | 1.1.8.7.2 | Análise Tecnored |  | 1d | 2026-06-26 | 2026-06-26 | 179 |  |  | 2026-06-24 | 2026-06-24 | 1d | 9d | 0d | start no earlier than 2026-06-19 | TUBULAÇÃO / UTILIDADES | Qui 11/06/26 | Qui 11/06/26 | Análise Tecnored | Ter 02/06/26 | Ter 02/06/26 | Sprint 9 |
| 181 | 1.1.8.7.3 | Atendimento de comentários |  | 2d | 2026-06-29 | 2026-06-30 | 180 |  |  | 2026-06-25 | 2026-06-26 | 2d | 9d | 0d | start no earlier than 2026-06-22 | TUBULAÇÃO / UTILIDADES | Sex 12/06/26 | Seg 15/06/26 | Atendimento de comentários | Qua 03/06/26 | Qui 04/06/26 | Sprint 10 |
| 182 | 1.1.8.7.4 | Aprovação |  | 1d | 2026-07-01 | 2026-07-01 | 181 |  |  | 2026-06-29 | 2026-06-29 | 1d | 9d |  | start no earlier than 2026-06-24 | TUBULAÇÃO / UTILIDADES | Ter 16/06/26 | Ter 16/06/26 | Aprovação | Sex 05/06/26 | Sex 05/06/26 | Sprint 10 |

| ID | WBS | Task | Type | Duration | Start | Finish | Predecessors | Complete | Remaining | Baseline start | Baseline finish | Baseline duration | Total slack | Free slack | Constraint | Disciplina | Início_LB_R0 | Término_LB_R0 | Text5 | ILB_2 | TLB_2 | Sprints |
| --- | --- | --- | --- | --- | --- | --- | --- | --- | --- | --- | --- | --- | --- | --- | --- | --- | --- | --- | --- | --- | --- | --- |
| 183 | 1.1.8.8 | **MC-F0009-0306-MB-T-00001** |  | 7d | 2026-06-29 A | 2026-07-07 |  | 43% | 4d | 2026-06-02 | 2026-06-10 | 7d | 5d |  |  | TUBULAÇÃO / UTILIDADES | Qua 20/05/26 | Qui 28/05/26 | FD-F0009-0306-MB-T-00001 | Seg 25/05/26 | Ter 02/06/26 | Sprint 10 |
| 184 | 1.1.8.8.1 | Emissão inicial |  | 3d | 2026-06-29 A | 2026-07-01 A | 128, 190 | 100% |  | 2026-06-02 | 2026-06-04 | 3d |  |  | start no earlier than 2026-06-29 | TUBULAÇÃO / UTILIDADES | Qua 20/05/26 | Sex 22/05/26 | Emissão inicial | Seg 25/05/26 | Qua 27/05/26 | Sprint 10 |
| 185 | 1.1.8.8.2 | Análise Tecnored |  | 1d | 2026-07-02 | 2026-07-02 | 184 |  |  | 2026-06-05 | 2026-06-05 | 1d | 5d | 0d | start no earlier than 2026-06-15 | TUBULAÇÃO / UTILIDADES | Seg 25/05/26 | Seg 25/05/26 | Análise Tecnored | Qui 28/05/26 | Qui 28/05/26 | Sprint 10 |
| 186 | 1.1.8.8.3 | Atendimento de comentários |  | 2d | 2026-07-03 | 2026-07-06 | 185 |  |  | 2026-06-08 | 2026-06-09 | 2d | 5d | 0d | start no earlier than 2026-06-16 | TUBULAÇÃO / UTILIDADES | Ter 26/05/26 | Qua 27/05/26 | Atendimento de comentários | Sex 29/05/26 | Seg 01/06/26 | Sprint 10 |
| 187 | 1.1.8.8.4 | Aprovação |  | 1d | 2026-07-07 | 2026-07-07 | 186 |  |  | 2026-06-10 | 2026-06-10 | 1d | 5d |  | start no earlier than 2026-06-18 | TUBULAÇÃO / UTILIDADES | Qui 28/05/26 | Qui 28/05/26 | Aprovação | Ter 02/06/26 | Ter 02/06/26 | Sprint 11 |
| 188 | 1.1.8.9 | **FG-F0009-0306-MB-T-00001** |  | 10d | 2026-06-08 A | 2026-06-19 |  | 38% | 6.25d | 2026-06-08 | 2026-06-25 | 14d | 17d |  |  | TUBULAÇÃO / UTILIDADES | Sex 15/05/26 | Qua 03/06/26 | FD-F0009-0306-MB-T-00002 | Seg 25/05/26 | Ter 02/06/26 | Sprint 7 |
| 189 | 1.1.8.9.1 | Emissão inicial |  | 3d | 2026-06-08 A | 2026-06-12 A | 62FS+3d | 100% |  | 2026-06-08 | 2026-06-19 | 10d |  |  | finish no earlier than 2026-06-10 | TUBULAÇÃO / UTILIDADES | Sex 15/05/26 | Qui 28/05/26 | Emissão inicial | Seg 25/05/26 | Qua 27/05/26 | Sprint 7 |
| 190 | 1.1.8.9.2 | Análise Tecnored |  | 2d | 2026-06-15 | 2026-06-16 | 189 |  |  | 2026-06-22 | 2026-06-22 | 1d | 17d | 0d | start no earlier than 2026-06-09 | TUBULAÇÃO / UTILIDADES | Sex 29/05/26 | Sex 29/05/26 | Análise Tecnored | Qui 28/05/26 | Qui 28/05/26 | Sprint 8 |
| 191 | 1.1.8.9.3 | Atendimento de comentários |  | 2d | 2026-06-17 | 2026-06-18 | 190 |  |  | 2026-06-23 | 2026-06-24 | 2d | 17d | 0d | start no earlier than 2026-06-10 | TUBULAÇÃO / UTILIDADES | Seg 01/06/26 | Ter 02/06/26 | Atendimento de comentários | Sex 29/05/26 | Seg 01/06/26 | Sprint 8 |
| 192 | 1.1.8.9.4 | Aprovação |  | 1d | 2026-06-19 | 2026-06-19 | 191 |  |  | 2026-06-25 | 2026-06-25 | 1d | 17d |  | start no earlier than 2026-06-12 | TUBULAÇÃO / UTILIDADES | Qua 03/06/26 | Qua 03/06/26 | Aprovação | Ter 02/06/26 | Ter 02/06/26 | Sprint 8 |
| 193 | 1.1.8.10 | **FG-F0009-0306-MB-T-00002** | inactive | 14d | 2026-06-08 | 2026-06-25 |  |  |  | 2026-06-08 | 2026-06-25 | 14d | 13d |  |  |  |  |  |  |  |  | Sprint 7 |
| 194 | 1.1.8.10.1 | Emissão inicial | inactive | 10d | 2026-06-08 | 2026-06-19 | 62 |  |  | 2026-06-08 | 2026-06-19 | 10d | 13d | 0d |  |  |  |  |  |  |  | Sprint 7 |
| 195 | 1.1.8.10.2 | Análise Tecnored | inactive | 1d | 2026-06-22 | 2026-06-22 | 194 |  |  | 2026-06-22 | 2026-06-22 | 1d | 13d | 0d |  |  |  |  |  |  |  | Sprint 9 |
| 196 | 1.1.8.10.3 | Atendimento de comentários | inactive | 2d | 2026-06-23 | 2026-06-24 | 195 |  |  | 2026-06-23 | 2026-06-24 | 2d | 13d | 0d |  |  |  |  |  |  |  | Sprint 9 |
| 197 | 1.1.8.10.4 | Aprovação | inactive | 1d | 2026-06-25 | 2026-06-25 | 196 |  |  | 2026-06-25 | 2026-06-25 | 1d | 13d |  |  |  |  |  |  |  |  | Sprint 9 |
| 198 | 1.1.8.11 | **AG-F0009-0306-MB-T-00001** |  | 7.5d | 2026-06-23 A | 2026-07-02 |  | 56% | 3.28d | 2026-06-05 | 2026-06-15 | 7d | 8.5d | 0d |  | TUBULAÇÃO / UTILIDADES | Seg 25/05/26 | Ter 02/06/26 | PQ-F0009-0306-MB-T-00001 | Seg 08/06/26 | Ter 16/06/26 | Sprint 9 |
| 199 | 1.1.8.11.1 | Emissão inicial |  | 4d | 2026-06-23 A | 2026-06-26 A | 160 | 100% |  | 2026-06-05 | 2026-06-09 | 3d |  |  |  | TUBULAÇÃO / UTILIDADES | Seg 25/05/26 | Qua 27/05/26 | Emissão inicial | Seg 08/06/26 | Qua 10/06/26 | Sprint 9 |
| 200 | 1.1.8.11.2 | Análise Tecnored |  | 1d | 2026-06-26 A | 2026-06-29 | 199 | 50% | 0.5d | 2026-06-10 | 2026-06-10 | 1d | 8.5d | 0d |  | TUBULAÇÃO / UTILIDADES | Qui 28/05/26 | Qui 28/05/26 | Análise Tecnored | Qui 11/06/26 | Qui 11/06/26 | Sprint 9 |
| 201 | 1.1.8.11.3 | Atendimento de comentários |  | 2d | 2026-06-29 | 2026-07-01 | 200 |  |  | 2026-06-11 | 2026-06-12 | 2d | 8.5d | 0d |  | TUBULAÇÃO / UTILIDADES | Sex 29/05/26 | Seg 01/06/26 | Atendimento de comentários | Sex 12/06/26 | Seg 15/06/26 | Sprint 10 |
| 202 | 1.1.8.11.4 | Aprovação |  | 1d | 2026-07-01 | 2026-07-02 | 201 |  |  | 2026-06-15 | 2026-06-15 | 1d | 8.5d |  |  | TUBULAÇÃO / UTILIDADES | Ter 02/06/26 | Ter 02/06/26 | Aprovação | Ter 16/06/26 | Ter 16/06/26 | Sprint 10 |
| 203 | 1.1.8.12 | **AG-F0009-0306-MB-T-00002** |  | 7.5d | 2026-06-23 A | 2026-07-02 |  | 56% | 3.28d | 2026-06-05 | 2026-06-15 | 7d | 8.5d |  |  | TUBULAÇÃO / UTILIDADES | Seg 25/05/26 | Ter 02/06/26 | MC-F0009-0306-MB-T-00001 | Qua 20/05/26 | Qui 28/05/26 | Sprint 9 |
| 204 | 1.1.8.12.1 | Emissão inicial |  | 4d | 2026-06-23 A | 2026-06-26 A | 160 | 100% |  | 2026-06-05 | 2026-06-09 | 3d |  |  |  | TUBULAÇÃO / UTILIDADES | Seg 25/05/26 | Qua 27/05/26 | Emissão inicial | Qua 20/05/26 | Sex 22/05/26 | Sprint 9 |
| 205 | 1.1.8.12.2 | Análise Tecnored |  | 1d | 2026-06-26 A | 2026-06-29 | 204 | 50% | 0.5d | 2026-06-10 | 2026-06-10 | 1d | 8.5d | 0d |  | TUBULAÇÃO / UTILIDADES | Qui 28/05/26 | Qui 28/05/26 | Análise Tecnored | Seg 25/05/26 | Seg 25/05/26 | Sprint 9 |
| 206 | 1.1.8.12.3 | Atendimento de comentários |  | 2d | 2026-06-29 | 2026-07-01 | 205 |  |  | 2026-06-11 | 2026-06-12 | 2d | 8.5d | 0d |  | TUBULAÇÃO / UTILIDADES | Sex 29/05/26 | Seg 01/06/26 | Atendimento de comentários | Ter 26/05/26 | Qua 27/05/26 | Sprint 10 |
| 207 | 1.1.8.12.4 | Aprovação |  | 1d | 2026-07-01 | 2026-07-02 | 206 |  |  | 2026-06-15 | 2026-06-15 | 1d | 8.5d |  |  | TUBULAÇÃO / UTILIDADES | Ter 02/06/26 | Ter 02/06/26 | Aprovação | Qui 28/05/26 | Qui 28/05/26 | Sprint 10 |

| ID | WBS | Task | Type | Duration | Start | Finish | Predecessors | Complete | Remaining | Baseline start | Baseline finish | Baseline duration | Total slack | Free slack | Constraint | Disciplina | Início_LB_R0 | Término_LB_R0 | Text5 | ILB_2 | TLB_2 | Sprints |
| --- | --- | --- | --- | --- | --- | --- | --- | --- | --- | --- | --- | --- | --- | --- | --- | --- | --- | --- | --- | --- | --- | --- |
| 208 | 1.1.8.13 | **AG-F0009-0306-MB-T-00003** |  | 7.5d | 2026-06-23 A | 2026-07-02 |  | 56% | 3.28d | 2026-06-05 | 2026-06-15 | 7d | 8.5d |  |  | TUBULAÇÃO / UTILIDADES | Seg 25/05/26 | Ter 02/06/26 | FG-F0009-0306-MB-T-00001 | Sex 15/05/26 | Qua 03/06/26 | Sprint 9 |
| 209 | 1.1.8.13.1 | Emissão inicial |  | 4d | 2026-06-23 A | 2026-06-26 A | 160 | 100% |  | 2026-06-05 | 2026-06-09 | 3d |  |  |  | TUBULAÇÃO / UTILIDADES | Seg 25/05/26 | Qua 27/05/26 | Emissão inicial | Sex 15/05/26 | Qui 28/05/26 | Sprint 9 |
| 210 | 1.1.8.13.2 | Análise Tecnored |  | 1d | 2026-06-26 A | 2026-06-29 | 209 | 50% | 0.5d | 2026-06-10 | 2026-06-10 | 1d | 8.5d | 0d |  | TUBULAÇÃO / UTILIDADES | Qui 28/05/26 | Qui 28/05/26 | Análise Tecnored | Sex 29/05/26 | Sex 29/05/26 | Sprint 9 |
| 211 | 1.1.8.13.3 | Atendimento de comentários |  | 2d | 2026-06-29 | 2026-07-01 | 210 |  |  | 2026-06-11 | 2026-06-12 | 2d | 8.5d | 0d |  | TUBULAÇÃO / UTILIDADES | Sex 29/05/26 | Seg 01/06/26 | Atendimento de comentários | Seg 01/06/26 | Ter 02/06/26 | Sprint 10 |
| 212 | 1.1.8.13.4 | Aprovação |  | 1d | 2026-07-01 | 2026-07-02 | 211 |  |  | 2026-06-15 | 2026-06-15 | 1d | 8.5d |  |  | TUBULAÇÃO / UTILIDADES | Ter 02/06/26 | Ter 02/06/26 | Aprovação | Qua 03/06/26 | Qua 03/06/26 | Sprint 10 |
| 213 | 1.1.8.14 | **AG-F0009-0306-MB-T-00004** | inactive | 7d | 2026-05-28 | 2026-06-09 |  |  |  | 2026-06-05 | 2026-06-15 | 7d | 25d |  |  |  |  |  |  |  |  | Sprint 5 |
| 214 | 1.1.8.14.1 | Emissão inicial | inactive | 3d | 2026-05-28 | 2026-06-01 | 130 |  |  | 2026-06-05 | 2026-06-09 | 3d | 25d | 0d |  |  |  |  |  |  |  | Sprint 5 |
| 215 | 1.1.8.14.2 | Análise Tecnored | inactive | 1d | 2026-06-02 | 2026-06-02 | 214 |  |  | 2026-06-10 | 2026-06-10 | 1d | 25d | 0d |  |  |  |  |  |  |  | Sprint 6 |
| 216 | 1.1.8.14.3 | Atendimento de comentários | inactive | 2d | 2026-06-03 | 2026-06-08 | 215 |  |  | 2026-06-11 | 2026-06-12 | 2d | 25d | 0d |  |  |  |  |  |  |  | Sprint 6 |
| 217 | 1.1.8.14.4 | Aprovação | inactive | 1d | 2026-06-09 | 2026-06-09 | 216 |  |  | 2026-06-15 | 2026-06-15 | 1d | 25d |  |  |  |  |  |  |  |  | Sprint 7 |
| 218 | 1.1.8.15 | **AG-F0009-0306-MB-T-00005** | inactive | 7d | 2026-05-28 | 2026-06-09 |  |  |  | 2026-06-05 | 2026-06-15 | 7d | 25d |  |  |  |  |  |  |  |  | Sprint 5 |
| 219 | 1.1.8.15.1 | Emissão inicial | inactive | 3d | 2026-05-28 | 2026-06-01 | 130 |  |  | 2026-06-05 | 2026-06-09 | 3d | 25d | 0d |  |  |  |  |  |  |  | Sprint 5 |
| 220 | 1.1.8.15.2 | Análise Tecnored | inactive | 1d | 2026-06-02 | 2026-06-02 | 219 |  |  | 2026-06-10 | 2026-06-10 | 1d | 25d | 0d |  |  |  |  |  |  |  | Sprint 6 |
| 221 | 1.1.8.15.3 | Atendimento de comentários | inactive | 2d | 2026-06-03 | 2026-06-08 | 220 |  |  | 2026-06-11 | 2026-06-12 | 2d | 25d | 0d |  |  |  |  |  |  |  | Sprint 6 |
| 222 | 1.1.8.15.4 | Aprovação | inactive | 1d | 2026-06-09 | 2026-06-09 | 221 |  |  | 2026-06-15 | 2026-06-15 | 1d | 25d |  |  |  |  |  |  |  |  | Sprint 7 |
| 223 | 1.1.8.16 | **AG-F0009-0306-MB-T-00006** | inactive | 7d | 2026-05-28 | 2026-06-09 |  |  |  | 2026-06-05 | 2026-06-15 | 7d | 25d |  |  |  |  |  |  |  |  | Sprint 5 |
| 224 | 1.1.8.16.1 | Emissão inicial | inactive | 3d | 2026-05-28 | 2026-06-01 | 130 |  |  | 2026-06-05 | 2026-06-09 | 3d | 25d | 0d |  |  |  |  |  |  |  | Sprint 5 |
| 225 | 1.1.8.16.2 | Análise Tecnored | inactive | 1d | 2026-06-02 | 2026-06-02 | 224 |  |  | 2026-06-10 | 2026-06-10 | 1d | 25d | 0d |  |  |  |  |  |  |  | Sprint 6 |
| 226 | 1.1.8.16.3 | Atendimento de comentários | inactive | 2d | 2026-06-03 | 2026-06-08 | 225 |  |  | 2026-06-11 | 2026-06-12 | 2d | 25d | 0d |  |  |  |  |  |  |  | Sprint 6 |
| 227 | 1.1.8.16.4 | Aprovação | inactive | 1d | 2026-06-09 | 2026-06-09 | 226 |  |  | 2026-06-15 | 2026-06-15 | 1d | 25d |  |  |  |  |  |  |  |  | Sprint 7 |
| 228 | 1.1.8.17 | **LK-F0009-0306-MB-T-00001** |  | 7d | 2026-06-29 A | 2026-07-07 |  | 43% | 4d | 2026-06-05 | 2026-06-15 | 7d | 5d |  |  | TUBULAÇÃO / UTILIDADES | Seg 25/05/26 | Ter 02/06/26 | FG-F0009-0306-MB-T-00002 | Sex 15/05/26 | Qua 03/06/26 | Sprint 10 |
| 229 | 1.1.8.17.1 | Emissão inicial |  | 3d | 2026-06-29 A | 2026-07-01 A | 184SS | 100% |  | 2026-06-05 | 2026-06-09 | 3d |  |  | finish no earlier than 2026-07-01 | TUBULAÇÃO / UTILIDADES | Seg 25/05/26 | Qua 27/05/26 | Emissão inicial | Sex 15/05/26 | Qui 28/05/26 | Sprint 10 |
| 230 | 1.1.8.17.2 | Análise Tecnored |  | 1d | 2026-07-02 | 2026-07-02 | 229 |  |  | 2026-06-10 | 2026-06-10 | 1d | 5d | 0d | start no earlier than 2026-06-29 | TUBULAÇÃO / UTILIDADES | Qui 28/05/26 | Qui 28/05/26 | Análise Tecnored | Sex 29/05/26 | Sex 29/05/26 | Sprint 10 |
| 231 | 1.1.8.17.3 | Atendimento de comentários |  | 2d | 2026-07-03 | 2026-07-06 | 230 |  |  | 2026-06-11 | 2026-06-12 | 2d | 5d | 0d | start no earlier than 2026-06-30 | TUBULAÇÃO / UTILIDADES | Sex 29/05/26 | Seg 01/06/26 | Atendimento de comentários | Seg 01/06/26 | Ter 02/06/26 | Sprint 10 |
| 232 | 1.1.8.17.4 | Aprovação |  | 1d | 2026-07-07 | 2026-07-07 | 231 |  |  | 2026-06-15 | 2026-06-15 | 1d | 5d |  | start no earlier than 2026-07-02 | TUBULAÇÃO / UTILIDADES | Ter 02/06/26 | Ter 02/06/26 | Aprovação | Qua 03/06/26 | Qua 03/06/26 | Sprint 11 |

| ID | WBS | Task | Type | Duration | Start | Finish | Predecessors | Complete | Remaining | Baseline start | Baseline finish | Baseline duration | Total slack | Free slack | Constraint | Baseline cost | Sprints | Disciplina | Início_LB_R0 | Término_LB_R0 | Text5 | ILB_2 | TLB_2 |
| --- | --- | --- | --- | --- | --- | --- | --- | --- | --- | --- | --- | --- | --- | --- | --- | --- | --- | --- | --- | --- | --- | --- | --- |
| 233 | 1.1.8.18 | **MC-F0009-0306-MB-T-00002** | inactive | 14d | 2026-05-25 | 2026-06-15 |  |  |  | 2026-06-02 | 2026-06-19 | 14d | 21d |  |  |  | Sprint 5 |  |  |  |  |  |  |
| 234 | 1.1.8.18.1 | Emissão inicial | inactive | 10d | 2026-05-25 | 2026-06-09 | 128 |  |  | 2026-06-02 | 2026-06-15 | 10d | 21d | 0d |  |  | Sprint 5 |  |  |  |  |  |  |
| 235 | 1.1.8.18.2 | Análise Tecnored | inactive | 1d | 2026-06-10 | 2026-06-10 | 234 |  |  | 2026-06-16 | 2026-06-16 | 1d | 21d | 0d |  |  | Sprint 7 |  |  |  |  |  |  |
| 236 | 1.1.8.18.3 | Atendimento de comentários | inactive | 2d | 2026-06-11 | 2026-06-12 | 235 |  |  | 2026-06-17 | 2026-06-18 | 2d | 21d | 0d |  |  | Sprint 7 |  |  |  |  |  |  |
| 237 | 1.1.8.18.4 | Aprovação | inactive | 1d | 2026-06-15 | 2026-06-15 | 236 |  |  | 2026-06-19 | 2026-06-19 | 1d | 21d |  |  |  | Sprint 8 |  |  |  |  |  |  |
| 238 | 1.1.9 | **Estrutura metálica** |  | 18d | 2026-06-18 A | 2026-07-15 |  | 47% | 9.56d | 2026-06-11 | 2026-07-07 | 19d | 1d |  |  |  | Sprint 8 | ESTRUTURA METÁLICA | Ter 05/05/26 | Seg 29/06/26 | AG-F0009-0306-MB-T-00001 | Seg 25/05/26 | Ter 02/06/26 |
| 239 | 1.1.9.1 | **CP-F0009-0306-MB-S-00001** | inactive | 12d | 2026-07-14 | 2026-07-29 |  |  |  |  |  |  | -9d | 0d |  | -0 | Sprint 12 |  |  |  |  |  |  |
| 240 | 1.1.9.1.1 | Emissão inicial | inactive | 8d | 2026-07-14 | 2026-07-23 | 20, 10 |  |  |  |  |  | -9d | 0d |  | -0 | Sprint 12 |  |  |  |  |  |  |
| 241 | 1.1.9.1.2 | Análise Tecnored | inactive | 1d | 2026-07-24 | 2026-07-24 | 240 |  |  |  |  |  | -9d | 0d |  | -0 | Sprint 13 |  |  |  |  |  |  |
| 242 | 1.1.9.1.3 | Atendimento de comentários | inactive | 2d | 2026-07-27 | 2026-07-28 | 241 |  |  |  |  |  | -9d | 0d |  | -0 | Fora do Período |  |  |  |  |  |  |
| 243 | 1.1.9.1.4 | Aprovação | inactive | 1d | 2026-07-29 | 2026-07-29 | 242 |  |  |  |  |  | -9d | 0d |  | -0 | Fora do Período |  |  |  |  |  |  |
| 244 | 1.1.9.2 | **ML-F0009-0306-MB-S-00001** |  | 6d | 2026-06-19 | 2026-06-26 |  |  |  | 2026-06-11 | 2026-06-23 | 9d | 8d |  |  |  | Sprint 8 | ESTRUTURA METÁLICA | Qua 03/06/26 | Seg 15/06/26 | Emissão inicial | Seg 25/05/26 | Qua 27/05/26 |
| 245 | 1.1.9.2.1 | Emissão inicial |  | 3d | 2026-06-19 | 2026-06-23 | 260FS-3d |  |  | 2026-06-11 | 2026-06-17 | 5d | 8d | 0d | start no earlier than 2026-06-19 |  | Sprint 8 | ESTRUTURA METÁLICA | Qua 03/06/26 | Ter 09/06/26 | Análise Tecnored | Qui 28/05/26 | Qui 28/05/26 |
| 246 | 1.1.9.2.2 | Análise Tecnored |  | 1d | 2026-06-24 | 2026-06-24 | 245 |  |  | 2026-06-18 | 2026-06-18 | 1d | 8d | 0d |  |  | Sprint 9 | ESTRUTURA METÁLICA | Qua 10/06/26 | Qua 10/06/26 | Atendimento de comentários | Sex 29/05/26 | Seg 01/06/26 |
| 247 | 1.1.9.2.3 | Atendimento de comentários |  | 1d | 2026-06-25 | 2026-06-25 | 246 |  |  | 2026-06-19 | 2026-06-22 | 2d | 12d | 0d |  |  | Sprint 9 | ESTRUTURA METÁLICA | Qui 11/06/26 | Sex 12/06/26 | Aprovação | Ter 02/06/26 | Ter 02/06/26 |
| 248 | 1.1.9.2.4 | Aprovação |  | 1d | 2026-06-26 | 2026-06-26 | 247 |  |  | 2026-06-23 | 2026-06-23 | 1d | 12d |  |  |  | Sprint 9 | ESTRUTURA METÁLICA | Seg 15/06/26 | Seg 15/06/26 | AG-F0009-0306-MB-T-00002 | Seg 25/05/26 | Ter 02/06/26 |
| 249 | 1.1.9.3 | **PQ-F0009-0306-MB-S-00001** |  | 6d | 2026-07-06 A | 2026-07-15 |  | 50% | 3d | 2026-06-29 | 2026-07-07 | 7d | 1d |  |  |  | Sprint 11 | ESTRUTURA METÁLICA | Sex 19/06/26 | Seg 29/06/26 | Emissão inicial | Seg 25/05/26 | Qua 27/05/26 |
| 250 | 1.1.9.3.1 | Emissão inicial |  | 3d | 2026-07-06 A | 2026-07-08 A | 255 | 100% |  | 2026-06-29 | 2026-07-01 | 3d |  |  | start no earlier than 2026-07-06 |  | Sprint 11 | ESTRUTURA METÁLICA | Sex 19/06/26 | Ter 23/06/26 | Análise Tecnored | Qui 28/05/26 | Qui 28/05/26 |
| 251 | 1.1.9.3.2 | Análise Tecnored |  | 1d | 2026-07-13 | 2026-07-13 | 250 |  |  | 2026-07-02 | 2026-07-02 | 1d | 1d | 0d |  |  | Sprint 12 | ESTRUTURA METÁLICA | Qua 24/06/26 | Qua 24/06/26 | Atendimento de comentários | Sex 29/05/26 | Seg 01/06/26 |
| 252 | 1.1.9.3.3 | Atendimento de comentários |  | 1d | 2026-07-14 | 2026-07-14 | 251 |  |  | 2026-07-03 | 2026-07-06 | 2d | 1d | 0d |  |  | Sprint 12 | ESTRUTURA METÁLICA | Qui 25/06/26 | Sex 26/06/26 | Aprovação | Ter 02/06/26 | Ter 02/06/26 |
| 253 | 1.1.9.3.4 | Aprovação |  | 1d | 2026-07-15 | 2026-07-15 | 252 |  |  | 2026-07-07 | 2026-07-07 | 1d | 1d |  |  |  | Sprint 12 | ESTRUTURA METÁLICA | Seg 29/06/26 | Seg 29/06/26 | AG-F0009-0306-MB-T-00003 | Seg 25/05/26 | Ter 02/06/26 |
| 254 | 1.1.9.4 | **LM-F0009-0306-MB-S-00001** | inactive | 6d | 2026-06-24 | 2026-07-01 |  |  |  | 2026-06-24 | 2026-07-02 | 7d | 9d |  |  |  | Sprint 9 | ESTRUTURA METÁLICA | Ter 16/06/26 | Qua 24/06/26 | Emissão inicial | Seg 25/05/26 | Qua 27/05/26 |
| 255 | 1.1.9.4.1 | Emissão inicial | inactive | 3d | 2026-06-24 | 2026-06-26 | 245 |  |  | 2026-06-24 | 2026-06-26 | 3d | 9d | 0d |  |  | Sprint 9 | ESTRUTURA METÁLICA | Ter 16/06/26 | Qui 18/06/26 | Análise Tecnored | Qui 28/05/26 | Qui 28/05/26 |
| 256 | 1.1.9.4.2 | Análise Tecnored | inactive | 1d | 2026-06-29 | 2026-06-29 | 255 |  |  | 2026-06-29 | 2026-06-29 | 1d | 9d | 0d |  |  | Sprint 10 | ESTRUTURA METÁLICA | Sex 19/06/26 | Sex 19/06/26 | Atendimento de comentários | Sex 29/05/26 | Seg 01/06/26 |
| 257 | 1.1.9.4.3 | Atendimento de comentários | inactive | 1d | 2026-06-30 | 2026-06-30 | 256 |  |  | 2026-06-30 | 2026-07-01 | 2d | 9d | 0d |  |  | Sprint 10 | ESTRUTURA METÁLICA | Seg 22/06/26 | Ter 23/06/26 | Aprovação | Ter 02/06/26 | Ter 02/06/26 |
| 258 | 1.1.9.4.4 | Aprovação | inactive | 1d | 2026-07-01 | 2026-07-01 | 257 |  |  | 2026-07-02 | 2026-07-02 | 1d | 9d |  |  |  | Sprint 10 | ESTRUTURA METÁLICA | Qua 24/06/26 | Qua 24/06/26 | AG-F0009-0306-MB-T-00004 | Seg 25/05/26 | Ter 02/06/26 |

| ID | WBS | Task | Duration | Start | Finish | Predecessors | Complete | Remaining | Baseline start | Baseline finish | Baseline duration | Total slack | Free slack | Constraint | Disciplina | Início_LB_R0 | Término_LB_R0 | Text5 | ILB_2 | TLB_2 | Sprints |
| --- | --- | --- | --- | --- | --- | --- | --- | --- | --- | --- | --- | --- | --- | --- | --- | --- | --- | --- | --- | --- | --- |
| 259 | 1.1.9.5 | **MC-F0009-0306-MB-S-00001** | 5d | 2026-06-18 A | 2026-06-24 |  | 70% | 1.5d | 2026-06-11 | 2026-06-19 | 7d | 14d |  |  | ESTRUTURA METÁLICA | Sex 29/05/26 | Seg 08/06/26 | Emissão inicial | Seg 25/05/26 | Qua 27/05/26 | Sprint 8 |
| 260 | 1.1.9.5.1 | Emissão inicial | 2d | 2026-06-18 A | 2026-06-19 A | 119, 124 | 100% |  | 2026-06-11 | 2026-06-15 | 3d |  |  | start no earlier than 2026-06-16 | ESTRUTURA METÁLICA | Sex 29/05/26 | Ter 02/06/26 | Análise Tecnored | Qui 28/05/26 | Qui 28/05/26 | Sprint 8 |
| 261 | 1.1.9.5.2 | Análise Tecnored | 1d | 2026-06-22 A | 2026-06-22 A | 260 | 100% |  | 2026-06-16 | 2026-06-16 | 1d |  |  |  | ESTRUTURA METÁLICA | Qua 03/06/26 | Qua 03/06/26 | Atendimento de comentários | Sex 29/05/26 | Seg 01/06/26 | Sprint 9 |
| 262 | 1.1.9.5.3 | Atendimento de comentários | 1d | 2026-06-23 A | 2026-06-23 | 261 | 50% | 0.5d | 2026-06-17 | 2026-06-18 | 2d | 14d | 0d |  | ESTRUTURA METÁLICA | Qui 04/06/26 | Sex 05/06/26 | Aprovação | Ter 02/06/26 | Ter 02/06/26 | Sprint 9 |
| 263 | 1.1.9.5.4 | Aprovação | 1d | 2026-06-24 | 2026-06-24 | 262 |  |  | 2026-06-19 | 2026-06-19 | 1d | 14d |  |  | ESTRUTURA METÁLICA | Seg 08/06/26 | Seg 08/06/26 | AG-F0009-0306-MB-T-00005 | Seg 25/05/26 | Ter 02/06/26 | Sprint 9 |
| 264 | 1.1.9.6 | **AG-F0009-0306-MB-S-00001** | 6d | 2026-06-30 A | 2026-07-07 |  | 50% | 3d | 2026-06-23 | 2026-07-03 | 9d | 5d |  |  | ESTRUTURA METÁLICA | Seg 15/06/26 | Qui 25/06/26 | Emissão inicial | Seg 25/05/26 | Qua 27/05/26 | Sprint 10 |
| 265 | 1.1.9.6.1 | Emissão inicial | 3d | 2026-06-30 A | 2026-07-02 A | 245 | 100% |  | 2026-06-23 | 2026-06-29 | 5d |  |  |  | ESTRUTURA METÁLICA | Seg 15/06/26 | Sex 19/06/26 | Análise Tecnored | Qui 28/05/26 | Qui 28/05/26 | Sprint 10 |
| 266 | 1.1.9.6.2 | Análise Tecnored | 1d | 2026-07-03 | 2026-07-03 | 265 |  |  | 2026-06-30 | 2026-06-30 | 1d | 5d | 0d |  | ESTRUTURA METÁLICA | Seg 22/06/26 | Seg 22/06/26 | Atendimento de comentários | Sex 29/05/26 | Seg 01/06/26 | Sprint 10 |
| 267 | 1.1.9.6.3 | Atendimento de comentários | 1d | 2026-07-06 | 2026-07-06 | 266 |  |  | 2026-07-01 | 2026-07-02 | 2d | 5d | 0d |  | ESTRUTURA METÁLICA | Ter 23/06/26 | Qua 24/06/26 | Aprovação | Ter 02/06/26 | Ter 02/06/26 | Sprint 11 |
| 268 | 1.1.9.6.4 | Aprovação | 1d | 2026-07-07 | 2026-07-07 | 267 |  |  | 2026-07-03 | 2026-07-03 | 1d | 5d |  |  | ESTRUTURA METÁLICA | Qui 25/06/26 | Qui 25/06/26 | AG-F0009-0306-MB-T-00006 | Seg 25/05/26 | Ter 02/06/26 | Sprint 11 |
| 269 | 1.1.9.7 | **AG-F0009-0306-MB-S-00002** | 6d | 2026-07-06 A | 2026-07-15 |  | 50% | 3d | 2026-06-23 | 2026-07-03 | 9d | 1d |  |  | ESTRUTURA METÁLICA | Seg 15/06/26 | Qui 25/06/26 | Emissão inicial | Seg 25/05/26 | Qua 27/05/26 | Sprint 11 |
| 270 | 1.1.9.7.1 | Emissão inicial | 3d | 2026-07-06 A | 2026-07-08 A | 245 | 100% |  | 2026-06-23 | 2026-06-29 | 5d |  |  | start no earlier than 2026-07-06 | ESTRUTURA METÁLICA | Seg 15/06/26 | Sex 19/06/26 | Análise Tecnored | Qui 28/05/26 | Qui 28/05/26 | Sprint 11 |
| 271 | 1.1.9.7.2 | Análise Tecnored | 1d | 2026-07-13 | 2026-07-13 | 270 |  |  | 2026-06-30 | 2026-06-30 | 1d | 1d | 0d |  | ESTRUTURA METÁLICA | Seg 22/06/26 | Seg 22/06/26 | Atendimento de comentários | Sex 29/05/26 | Seg 01/06/26 | Sprint 12 |
| 272 | 1.1.9.7.3 | Atendimento de comentários | 1d | 2026-07-14 | 2026-07-14 | 271 |  |  | 2026-07-01 | 2026-07-02 | 2d | 1d | 0d |  | ESTRUTURA METÁLICA | Ter 23/06/26 | Qua 24/06/26 | Aprovação | Ter 02/06/26 | Ter 02/06/26 | Sprint 12 |
| 273 | 1.1.9.7.4 | Aprovação | 1d | 2026-07-15 | 2026-07-15 | 272 |  |  | 2026-07-03 | 2026-07-03 | 1d | 1d |  |  | ESTRUTURA METÁLICA | Qui 25/06/26 | Qui 25/06/26 | LK-F0009-0306-MB-T-00001 | Seg 25/05/26 | Ter 02/06/26 | Sprint 12 |
| 274 | 1.1.9.8 | **AG-F0009-0306-MB-S-00003** | 6d | 2026-07-06 A | 2026-07-15 |  | 50% | 3d | 2026-06-23 | 2026-07-03 | 9d | 1d |  |  | ESTRUTURA METÁLICA | Seg 15/06/26 | Qui 25/06/26 | Emissão inicial | Seg 25/05/26 | Qua 27/05/26 | Sprint 11 |
| 275 | 1.1.9.8.1 | Emissão inicial | 3d | 2026-07-06 A | 2026-07-08 A | 245 | 100% |  | 2026-06-23 | 2026-06-29 | 5d |  |  | start no earlier than 2026-07-06 | ESTRUTURA METÁLICA | Seg 15/06/26 | Sex 19/06/26 | Análise Tecnored | Qui 28/05/26 | Qui 28/05/26 | Sprint 11 |
| 276 | 1.1.9.8.2 | Análise Tecnored | 1d | 2026-07-13 | 2026-07-13 | 275 |  |  | 2026-06-30 | 2026-06-30 | 1d | 1d | 0d | start no earlier than 2026-07-13 | ESTRUTURA METÁLICA | Seg 22/06/26 | Seg 22/06/26 | Atendimento de comentários | Sex 29/05/26 | Seg 01/06/26 | Sprint 12 |
| 277 | 1.1.9.8.3 | Atendimento de comentários | 1d | 2026-07-14 | 2026-07-14 | 276 |  |  | 2026-07-01 | 2026-07-02 | 2d | 1d | 0d | start no earlier than 2026-07-14 | ESTRUTURA METÁLICA | Ter 23/06/26 | Qua 24/06/26 | Aprovação | Ter 02/06/26 | Ter 02/06/26 | Sprint 12 |
| 278 | 1.1.9.8.4 | Aprovação | 1d | 2026-07-15 | 2026-07-15 | 277 |  |  | 2026-07-03 | 2026-07-03 | 1d | 1d |  | start no earlier than 2026-07-15 | ESTRUTURA METÁLICA | Qui 25/06/26 | Qui 25/06/26 | MC-F0009-0306-MB-T-00002 | Qua 20/05/26 | Seg 08/06/26 | Sprint 12 |
| 279 | 1.1.9.9 | **AG-F0009-0306-MB-S-00004** | 6d | 2026-07-06 A | 2026-07-15 |  | 50% | 3d | 2026-06-23 | 2026-07-03 | 9d | 1d |  |  | ESTRUTURA METÁLICA | Seg 15/06/26 | Qui 25/06/26 | Emissão inicial | Qua 20/05/26 | Ter 02/06/26 | Sprint 11 |
| 280 | 1.1.9.9.1 | Emissão inicial | 3d | 2026-07-06 A | 2026-07-08 A | 245 | 100% |  | 2026-06-23 | 2026-06-29 | 5d |  |  | start no earlier than 2026-07-06 | ESTRUTURA METÁLICA | Seg 15/06/26 | Sex 19/06/26 | Análise Tecnored | Qua 03/06/26 | Qua 03/06/26 | Sprint 11 |
| 281 | 1.1.9.9.2 | Análise Tecnored | 1d | 2026-07-13 | 2026-07-13 | 280 |  |  | 2026-06-30 | 2026-06-30 | 1d | 1d | 0d | start no earlier than 2026-07-13 | ESTRUTURA METÁLICA | Seg 22/06/26 | Seg 22/06/26 | Atendimento de comentários | Qui 04/06/26 | Sex 05/06/26 | Sprint 12 |
| 282 | 1.1.9.9.3 | Atendimento de comentários | 1d | 2026-07-14 | 2026-07-14 | 281 |  |  | 2026-07-01 | 2026-07-02 | 2d | 1d | 0d | start no earlier than 2026-07-14 | ESTRUTURA METÁLICA | Ter 23/06/26 | Qua 24/06/26 | Aprovação | Seg 08/06/26 | Seg 08/06/26 | Sprint 12 |
| 283 | 1.1.9.9.4 | Aprovação | 1d | 2026-07-15 | 2026-07-15 | 282 |  |  | 2026-07-03 | 2026-07-03 | 1d | 1d |  | start no earlier than 2026-07-15 | ESTRUTURA METÁLICA | Qui 25/06/26 | Qui 25/06/26 | Estrutura metálica | Ter 05/05/26 | Seg 29/06/26 | Sprint 12 |

| ID | WBS | Task | Type | Duration | Start | Finish | Predecessors | Complete | Remaining | Baseline start | Baseline finish | Baseline duration | Total slack | Free slack | Constraint | Baseline cost | Disciplina | Início_LB_R0 | Término_LB_R0 | Text5 | ILB_2 | TLB_2 | Sprints |
| --- | --- | --- | --- | --- | --- | --- | --- | --- | --- | --- | --- | --- | --- | --- | --- | --- | --- | --- | --- | --- | --- | --- | --- |
| 284 | 1.1.9.10 | **AG-F0009-0306-MB-S-00005** | inactive | 7d | 2026-06-24 | 2026-07-02 |  |  |  | 2026-06-23 | 2026-07-03 | 9d | 8d |  |  |  | ESTRUTURA METÁLICA | Seg 15/06/26 | Qui 25/06/26 | ML-F0009-0306-MB-S-00001 | Qua 03/06/26 | Seg 15/06/26 | Sprint 9 |
| 285 | 1.1.9.10.1 | Emissão inicial | inactive | 4d | 2026-06-24 | 2026-06-29 | 245 |  |  | 2026-06-23 | 2026-06-29 | 5d | 8d | 0d |  |  | ESTRUTURA METÁLICA | Seg 15/06/26 | Sex 19/06/26 | Emissão inicial | Qua 03/06/26 | Ter 09/06/26 | Sprint 9 |
| 286 | 1.1.9.10.2 | Análise Tecnored | inactive | 1d | 2026-06-30 | 2026-06-30 | 285 |  |  | 2026-06-30 | 2026-06-30 | 1d | 8d | 0d |  |  | ESTRUTURA METÁLICA | Seg 22/06/26 | Seg 22/06/26 | Análise Tecnored | Qua 10/06/26 | Qua 10/06/26 | Sprint 10 |
| 287 | 1.1.9.10.3 | Atendimento de comentários | inactive | 1d | 2026-07-01 | 2026-07-01 | 286 |  |  | 2026-07-01 | 2026-07-02 | 2d | 8d | 0d |  |  | ESTRUTURA METÁLICA | Ter 23/06/26 | Qua 24/06/26 | Atendimento de comentários | Qui 11/06/26 | Sex 12/06/26 | Sprint 10 |
| 288 | 1.1.9.10.4 | Aprovação | inactive | 1d | 2026-07-02 | 2026-07-02 | 287 |  |  | 2026-07-03 | 2026-07-03 | 1d | 8d |  |  |  | ESTRUTURA METÁLICA | Qui 25/06/26 | Qui 25/06/26 | Aprovação | Seg 15/06/26 | Seg 15/06/26 | Sprint 10 |
| 289 | 1.1.9.11 | **PL-F0009-0306-MB-S-00001** |  | 7d | 2026-07-03 A | 2026-07-15 |  | 57% | 3d | 2026-06-23 | 2026-07-03 | 9d | 1d |  |  |  | ESTRUTURA METÁLICA | Seg 15/06/26 | Qui 25/06/26 | PQ-F0009-0306-MB-S-00001 | Sex 19/06/26 | Seg 29/06/26 | Sprint 10 |
| 290 | 1.1.9.11.1 | Emissão inicial |  | 4d | 2026-07-03 A | 2026-07-08 A | 260FF | 100% |  | 2026-06-23 | 2026-06-29 | 5d |  |  | start no earlier than 2026-07-03 |  | ESTRUTURA METÁLICA | Seg 15/06/26 | Sex 19/06/26 | Emissão inicial | Sex 19/06/26 | Ter 23/06/26 | Sprint 10 |
| 291 | 1.1.9.11.2 | Análise Tecnored |  | 1d | 2026-07-13 | 2026-07-13 | 290 |  |  | 2026-06-30 | 2026-06-30 | 1d | 1d | 0d |  |  | ESTRUTURA METÁLICA | Seg 22/06/26 | Seg 22/06/26 | Análise Tecnored | Qua 24/06/26 | Qua 24/06/26 | Sprint 12 |
| 292 | 1.1.9.11.3 | Atendimento de comentários |  | 1d | 2026-07-14 | 2026-07-14 | 291 |  |  | 2026-07-01 | 2026-07-02 | 2d | 1d | 0d |  |  | ESTRUTURA METÁLICA | Ter 23/06/26 | Qua 24/06/26 | Atendimento de comentários | Qui 25/06/26 | Sex 26/06/26 | Sprint 12 |
| 293 | 1.1.9.11.4 | Aprovação |  | 1d | 2026-07-15 | 2026-07-15 | 292 |  |  | 2026-07-03 | 2026-07-03 | 1d | 1d |  |  |  | ESTRUTURA METÁLICA | Qui 25/06/26 | Qui 25/06/26 | Aprovação | Seg 29/06/26 | Seg 29/06/26 | Sprint 12 |
| 294 | 1.1.10 | **Elétrica** |  | 31d | 2026-05-28 A | 2026-07-15 |  | 58% | 12.95d | 2026-05-28 | 2026-07-07 | 29d | 1d |  |  |  | ELÉTRICA | Ter 05/05/26 | Ter 07/07/26 | LM-F0009-0306-MB-S-00001 | Ter 16/06/26 | Qua 24/06/26 | Sprint 5 |
| 295 | 1.1.10.1 | **CP-F0009-0306-MB-E-00001** | inactive | 32d | 2026-05-05 | 2026-06-19 |  |  |  |  |  |  | 17d |  |  | -0 |  |  |  |  |  |  | Sprint 2 |
| 296 | 1.1.10.1.1 | Emissão inicial | inactive | 7d | 2026-05-05 | 2026-05-13 | 20 |  |  |  |  |  | 38d | 21d |  | -0 |  |  |  |  |  |  | Sprint 2 |
| 297 | 1.1.10.1.2 | Análise Tecnored | inactive | 1d | 2026-06-16 | 2026-06-16 | 296, 7 |  |  |  |  |  | 17d | 0d |  | -0 |  |  |  |  |  |  | Sprint 8 |
| 298 | 1.1.10.1.3 | Atendimento de comentários | inactive | 2d | 2026-06-17 | 2026-06-18 | 297 |  |  |  |  |  | 17d | 0d |  | -0 |  |  |  |  |  |  | Sprint 8 |
| 299 | 1.1.10.1.4 | Aprovação | inactive | 1d | 2026-06-19 | 2026-06-19 | 298 |  |  |  |  |  | 17d |  |  | -0 |  |  |  |  |  |  | Sprint 8 |
| 300 | 1.1.10.2 | **ML-F0009-0306-MB-E-00001** |  | 6d | 2026-07-06 | 2026-07-15 |  |  |  | 2026-06-12 | 2026-06-24 | 9d | 1d |  |  |  | ELÉTRICA | Sex 12/06/26 | Qua 24/06/26 | Emissão inicial | Ter 16/06/26 | Qui 18/06/26 | Sprint 11 |
| 301 | 1.1.10.2.1 | Emissão inicial |  | 3d | 2026-07-06 | 2026-07-08 | 130, 246 |  |  | 2026-06-12 | 2026-06-18 | 5d | 1d | 0d | start no earlier than 2026-07-06 |  | ELÉTRICA | Sex 12/06/26 | Qui 18/06/26 | Análise Tecnored | Sex 19/06/26 | Sex 19/06/26 | Sprint 11 |
| 302 | 1.1.10.2.2 | Análise Tecnored |  | 1d | 2026-07-13 | 2026-07-13 | 301 |  |  | 2026-06-19 | 2026-06-19 | 1d | 1d | 0d |  |  | ELÉTRICA | Sex 19/06/26 | Sex 19/06/26 | Atendimento de comentários | Seg 22/06/26 | Ter 23/06/26 | Sprint 12 |
| 303 | 1.1.10.2.3 | Atendimento de comentários |  | 1d | 2026-07-14 | 2026-07-14 | 302 |  |  | 2026-06-22 | 2026-06-23 | 2d | 1d | 0d |  |  | ELÉTRICA | Seg 22/06/26 | Ter 23/06/26 | Aprovação | Qua 24/06/26 | Qua 24/06/26 | Sprint 12 |
| 304 | 1.1.10.2.4 | Aprovação |  | 1d | 2026-07-15 | 2026-07-15 | 303 |  |  | 2026-06-24 | 2026-06-24 | 1d | 1d |  |  |  | ELÉTRICA | Qua 24/06/26 | Qua 24/06/26 | MC-F0009-0306-MB-S-00001 | Sex 29/05/26 | Seg 08/06/26 | Sprint 12 |
| 305 | 1.1.10.3 | **RL-F0009-0306-MB-E-00001** |  | 23.75d | 2026-06-02 A | 2026-07-07 |  | 79% | 5.09d | 2026-06-02 | 2026-06-10 | 7d | 5.25d |  |  |  | ELÉTRICA | Qui 21/05/26 | Sex 29/05/26 | Emissão inicial | Sex 29/05/26 | Ter 02/06/26 | Sprint 6 |
| 306 | 1.1.10.3.1 | Emissão inicial |  | 3d | 2026-06-02 A | 2026-06-08 A | 316FS-1d | 100% |  | 2026-06-02 | 2026-06-04 | 3d |  |  |  |  | ELÉTRICA | Qui 21/05/26 | Seg 25/05/26 | Análise Tecnored | Qua 03/06/26 | Qua 03/06/26 | Sprint 6 |
| 307 | 1.1.10.3.2 | Análise Tecnored |  | 2d | 2026-06-09 A | 2026-06-10 A | 306 | 100% |  | 2026-06-05 | 2026-06-05 | 1d |  |  |  |  | ELÉTRICA | Ter 26/05/26 | Ter 26/05/26 | Atendimento de comentários | Qui 04/06/26 | Sex 05/06/26 | Sprint 7 |
| 308 | 1.1.10.3.3 | Atendimento de comentários |  | 1d | 2026-07-06 A | 2026-07-07 | 307 | 50% | 0.5d | 2026-06-08 | 2026-06-09 | 2d | 5.25d | 0d |  |  | ELÉTRICA | Qua 27/05/26 | Qui 28/05/26 | Aprovação | Seg 08/06/26 | Seg 08/06/26 | Sprint 11 |
| 309 | 1.1.10.3.4 | Aprovação |  | 1d | 2026-07-06 | 2026-07-07 | 308FF |  |  | 2026-06-10 | 2026-06-10 | 1d | 5.25d |  |  |  | ELÉTRICA | Sex 29/05/26 | Sex 29/05/26 | AG-F0009-0306-MB-S-00001 | Seg 15/06/26 | Qui 25/06/26 | Sprint 11 |

| ID | WBS | Task | Type | Duration | Start | Finish | Predecessors | Complete | Remaining | Baseline start | Baseline finish | Baseline duration | Total slack | Free slack | Constraint | Baseline cost | Disciplina | Início_LB_R0 | Término_LB_R0 | Text5 | ILB_2 | TLB_2 | Sprints |
| --- | --- | --- | --- | --- | --- | --- | --- | --- | --- | --- | --- | --- | --- | --- | --- | --- | --- | --- | --- | --- | --- | --- | --- |
| 310 | 1.1.10.4 | **LE-F0009-0306-MB-E-00001** | inactive | 5d | 2026-07-06 | 2026-07-14 |  |  |  | 2026-06-24 | 2026-07-02 | 7d | 2d |  |  |  | ELÉTRICA | Sex 12/06/26 | Seg 22/06/26 | Emissão inicial | Seg 15/06/26 | Sex 19/06/26 | Sprint 11 |
| 311 | 1.1.10.4.1 | Emissão inicial | inactive | 3d | 2026-07-06 | 2026-07-08 | 336, 341 |  |  | 2026-06-24 | 2026-06-26 | 3d | 2d | 0d | finish no earlier than 2026-06-29 |  | ELÉTRICA | Sex 12/06/26 | Ter 16/06/26 | Análise Tecnored | Seg 22/06/26 | Seg 22/06/26 | Sprint 11 |
| 312 | 1.1.10.4.2 | Análise Tecnored | inactive | 1d | 2026-07-13 | 2026-07-13 | 311 |  |  | 2026-06-29 | 2026-06-29 | 1d | 2d | 0d |  |  | ELÉTRICA | Qua 17/06/26 | Qua 17/06/26 | Atendimento de comentários | Ter 23/06/26 | Qua 24/06/26 | Sprint 12 |
| 313 | 1.1.10.4.3 | Atendimento de comentários | inactive | 1d | 2026-07-14 | 2026-07-14 | 312 |  |  | 2026-06-30 | 2026-07-01 | 2d | 2d | 0d |  |  | ELÉTRICA | Qui 18/06/26 | Sex 19/06/26 | Aprovação | Qui 25/06/26 | Qui 25/06/26 | Sprint 12 |
| 314 | 1.1.10.4.4 | Aprovação | inactive | 1d | 2026-07-14 | 2026-07-14 | 313FF |  |  | 2026-07-02 | 2026-07-02 | 1d | 2d |  |  |  | ELÉTRICA | Seg 22/06/26 | Seg 22/06/26 | AG-F0009-0306-MB-S-00002 | Seg 15/06/26 | Qui 25/06/26 | Sprint 12 |
| 315 | 1.1.10.5 | **LR-F0009-0306-MB-E-00001** |  | 5d | 2026-05-28 A | 2026-06-03 |  | 75% | 1.25d | 2026-05-28 | 2026-06-05 | 7d | 27d |  |  |  | ELÉTRICA | Seg 18/05/26 | Ter 26/05/26 | Emissão inicial | Seg 15/06/26 | Sex 19/06/26 | Sprint 5 |
| 316 | 1.1.10.5.1 | Emissão inicial |  | 3d | 2026-05-28 A | 2026-06-01 A | 78 | 100% |  | 2026-05-28 | 2026-06-01 | 3d |  |  |  |  | ELÉTRICA | Seg 18/05/26 | Qua 20/05/26 | Análise Tecnored | Seg 22/06/26 | Seg 22/06/26 | Sprint 5 |
| 317 | 1.1.10.5.2 | Análise Tecnored |  | 1d | 2026-06-02 A | 2026-06-02 A | 316 | 100% |  | 2026-06-02 | 2026-06-02 | 1d |  |  |  |  | ELÉTRICA | Qui 21/05/26 | Qui 21/05/26 | Atendimento de comentários | Ter 23/06/26 | Qua 24/06/26 | Sprint 6 |
| 318 | 1.1.10.5.3 | Atendimento de comentários |  | 1d | 2026-06-03 A | 2026-06-03 | 317 | 50% | 0.5d | 2026-06-03 | 2026-06-04 | 2d | 27d | 0d |  |  | ELÉTRICA | Sex 22/05/26 | Seg 25/05/26 | Aprovação | Qui 25/06/26 | Qui 25/06/26 | Sprint 6 |
| 319 | 1.1.10.5.4 | Aprovação |  | 1d | 2026-06-03 | 2026-06-03 | 318FF |  |  | 2026-06-05 | 2026-06-05 | 1d | 27d |  |  |  | ELÉTRICA | Ter 26/05/26 | Ter 26/05/26 | AG-F0009-0306-MB-S-00003 | Seg 15/06/26 | Qui 25/06/26 | Sprint 6 |
| 320 | 1.1.10.6 | **LM-F0009-0306-MB-E-00001** |  | 4d | 2026-07-07 A | 2026-07-14 |  | 40% | 2.4d | 2026-06-26 | 2026-07-02 | 5d | 2d |  |  |  | ELÉTRICA | Sex 26/06/26 | Qui 02/07/26 | Emissão inicial | Seg 15/06/26 | Sex 19/06/26 | Sprint 11 |
| 321 | 1.1.10.6.1 | Emissão inicial |  | 2d | 2026-07-07 A | 2026-07-08 A | 347 | 100% |  | 2026-06-26 | 2026-06-26 | 1d |  |  | start no earlier than 2026-07-07 |  | ELÉTRICA | Sex 26/06/26 | Sex 26/06/26 | Análise Tecnored | Seg 22/06/26 | Seg 22/06/26 | Sprint 11 |
| 322 | 1.1.10.6.2 | Análise Tecnored |  | 1d | 2026-07-13 | 2026-07-13 | 321 |  |  | 2026-06-29 | 2026-06-29 | 1d | 2d | 0d |  |  | ELÉTRICA | Seg 29/06/26 | Seg 29/06/26 | Atendimento de comentários | Ter 23/06/26 | Qua 24/06/26 | Sprint 12 |
| 323 | 1.1.10.6.3 | Atendimento de comentários |  | 1d | 2026-07-14 | 2026-07-14 | 322 |  |  | 2026-06-30 | 2026-07-01 | 2d | 2d | 0d |  |  | ELÉTRICA | Ter 30/06/26 | Qua 01/07/26 | Aprovação | Qui 25/06/26 | Qui 25/06/26 | Sprint 12 |
| 324 | 1.1.10.6.4 | Aprovação |  | 1d | 2026-07-14 | 2026-07-14 | 323FF |  |  | 2026-07-02 | 2026-07-02 | 1d | 2d |  |  |  | ELÉTRICA | Qui 02/07/26 | Qui 02/07/26 | AG-F0009-0306-MB-S-00004 | Seg 15/06/26 | Qui 25/06/26 | Sprint 12 |
| 325 | 1.1.10.7 | **PQ-F0009-0306-MB-E-00001** |  | 5d | 2026-07-06 A | 2026-07-14 |  | 50% | 2.5d | 2026-06-29 | 2026-07-07 | 7d | 2d |  |  |  | ELÉTRICA | Seg 29/06/26 | Ter 07/07/26 | Emissão inicial | Seg 15/06/26 | Sex 19/06/26 | Sprint 11 |
| 326 | 1.1.10.7.1 | Emissão inicial |  | 3d | 2026-07-06 A | 2026-07-08 A | 321FF | 100% |  | 2026-06-29 | 2026-07-01 | 3d |  |  |  |  | ELÉTRICA | Seg 29/06/26 | Qua 01/07/26 | Análise Tecnored | Seg 22/06/26 | Seg 22/06/26 | Sprint 11 |
| 327 | 1.1.10.7.2 | Análise Tecnored |  | 1d | 2026-07-13 | 2026-07-13 | 326 |  |  | 2026-07-02 | 2026-07-02 | 1d | 2d | 0d |  |  | ELÉTRICA | Qui 02/07/26 | Qui 02/07/26 | Atendimento de comentários | Ter 23/06/26 | Qua 24/06/26 | Sprint 12 |
| 328 | 1.1.10.7.3 | Atendimento de comentários |  | 1d | 2026-07-14 | 2026-07-14 | 327 |  |  | 2026-07-03 | 2026-07-06 | 2d | 2d | 0d |  |  | ELÉTRICA | Sex 03/07/26 | Seg 06/07/26 | Aprovação | Qui 25/06/26 | Qui 25/06/26 | Sprint 12 |
| 329 | 1.1.10.7.4 | Aprovação |  | 1d | 2026-07-14 | 2026-07-14 | 328FF |  |  | 2026-07-07 | 2026-07-07 | 1d | 2d |  |  |  | ELÉTRICA | Ter 07/07/26 | Ter 07/07/26 | AG-F0009-0306-MB-S-00005 | Seg 15/06/26 | Qui 25/06/26 | Sprint 12 |
| 330 | 1.1.10.8 | **MD-F0009-0306-MB-E-00001** | inactive | 6d | 2026-07-13 | 2026-07-20 |  |  |  |  |  |  | -2d | 0d |  | -0 |  |  |  |  |  |  | Sprint 12 |
| 331 | 1.1.10.8.1 | Emissão inicial | inactive | 2d | 2026-07-13 | 2026-07-14 | 321 |  |  |  |  |  | -2d | 0d |  | -0 |  |  |  |  |  |  | Sprint 12 |
| 332 | 1.1.10.8.2 | Análise Tecnored | inactive | 1d | 2026-07-15 | 2026-07-15 | 331 |  |  |  |  |  | -2d | 0d |  | -0 |  |  |  |  |  |  | Sprint 12 |
| 333 | 1.1.10.8.3 | Atendimento de comentários | inactive | 2d | 2026-07-16 | 2026-07-17 | 332 |  |  |  |  |  | -2d | 0d |  | -0 |  |  |  |  |  |  | Sprint 12 |
| 334 | 1.1.10.8.4 | Aprovação | inactive | 1d | 2026-07-20 | 2026-07-20 | 333 |  |  |  |  |  | -2d | 0d |  | -0 |  |  |  |  |  |  | Sprint 13 |

| ID | WBS | Task | Duration | Start | Finish | Predecessors | Complete | Remaining | Baseline start | Baseline finish | Baseline duration | Total slack | Free slack | Constraint | Disciplina | Início_LB_R0 | Término_LB_R0 | Text5 | ILB_2 | TLB_2 | Sprints |
| --- | --- | --- | --- | --- | --- | --- | --- | --- | --- | --- | --- | --- | --- | --- | --- | --- | --- | --- | --- | --- | --- |
| 335 | 1.1.10.9 | **MC-F0009-0306-MB-E-00001** | 5d | 2026-07-01 A | 2026-07-07 |  | 50% | 2.5d | 2026-06-17 | 2026-06-26 | 8d | 5d |  |  | ELÉTRICA | Sex 05/06/26 | Qua 17/06/26 | Emissão inicial | Seg 15/06/26 | Sex 19/06/26 | Sprint 10 |
| 336 | 1.1.10.9.1 | Emissão inicial | 3d | 2026-07-01 A | 2026-07-03 A |  | 100% |  | 2026-06-17 | 2026-06-22 | 4d |  |  | start no earlier than 2026-07-01 | ELÉTRICA | Sex 05/06/26 | Qui 11/06/26 | Análise Tecnored | Seg 22/06/26 | Seg 22/06/26 | Sprint 10 |
| 337 | 1.1.10.9.2 | Análise Tecnored | 1d | 2026-07-06 | 2026-07-06 | 336 |  |  | 2026-06-23 | 2026-06-23 | 1d | 5d | 0d |  | ELÉTRICA | Sex 12/06/26 | Sex 12/06/26 | Atendimento de comentários | Ter 23/06/26 | Qua 24/06/26 | Sprint 11 |
| 338 | 1.1.10.9.3 | Atendimento de comentários | 1d | 2026-07-07 | 2026-07-07 | 337 |  |  | 2026-06-24 | 2026-06-25 | 2d | 5d | 0d |  | ELÉTRICA | Seg 15/06/26 | Ter 16/06/26 | Aprovação | Qui 25/06/26 | Qui 25/06/26 | Sprint 11 |
| 339 | 1.1.10.9.4 | Aprovação | 1d | 2026-07-07 | 2026-07-07 | 338FF |  |  | 2026-06-26 | 2026-06-26 | 1d | 5d |  |  | ELÉTRICA | Qua 17/06/26 | Qua 17/06/26 | PL-F0009-0306-MB-S-00001 | Seg 15/06/26 | Qui 25/06/26 | Sprint 11 |
| 340 | 1.1.10.10 | **MC-F0009-0306-MB-E-00002** | 5d | 2026-07-01 A | 2026-07-07 |  | 50% | 2.5d | 2026-06-17 | 2026-06-29 | 9d | 5d |  |  | ELÉTRICA | Sex 05/06/26 | Qua 17/06/26 | Emissão inicial | Seg 15/06/26 | Sex 19/06/26 | Sprint 10 |
| 341 | 1.1.10.10.1 | Emissão inicial | 3d | 2026-07-01 A | 2026-07-03 A |  | 100% |  | 2026-06-17 | 2026-06-23 | 5d |  |  | start no earlier than 2026-07-01 | ELÉTRICA | Sex 05/06/26 | Qui 11/06/26 | Análise Tecnored | Seg 22/06/26 | Seg 22/06/26 | Sprint 10 |
| 342 | 1.1.10.10.2 | Análise Tecnored | 1d | 2026-07-06 | 2026-07-06 | 341 |  |  | 2026-06-24 | 2026-06-24 | 1d | 5d | 0d |  | ELÉTRICA | Sex 12/06/26 | Sex 12/06/26 | Atendimento de comentários | Ter 23/06/26 | Qua 24/06/26 | Sprint 11 |
| 343 | 1.1.10.10.3 | Atendimento de comentários | 1d | 2026-07-07 | 2026-07-07 | 342 |  |  | 2026-06-25 | 2026-06-26 | 2d | 5d | 0d |  | ELÉTRICA | Seg 15/06/26 | Ter 16/06/26 | Aprovação | Qui 25/06/26 | Qui 25/06/26 | Sprint 11 |
| 344 | 1.1.10.10.4 | Aprovação | 1d | 2026-07-07 | 2026-07-07 | 343FF |  |  | 2026-06-29 | 2026-06-29 | 1d | 5d |  |  | ELÉTRICA | Qua 17/06/26 | Qua 17/06/26 | Elétrica | Ter 05/05/26 | Ter 07/07/26 | Sprint 11 |
| 345 | 1.1.10.11 | **AG-F0009-0306-MB-E-00001** | 10d | 2026-06-29 A | 2026-07-14 |  | 73% | 2.73d | 2026-06-19 | 2026-06-30 | 8d | 2d |  |  | ELÉTRICA | Sex 19/06/26 | Ter 30/06/26 | ML-F0009-0306-MB-E-00001 | Sex 12/06/26 | Qua 24/06/26 | Sprint 10 |
| 346 | 1.1.10.11.1 | Emissão inicial | 8d | 2026-06-29 A | 2026-07-08 A |  | 100% |  | 2026-06-19 | 2026-06-24 | 4d |  |  | finish no earlier than 2026-07-08 | ELÉTRICA | Sex 19/06/26 | Qua 24/06/26 | Emissão inicial | Sex 12/06/26 | Qui 18/06/26 | Sprint 10 |
| 347 | 1.1.10.11.2 | Análise Tecnored | 1d | 2026-07-13 | 2026-07-13 | 346 |  |  | 2026-06-25 | 2026-06-25 | 1d | 2d | 0d |  | ELÉTRICA | Qui 25/06/26 | Qui 25/06/26 | Análise Tecnored | Sex 19/06/26 | Sex 19/06/26 | Sprint 12 |
| 348 | 1.1.10.11.3 | Atendimento de comentários | 1d | 2026-07-14 | 2026-07-14 | 347 |  |  | 2026-06-26 | 2026-06-29 | 2d | 2d | 0d |  | ELÉTRICA | Sex 26/06/26 | Seg 29/06/26 | Atendimento de comentários | Seg 22/06/26 | Ter 23/06/26 | Sprint 12 |
| 349 | 1.1.10.11.4 | Aprovação | 1d | 2026-07-14 | 2026-07-14 | 348FF |  |  | 2026-06-30 | 2026-06-30 | 1d | 2d |  |  | ELÉTRICA | Ter 30/06/26 | Ter 30/06/26 | Aprovação | Qua 24/06/26 | Qua 24/06/26 | Sprint 12 |
| 350 | 1.1.10.12 | **AG-F0009-0306-MB-E-00002** | 10d | 2026-06-29 A | 2026-07-14 |  | 73% | 2.73d | 2026-06-19 | 2026-06-30 | 8d | 2d |  |  | ELÉTRICA | Sex 19/06/26 | Ter 30/06/26 | PQ-F0009-0306-MB-E-00001 | Seg 29/06/26 | Ter 07/07/26 | Sprint 10 |
| 351 | 1.1.10.12.1 | Emissão inicial | 8d | 2026-06-29 A | 2026-07-08 A | 366FS-2d | 100% |  | 2026-06-19 | 2026-06-24 | 4d |  |  | finish no earlier than 2026-07-08 | ELÉTRICA | Sex 19/06/26 | Qua 24/06/26 | Emissão inicial | Seg 29/06/26 | Qua 01/07/26 | Sprint 10 |
| 352 | 1.1.10.12.2 | Análise Tecnored | 1d | 2026-07-13 | 2026-07-13 | 351 |  |  | 2026-06-25 | 2026-06-25 | 1d | 2d | 0d |  | ELÉTRICA | Qui 25/06/26 | Qui 25/06/26 | Análise Tecnored | Qui 02/07/26 | Qui 02/07/26 | Sprint 12 |
| 353 | 1.1.10.12.3 | Atendimento de comentários | 1d | 2026-07-14 | 2026-07-14 | 352 |  |  | 2026-06-26 | 2026-06-29 | 2d | 2d | 0d |  | ELÉTRICA | Sex 26/06/26 | Seg 29/06/26 | Atendimento de comentários | Sex 03/07/26 | Seg 06/07/26 | Sprint 12 |
| 354 | 1.1.10.12.4 | Aprovação | 1d | 2026-07-14 | 2026-07-14 | 353FF |  |  | 2026-06-30 | 2026-06-30 | 1d | 2d |  |  | ELÉTRICA | Ter 30/06/26 | Ter 30/06/26 | Aprovação | Ter 07/07/26 | Ter 07/07/26 | Sprint 12 |
| 355 | 1.1.10.13 | **AG-F0009-0306-MB-E-00003** | 6d | 2026-06-29 A | 2026-07-06 |  | 57% | 2.57d | 2026-06-19 | 2026-06-30 | 8d | 6d |  |  | ELÉTRICA | Sex 19/06/26 | Ter 30/06/26 | MC-F0009-0306-MB-E-00001 | Sex 05/06/26 | Qua 17/06/26 | Sprint 10 |
| 356 | 1.1.10.13.1 | Emissão inicial | 4d | 2026-06-29 A | 2026-07-02 A | 366FS-2d | 100% |  | 2026-06-19 | 2026-06-24 | 4d |  |  | start no earlier than 2026-06-19 | ELÉTRICA | Sex 19/06/26 | Qua 24/06/26 | Emissão inicial | Sex 05/06/26 | Qui 11/06/26 | Sprint 10 |
| 357 | 1.1.10.13.2 | Análise Tecnored | 1d | 2026-07-03 | 2026-07-03 | 356 |  |  | 2026-06-25 | 2026-06-25 | 1d | 6d | 0d |  | ELÉTRICA | Qui 25/06/26 | Qui 25/06/26 | Análise Tecnored | Sex 12/06/26 | Sex 12/06/26 | Sprint 10 |
| 358 | 1.1.10.13.3 | Atendimento de comentários | 1d | 2026-07-06 | 2026-07-06 | 357 |  |  | 2026-06-26 | 2026-06-29 | 2d | 6d | 0d |  | ELÉTRICA | Sex 26/06/26 | Seg 29/06/26 | Atendimento de comentários | Seg 15/06/26 | Ter 16/06/26 | Sprint 11 |
| 359 | 1.1.10.13.4 | Aprovação | 1d | 2026-07-06 | 2026-07-06 | 358FF |  |  | 2026-06-30 | 2026-06-30 | 1d | 6d |  |  | ELÉTRICA | Ter 30/06/26 | Ter 30/06/26 | Aprovação | Qua 17/06/26 | Qua 17/06/26 | Sprint 11 |

| ID | WBS | Task | Type | Duration | Start | Finish | Predecessors | Complete | Remaining | Baseline start | Baseline finish | Baseline duration | Total slack | Free slack | Constraint | Disciplina | Início_LB_R0 | Término_LB_R0 | Text5 | ILB_2 | TLB_2 | Sprints |
| --- | --- | --- | --- | --- | --- | --- | --- | --- | --- | --- | --- | --- | --- | --- | --- | --- | --- | --- | --- | --- | --- | --- |
| 360 | 1.1.10.14 | **AG-F0009-0306-MB-E-00004** |  | 6d | 2026-06-29 A | 2026-07-06 |  | 57% | 2.57d | 2026-06-19 | 2026-06-30 | 8d | 6d |  |  | ELÉTRICA | Sex 19/06/26 | Ter 30/06/26 | MC-F0009-0306-MB-E-00001 | Sex 05/06/26 | Qua 17/06/26 | Sprint 10 |
| 361 | 1.1.10.14.1 | Emissão inicial |  | 4d | 2026-06-29 A | 2026-07-02 A | 366FS-2d | 100% |  | 2026-06-19 | 2026-06-24 | 4d |  |  | start no earlier than 2026-06-19 | ELÉTRICA | Sex 19/06/26 | Qua 24/06/26 | Emissão inicial | Sex 05/06/26 | Qui 11/06/26 | Sprint 10 |
| 362 | 1.1.10.14.2 | Análise Tecnored |  | 1d | 2026-07-03 | 2026-07-03 | 361 |  |  | 2026-06-25 | 2026-06-25 | 1d | 6d | 0d |  | ELÉTRICA | Qui 25/06/26 | Qui 25/06/26 | Análise Tecnored | Sex 12/06/26 | Sex 12/06/26 | Sprint 10 |
| 363 | 1.1.10.14.3 | Atendimento de comentários |  | 1d | 2026-07-06 | 2026-07-06 | 362 |  |  | 2026-06-26 | 2026-06-29 | 2d | 6d | 0d |  | ELÉTRICA | Sex 26/06/26 | Seg 29/06/26 | Atendimento de comentários | Seg 15/06/26 | Ter 16/06/26 | Sprint 11 |
| 364 | 1.1.10.14.4 | Aprovação |  | 1d | 2026-07-06 | 2026-07-06 | 363FF |  |  | 2026-06-30 | 2026-06-30 | 1d | 6d |  |  | ELÉTRICA | Ter 30/06/26 | Ter 30/06/26 | Aprovação | Qua 17/06/26 | Qua 17/06/26 | Sprint 11 |
| 365 | 1.1.10.15 | **DU-F0009-0306-MB-E-00001** |  | 6d | 2026-06-23 A | 2026-06-30 |  | 58% | 2.5d | 2026-06-05 | 2026-06-15 | 7d | 10d |  |  | ELÉTRICA | Ter 26/05/26 | Qua 03/06/26 | RL-F0009-0306-MB-E-00001 | Qui 21/05/26 | Sex 29/05/26 | Sprint 9 |
| 366 | 1.1.10.15.1 | Emissão inicial |  | 3d | 2026-06-23 A | 2026-06-25 A | 306 | 100% |  | 2026-06-05 | 2026-06-09 | 3d |  |  | start no earlier than 2026-06-17 | ELÉTRICA | Ter 26/05/26 | Qui 28/05/26 | Emissão inicial | Qui 21/05/26 | Seg 25/05/26 | Sprint 9 |
| 367 | 1.1.10.15.2 | Análise Tecnored |  | 1d | 2026-06-26 A | 2026-06-26 | 366 | 50% | 0.5d | 2026-06-10 | 2026-06-10 | 1d | 10d | 0d |  | ELÉTRICA | Sex 29/05/26 | Sex 29/05/26 | Análise Tecnored | Ter 26/05/26 | Ter 26/05/26 | Sprint 9 |
| 368 | 1.1.10.15.3 | Atendimento de comentários |  | 1d | 2026-06-29 | 2026-06-29 | 367 |  |  | 2026-06-11 | 2026-06-12 | 2d | 10d | 0d |  | ELÉTRICA | Seg 01/06/26 | Ter 02/06/26 | Atendimento de comentários | Qua 27/05/26 | Qui 28/05/26 | Sprint 10 |
| 369 | 1.1.10.15.4 | Aprovação |  | 1d | 2026-06-30 | 2026-06-30 | 368 |  |  | 2026-06-15 | 2026-06-15 | 1d | 10d |  |  | ELÉTRICA | Qua 03/06/26 | Qua 03/06/26 | Aprovação | Sex 29/05/26 | Sex 29/05/26 | Sprint 10 |
| 370 | 1.1.10.16 | **DU-F0009-0306-MB-E-00002** | inactive | 11d | 2026-06-17 | 2026-07-01 |  |  |  | 2026-06-24 | 2026-07-01 | 6d | 9d |  |  | ELÉTRICA | Sex 12/06/26 | Qua 24/06/26 | LE-F0009-0306-MB-E-00001 | Sex 12/06/26 | Seg 22/06/26 | Sprint 8 |
| 371 | 1.1.10.16.1 | Emissão inicial | inactive | 3d | 2026-06-17 | 2026-06-19 | 306 |  |  | 2026-06-24 | 2026-06-25 | 2d | 14d | 5d | finish no earlier than 2026-06-19 | ELÉTRICA | Sex 12/06/26 | Qui 18/06/26 | Emissão inicial | Sex 12/06/26 | Ter 16/06/26 | Sprint 8 |
| 372 | 1.1.10.16.2 | Análise Tecnored | inactive | 1d | 2026-06-29 | 2026-06-29 | 371 |  |  | 2026-06-26 | 2026-06-26 | 1d | 9d | 0d | start no earlier than 2026-06-29 | ELÉTRICA | Sex 19/06/26 | Sex 19/06/26 | Análise Tecnored | Qua 17/06/26 | Qua 17/06/26 | Sprint 10 |
| 373 | 1.1.10.16.3 | Atendimento de comentários | inactive | 1d | 2026-06-30 | 2026-06-30 | 372 |  |  | 2026-06-29 | 2026-06-30 | 2d | 9d | 0d | start no earlier than 2026-06-30 | ELÉTRICA | Seg 22/06/26 | Ter 23/06/26 | Atendimento de comentários | Qui 18/06/26 | Sex 19/06/26 | Sprint 10 |
| 374 | 1.1.10.16.4 | Aprovação | inactive | 1d | 2026-07-01 | 2026-07-01 | 373 |  |  | 2026-07-01 | 2026-07-01 | 1d | 9d |  | start no earlier than 2026-07-01 | ELÉTRICA | Qua 24/06/26 | Qua 24/06/26 | Aprovação | Seg 22/06/26 | Seg 22/06/26 | Sprint 10 |
| 375 | 1.1.10.17 | **DU-F0009-0306-MB-E-00003** | inactive | 11d | 2026-06-17 | 2026-07-01 |  |  |  | 2026-06-24 | 2026-07-06 | 9d | 9d |  |  | ELÉTRICA | Sex 12/06/26 | Qua 24/06/26 | LR-F0009-0306-MB-E-00001 | Seg 18/05/26 | Ter 26/05/26 | Sprint 8 |
| 376 | 1.1.10.17.1 | Emissão inicial | inactive | 3d | 2026-06-17 | 2026-06-19 | 306 |  |  | 2026-06-24 | 2026-06-30 | 5d | 14d | 5d | finish no earlier than 2026-06-19 | ELÉTRICA | Sex 12/06/26 | Qui 18/06/26 | Emissão inicial | Seg 18/05/26 | Qua 20/05/26 | Sprint 8 |
| 377 | 1.1.10.17.2 | Análise Tecnored | inactive | 1d | 2026-06-29 | 2026-06-29 | 376 |  |  | 2026-07-01 | 2026-07-01 | 1d | 9d | 0d | start no earlier than 2026-06-29 | ELÉTRICA | Sex 19/06/26 | Sex 19/06/26 | Análise Tecnored | Qui 21/05/26 | Qui 21/05/26 | Sprint 10 |
| 378 | 1.1.10.17.3 | Atendimento de comentários | inactive | 1d | 2026-06-30 | 2026-06-30 | 377 |  |  | 2026-07-02 | 2026-07-03 | 2d | 9d | 0d | start no earlier than 2026-06-30 | ELÉTRICA | Seg 22/06/26 | Ter 23/06/26 | Atendimento de comentários | Sex 22/05/26 | Seg 25/05/26 | Sprint 10 |
| 379 | 1.1.10.17.4 | Aprovação | inactive | 1d | 2026-07-01 | 2026-07-01 | 378 |  |  | 2026-07-06 | 2026-07-06 | 1d | 9d |  | start no earlier than 2026-07-01 | ELÉTRICA | Qua 24/06/26 | Qua 24/06/26 | Aprovação | Ter 26/05/26 | Ter 26/05/26 | Sprint 10 |
| 380 | 1.1.10.18 | **DU-F0009-0306-MB-E-00004** | inactive | 11d | 2026-06-17 | 2026-07-01 |  |  |  | 2026-06-05 | 2026-06-29 | 17d | 9d |  |  | ELÉTRICA | Ter 26/05/26 | Qua 17/06/26 | LM-F0009-0306-MB-E-00001 | Sex 26/06/26 | Qui 02/07/26 | Sprint 8 |
| 381 | 1.1.10.18.1 | Emissão inicial | inactive | 3d | 2026-06-17 | 2026-06-19 | 306 |  |  | 2026-06-05 | 2026-06-11 | 5d | 14d | 5d | finish no earlier than 2026-06-19 | ELÉTRICA | Ter 26/05/26 | Seg 01/06/26 | Emissão inicial | Sex 26/06/26 | Sex 26/06/26 | Sprint 8 |
| 382 | 1.1.10.18.2 | Análise Tecnored | inactive | 1d | 2026-06-29 | 2026-06-29 | 381 |  |  | 2026-06-24 | 2026-06-24 | 1d | 9d | 0d | start no earlier than 2026-06-29 | ELÉTRICA | Sex 12/06/26 | Sex 12/06/26 | Análise Tecnored | Seg 29/06/26 | Seg 29/06/26 | Sprint 10 |
| 383 | 1.1.10.18.3 | Atendimento de comentários | inactive | 1d | 2026-06-30 | 2026-06-30 | 382 |  |  | 2026-06-25 | 2026-06-26 | 2d | 9d | 0d | start no earlier than 2026-06-30 | ELÉTRICA | Seg 15/06/26 | Ter 16/06/26 | Atendimento de comentários | Ter 30/06/26 | Qua 01/07/26 | Sprint 10 |
| 384 | 1.1.10.18.4 | Aprovação | inactive | 1d | 2026-07-01 | 2026-07-01 | 383 |  |  | 2026-06-29 | 2026-06-29 | 1d | 9d |  | start no earlier than 2026-07-01 | ELÉTRICA | Qua 17/06/26 | Qua 17/06/26 | Aprovação | Qui 02/07/26 | Qui 02/07/26 | Sprint 10 |

| ID | WBS | Task | Type | Duration | Start | Finish | Predecessors | Complete | Remaining | Baseline start | Baseline finish | Baseline duration | Total slack | Free slack | Constraint | Disciplina | Início_LB_R0 | Término_LB_R0 | Text5 | ILB_2 | TLB_2 | Sprints |
| --- | --- | --- | --- | --- | --- | --- | --- | --- | --- | --- | --- | --- | --- | --- | --- | --- | --- | --- | --- | --- | --- | --- |
| 385 | 1.1.10.19 | **FD-F0009-0306-MB-E-00001** |  | 6d | 2026-06-22 A | 2026-06-29 |  | 64% | 2.14d | 2026-06-10 | 2026-06-22 | 9d | 11d |  |  | ELÉTRICA | Sex 29/05/26 | Qua 10/06/26 | MC-F0009-0306-MB-E-00002 | Sex 05/06/26 | Qua 17/06/26 | Sprint 9 |
| 386 | 1.1.10.19.1 | Emissão inicial |  | 4d | 2026-06-22 A | 2026-06-25 A | 366FS-2d | 100% |  | 2026-06-10 | 2026-06-16 | 5d |  |  | start no earlier than 2026-06-22 | ELÉTRICA | Sex 29/05/26 | Qui 04/06/26 | Emissão inicial | Sex 05/06/26 | Qui 11/06/26 | Sprint 9 |
| 387 | 1.1.10.19.2 | Análise Tecnored |  | 1d | 2026-06-26 A | 2026-06-26 | 386 | 50% | 0.5d | 2026-06-17 | 2026-06-17 | 1d | 11d | 0d |  | ELÉTRICA | Sex 05/06/26 | Sex 05/06/26 | Análise Tecnored | Sex 12/06/26 | Sex 12/06/26 | Sprint 9 |
| 388 | 1.1.10.19.3 | Atendimento de comentários |  | 1d | 2026-06-29 | 2026-06-29 | 387 |  |  | 2026-06-18 | 2026-06-19 | 2d | 11d | 0d |  | ELÉTRICA | Seg 08/06/26 | Ter 09/06/26 | Atendimento de comentários | Seg 15/06/26 | Ter 16/06/26 | Sprint 10 |
| 389 | 1.1.10.19.4 | Aprovação |  | 1d | 2026-06-29 | 2026-06-29 | 388FF |  |  | 2026-06-22 | 2026-06-22 | 1d | 11d |  |  | ELÉTRICA | Qua 10/06/26 | Qua 10/06/26 | Aprovação | Qua 17/06/26 | Qua 17/06/26 | Sprint 10 |
| 390 | 1.1.10.20 | **FD-F0009-0306-MB-E-00002** | inactive | 6d | 2026-06-24 | 2026-07-01 |  |  |  | 2026-06-10 | 2026-06-22 | 9d | 9d |  |  | ELÉTRICA | Sex 29/05/26 | Qua 10/06/26 | AG-F0009-0306-MB-E-00001 | Sex 19/06/26 | Ter 30/06/26 | Sprint 9 |
| 391 | 1.1.10.20.1 | Emissão inicial | inactive | 4d | 2026-06-24 | 2026-06-29 | 366FS-2d |  |  | 2026-06-10 | 2026-06-16 | 5d | 9d | 0d | start no earlier than 2026-06-23 | ELÉTRICA | Sex 29/05/26 | Qui 04/06/26 | Emissão inicial | Sex 19/06/26 | Qua 24/06/26 | Sprint 9 |
| 392 | 1.1.10.20.2 | Análise Tecnored | inactive | 1d | 2026-06-30 | 2026-06-30 | 391 |  |  | 2026-06-17 | 2026-06-17 | 1d | 9d | 0d |  | ELÉTRICA | Sex 05/06/26 | Sex 05/06/26 | Análise Tecnored | Qui 25/06/26 | Qui 25/06/26 | Sprint 10 |
| 393 | 1.1.10.20.3 | Atendimento de comentários | inactive | 1d | 2026-07-01 | 2026-07-01 | 392 |  |  | 2026-06-18 | 2026-06-19 | 2d | 9d | 0d |  | ELÉTRICA | Seg 08/06/26 | Ter 09/06/26 | Atendimento de comentários | Sex 26/06/26 | Seg 29/06/26 | Sprint 10 |
| 394 | 1.1.10.20.4 | Aprovação | inactive | 1d | 2026-07-01 | 2026-07-01 | 393FF |  |  | 2026-06-22 | 2026-06-22 | 1d | 9d |  |  | ELÉTRICA | Qua 10/06/26 | Qua 10/06/26 | Aprovação | Ter 30/06/26 | Ter 30/06/26 | Sprint 10 |
| 395 | 1.1.10.21 | **FD-F0009-0306-MB-E-00003** | inactive | 6d | 2026-06-24 | 2026-07-01 |  |  |  | 2026-06-10 | 2026-06-22 | 9d | 9d |  |  | ELÉTRICA | Sex 29/05/26 | Qua 10/06/26 | DU-F0009-0306-MB-E-00001 | Ter 26/05/26 | Qua 03/06/26 | Sprint 9 |
| 396 | 1.1.10.21.1 | Emissão inicial | inactive | 4d | 2026-06-24 | 2026-06-29 | 366FS-2d |  |  | 2026-06-10 | 2026-06-16 | 5d | 9d | 0d | start no earlier than 2026-06-23 | ELÉTRICA | Sex 29/05/26 | Qui 04/06/26 | Emissão inicial | Ter 26/05/26 | Qui 28/05/26 | Sprint 9 |
| 397 | 1.1.10.21.2 | Análise Tecnored | inactive | 1d | 2026-06-30 | 2026-06-30 | 396 |  |  | 2026-06-17 | 2026-06-17 | 1d | 9d | 0d | start no earlier than 2026-06-29 | ELÉTRICA | Sex 05/06/26 | Sex 05/06/26 | Análise Tecnored | Sex 29/05/26 | Sex 29/05/26 | Sprint 10 |
| 398 | 1.1.10.21.3 | Atendimento de comentários | inactive | 1d | 2026-07-01 | 2026-07-01 | 397 |  |  | 2026-06-18 | 2026-06-19 | 2d | 9d | 0d | start no earlier than 2026-06-30 | ELÉTRICA | Seg 08/06/26 | Ter 09/06/26 | Atendimento de comentários | Seg 01/06/26 | Ter 02/06/26 | Sprint 10 |
| 399 | 1.1.10.21.4 | Aprovação | inactive | 1d | 2026-07-01 | 2026-07-01 | 398FF |  |  | 2026-06-22 | 2026-06-22 | 1d | 9d |  | start no earlier than 2026-06-30 | ELÉTRICA | Qua 10/06/26 | Qua 10/06/26 | Aprovação | Qua 03/06/26 | Qua 03/06/26 | Sprint 10 |
| 400 | 1.1.10.22 | **FD-F0009-0306-MB-E-00004** | inactive | 7d | 2026-06-24 | 2026-07-02 |  |  |  | 2026-06-10 | 2026-06-22 | 9d | 8d |  |  | ELÉTRICA | Sex 29/05/26 | Qua 10/06/26 | DU-F0009-0306-MB-E-00002 | Sex 12/06/26 | Qua 24/06/26 | Sprint 9 |
| 401 | 1.1.10.22.1 | Emissão inicial | inactive | 4d | 2026-06-24 | 2026-06-29 | 366FS-2d |  |  | 2026-06-10 | 2026-06-16 | 5d | 8d | 0d | start no earlier than 2026-06-23 | ELÉTRICA | Sex 29/05/26 | Qui 04/06/26 | Emissão inicial | Sex 12/06/26 | Qui 18/06/26 | Sprint 9 |
| 402 | 1.1.10.22.2 | Análise Tecnored | inactive | 1d | 2026-06-30 | 2026-06-30 | 401 |  |  | 2026-06-17 | 2026-06-17 | 1d | 8d | 0d | start no earlier than 2026-06-29 | ELÉTRICA | Sex 05/06/26 | Sex 05/06/26 | Análise Tecnored | Sex 19/06/26 | Sex 19/06/26 | Sprint 10 |
| 403 | 1.1.10.22.3 | Atendimento de comentários | inactive | 1d | 2026-07-01 | 2026-07-01 | 402 |  |  | 2026-06-18 | 2026-06-19 | 2d | 8d | 0d | start no earlier than 2026-06-30 | ELÉTRICA | Seg 08/06/26 | Ter 09/06/26 | Atendimento de comentários | Seg 22/06/26 | Ter 23/06/26 | Sprint 10 |
| 404 | 1.1.10.22.4 | Aprovação | inactive | 1d | 2026-07-02 | 2026-07-02 | 403 |  |  | 2026-06-22 | 2026-06-22 | 1d | 8d |  |  | ELÉTRICA | Qua 10/06/26 | Qua 10/06/26 | Aprovação | Qua 24/06/26 | Qua 24/06/26 | Sprint 10 |
| 405 | 1.1.10.23 | **FD-F0009-0306-MB-E-00005** | inactive | 7d | 2026-06-24 | 2026-07-02 |  |  |  | 2026-06-10 | 2026-06-22 | 9d | 8d |  |  | ELÉTRICA | Sex 29/05/26 | Qua 10/06/26 | DU-F0009-0306-MB-E-00003 | Sex 12/06/26 | Qua 24/06/26 | Sprint 9 |
| 406 | 1.1.10.23.1 | Emissão inicial | inactive | 4d | 2026-06-24 | 2026-06-29 | 366FS-2d |  |  | 2026-06-10 | 2026-06-16 | 5d | 8d | 0d | finish no earlier than 2026-06-25 | ELÉTRICA | Sex 29/05/26 | Qui 04/06/26 | Emissão inicial | Sex 12/06/26 | Qui 18/06/26 | Sprint 9 |
| 407 | 1.1.10.23.2 | Análise Tecnored | inactive | 1d | 2026-06-30 | 2026-06-30 | 406 |  |  | 2026-06-17 | 2026-06-17 | 1d | 8d | 0d | start no earlier than 2026-06-29 | ELÉTRICA | Sex 05/06/26 | Sex 05/06/26 | Análise Tecnored | Sex 19/06/26 | Sex 19/06/26 | Sprint 10 |
| 408 | 1.1.10.23.3 | Atendimento de comentários | inactive | 1d | 2026-07-01 | 2026-07-01 | 407 |  |  | 2026-06-18 | 2026-06-19 | 2d | 8d | 0d | start no earlier than 2026-06-30 | ELÉTRICA | Seg 08/06/26 | Ter 09/06/26 | Atendimento de comentários | Seg 22/06/26 | Ter 23/06/26 | Sprint 10 |
| 409 | 1.1.10.23.4 | Aprovação | inactive | 1d | 2026-07-02 | 2026-07-02 | 408 |  |  | 2026-06-22 | 2026-06-22 | 1d | 8d |  |  | ELÉTRICA | Qua 10/06/26 | Qua 10/06/26 | Aprovação | Qua 24/06/26 | Qua 24/06/26 | Sprint 10 |

| ID | WBS | Task | Type | Duration | Start | Finish | Predecessors | Complete | Remaining | Baseline start | Baseline finish | Baseline duration | Total slack | Free slack | Constraint | Baseline cost | Disciplina | Início_LB_R0 | Término_LB_R0 | Text5 | ILB_2 | TLB_2 | Sprints |
| --- | --- | --- | --- | --- | --- | --- | --- | --- | --- | --- | --- | --- | --- | --- | --- | --- | --- | --- | --- | --- | --- | --- | --- |
| 410 | 1.1.11 | **Automação e instrumentação** |  | 31d | 2026-05-29 A | 2026-07-16 |  | 73% | 8.25d | 2026-06-02 | 2026-07-08 | 27d | 0d |  |  |  | AUTOMAÇÃO E INSTRUMENTAÇÃO | Ter 05/05/26 | Ter 07/07/26 | DU-F0009-0306-MB-E-00004 | Ter 26/05/26 | Qua 17/06/26 | Sprint 5 |
| 411 | 1.1.11.1 | **CP-F0009-0306-MB-J-00001** | inactive | 28d | 2026-05-05 | 2026-06-15 |  |  |  |  |  |  | 21d |  |  | -0 |  |  |  |  |  |  | Sprint 2 |
| 412 | 1.1.11.1.1 | Emissão inicial | inactive | 7d | 2026-05-05 | 2026-05-13 | 20 |  |  |  |  |  | 38d | 17d |  | -0 |  |  |  |  |  |  | Sprint 2 |
| 413 | 1.1.11.1.2 | Análise Tecnored | inactive | 1d | 2026-06-10 | 2026-06-10 | 412, 8 |  |  |  |  |  | 21d | 0d |  | -0 |  |  |  |  |  |  | Sprint 7 |
| 414 | 1.1.11.1.3 | Atendimento de comentários | inactive | 2d | 2026-06-11 | 2026-06-12 | 413 |  |  |  |  |  | 21d | 0d |  | -0 |  |  |  |  |  |  | Sprint 7 |
| 415 | 1.1.11.1.4 | Aprovação | inactive | 1d | 2026-06-15 | 2026-06-15 | 414 |  |  |  |  |  | 21d |  |  | -0 |  |  |  |  |  |  | Sprint 8 |
| 416 | 1.1.11.2 | **LI-F0009-0306-MB-J-00001** |  | 13d | 2026-06-16 A | 2026-07-02 |  | 88% | 1.62d | 2026-06-05 | 2026-06-15 | 7d | 8d |  |  |  | AUTOMAÇÃO E INSTRUMENTAÇÃO | Qua 20/05/26 | Qui 28/05/26 | Emissão inicial | Ter 26/05/26 | Seg 01/06/26 | Sprint 8 |
| 417 | 1.1.11.2.1 | Emissão inicial |  | 4d | 2026-06-16 A | 2026-06-19 A | 452 | 100% |  | 2026-06-05 | 2026-06-09 | 3d |  |  | finish no earlier than 2026-06-19 |  | AUTOMAÇÃO E INSTRUMENTAÇÃO | Qua 20/05/26 | Sex 22/05/26 | Análise Tecnored | Sex 12/06/26 | Sex 12/06/26 | Sprint 8 |
| 418 | 1.1.11.2.2 | Análise Tecnored |  | 6d | 2026-06-24 A | 2026-07-01 A | 417 | 100% |  | 2026-06-10 | 2026-06-10 | 1d |  |  | start no earlier than 2026-06-24 |  | AUTOMAÇÃO E INSTRUMENTAÇÃO | Seg 25/05/26 | Seg 25/05/26 | Atendimento de comentários | Seg 15/06/26 | Ter 16/06/26 | Sprint 9 |
| 419 | 1.1.11.2.3 | Atendimento de comentários |  | 1d | 2026-07-01 A | 2026-07-01 | 418FF | 50% | 0.5d | 2026-06-11 | 2026-06-12 | 2d | 8d | 0d |  |  | AUTOMAÇÃO E INSTRUMENTAÇÃO | Ter 26/05/26 | Qua 27/05/26 | Aprovação | Qua 17/06/26 | Qua 17/06/26 | Sprint 10 |
| 420 | 1.1.11.2.4 | Aprovação |  | 1d | 2026-07-02 | 2026-07-02 | 419 |  |  | 2026-06-15 | 2026-06-15 | 1d | 8d |  | finish no earlier than 2026-06-23 |  | AUTOMAÇÃO E INSTRUMENTAÇÃO | Qui 28/05/26 | Qui 28/05/26 | AG-F0009-0306-MB-E-00002 | Sex 19/06/26 | Ter 30/06/26 | Sprint 10 |
| 421 | 1.1.11.3 | **LE-F0009-0306-MB-J-00001** |  | 8d | 2026-06-15 A | 2026-06-24 |  | 50% | 4d | 2026-06-26 | 2026-07-03 | 6d | 14d |  |  |  | AUTOMAÇÃO E INSTRUMENTAÇÃO | Sex 19/06/26 | Seg 29/06/26 | Emissão inicial | Sex 19/06/26 | Qua 24/06/26 | Sprint 8 |
| 422 | 1.1.11.3.1 | Emissão inicial |  | 4d | 2026-06-15 A | 2026-06-18 A |  | 100% |  | 2026-06-26 | 2026-06-29 | 2d |  |  | finish no earlier than 2026-06-18 |  | AUTOMAÇÃO E INSTRUMENTAÇÃO | Sex 19/06/26 | Ter 23/06/26 | Análise Tecnored | Qui 25/06/26 | Qui 25/06/26 | Sprint 8 |
| 423 | 1.1.11.3.2 | Análise Tecnored |  | 1d | 2026-06-19 | 2026-06-19 | 422 |  |  | 2026-06-30 | 2026-06-30 | 1d | 14d | 0d |  |  | AUTOMAÇÃO E INSTRUMENTAÇÃO | Qua 24/06/26 | Qua 24/06/26 | Atendimento de comentários | Sex 26/06/26 | Seg 29/06/26 | Sprint 8 |
| 424 | 1.1.11.3.3 | Atendimento de comentários |  | 2d | 2026-06-22 | 2026-06-23 | 423 |  |  | 2026-07-01 | 2026-07-02 | 2d | 14d | 0d |  |  | AUTOMAÇÃO E INSTRUMENTAÇÃO | Qui 25/06/26 | Sex 26/06/26 | Aprovação | Ter 30/06/26 | Ter 30/06/26 | Sprint 9 |
| 425 | 1.1.11.3.4 | Aprovação |  | 1d | 2026-06-24 | 2026-06-24 | 424 |  |  | 2026-07-03 | 2026-07-03 | 1d | 14d |  |  |  | AUTOMAÇÃO E INSTRUMENTAÇÃO | Seg 29/06/26 | Seg 29/06/26 | AG-F0009-0306-MB-E-00003 | Sex 19/06/26 | Ter 30/06/26 | Sprint 9 |
| 426 | 1.1.11.4 | **LL-F0009-0306-MB-J-00001** |  | 8d | 2026-06-26 A | 2026-07-07 |  | 50% | 4d | 2026-06-22 | 2026-06-29 | 6d | 5d |  |  |  | AUTOMAÇÃO E INSTRUMENTAÇÃO | Qui 11/06/26 | Sex 19/06/26 | Emissão inicial | Sex 19/06/26 | Qua 24/06/26 | Sprint 9 |
| 427 | 1.1.11.4.1 | Emissão inicial |  | 4d | 2026-06-26 A | 2026-07-01 A | 482FS-5d | 100% |  | 2026-06-26 | 2026-07-01 | 2d |  |  |  |  | AUTOMAÇÃO E INSTRUMENTAÇÃO | Sex 26/06/26 | Qua 01/07/26 | Análise Tecnored | Qui 25/06/26 | Qui 25/06/26 | Sprint 9 |
| 428 | 1.1.11.4.2 | Análise Tecnored |  | 1d | 2026-07-02 | 2026-07-02 | 427 |  |  | 2026-07-02 | 2026-07-02 | 1d | 5d | 0d |  |  | AUTOMAÇÃO E INSTRUMENTAÇÃO | Qui 02/07/26 | Qui 02/07/26 | Atendimento de comentários | Sex 26/06/26 | Seg 29/06/26 | Sprint 10 |
| 429 | 1.1.11.4.3 | Atendimento de comentários |  | 2d | 2026-07-03 | 2026-07-06 | 428 |  |  | 2026-07-03 | 2026-07-06 | 2d | 5d | 0d |  |  | AUTOMAÇÃO E INSTRUMENTAÇÃO | Sex 03/07/26 | Seg 06/07/26 | Aprovação | Ter 30/06/26 | Ter 30/06/26 | Sprint 10 |
| 430 | 1.1.11.4.4 | Aprovação |  | 1d | 2026-07-07 | 2026-07-07 | 429 |  |  | 2026-07-07 | 2026-07-07 | 1d | 5d |  |  |  | AUTOMAÇÃO E INSTRUMENTAÇÃO | Ter 07/07/26 | Ter 07/07/26 | FD-F0009-0306-MB-E-00001 | Sex 29/05/26 | Qua 10/06/26 | Sprint 11 |
| 431 | 1.1.11.5 | **LZ-F0009-0306-MB-J-00001** | inactive | 8d | 2026-06-30 | 2026-07-13 |  |  |  | 2026-06-22 | 2026-06-29 | 6d | 3d |  |  |  | AUTOMAÇÃO E INSTRUMENTAÇÃO | Qui 11/06/26 | Sex 19/06/26 | Emissão inicial | Sex 19/06/26 | Qua 24/06/26 | Sprint 10 |
| 432 | 1.1.11.5.1 | Emissão inicial | inactive | 4d | 2026-06-30 | 2026-07-03 | 482FS-5d |  |  | 2026-06-22 | 2026-06-23 | 2d | 3d | 0d |  |  | AUTOMAÇÃO E INSTRUMENTAÇÃO | Qui 11/06/26 | Seg 15/06/26 | Análise Tecnored | Qui 25/06/26 | Qui 25/06/26 | Sprint 10 |
| 433 | 1.1.11.5.2 | Análise Tecnored | inactive | 1d | 2026-07-06 | 2026-07-06 | 432 |  |  | 2026-06-24 | 2026-06-24 | 1d | 3d | 0d |  |  | AUTOMAÇÃO E INSTRUMENTAÇÃO | Ter 16/06/26 | Ter 16/06/26 | Atendimento de comentários | Sex 26/06/26 | Seg 29/06/26 | Sprint 11 |
| 434 | 1.1.11.5.3 | Atendimento de comentários | inactive | 2d | 2026-07-07 | 2026-07-08 | 433 |  |  | 2026-06-25 | 2026-06-26 | 2d | 3d | 0d |  |  | AUTOMAÇÃO E INSTRUMENTAÇÃO | Qua 17/06/26 | Qui 18/06/26 | Aprovação | Ter 30/06/26 | Ter 30/06/26 | Sprint 11 |
| 435 | 1.1.11.5.4 | Aprovação | inactive | 1d | 2026-07-13 | 2026-07-13 | 434 |  |  | 2026-06-29 | 2026-06-29 | 1d | 3d |  |  |  | AUTOMAÇÃO E INSTRUMENTAÇÃO | Sex 19/06/26 | Sex 19/06/26 | FD-F0009-0306-MB-E-00001 | Sex 29/05/26 | Qua 10/06/26 | Sprint 12 |

| ID | WBS | Task | Type | Duration | Start | Finish | Predecessors | Complete | Remaining | Baseline start | Baseline finish | Baseline duration | Total slack | Free slack | Constraint | Disciplina | Início_LB_R0 | Término_LB_R0 | Text5 | ILB_2 | TLB_2 | Sprints |
| --- | --- | --- | --- | --- | --- | --- | --- | --- | --- | --- | --- | --- | --- | --- | --- | --- | --- | --- | --- | --- | --- | --- |
| 436 | 1.1.11.6 | **LE-F0009-0306-MB-J-00002** | inactive | 7d | 2026-06-26 | 2026-07-06 |  |  |  | 2026-06-22 | 2026-06-30 | 7d | 6d |  |  | AUTOMAÇÃO E INSTRUMENTAÇÃO | Sex 19/06/26 | Seg 29/06/26 | Emissão inicial | Sex 29/05/26 | Qui 04/06/26 | Sprint 9 |
| 437 | 1.1.11.6.1 | Emissão inicial | inactive | 4d | 2026-06-26 | 2026-07-01 | 427SS |  |  | 2026-06-22 | 2026-06-24 | 3d | 6d | 0d |  | AUTOMAÇÃO E INSTRUMENTAÇÃO | Sex 19/06/26 | Ter 23/06/26 | Análise Tecnored | Sex 05/06/26 | Sex 05/06/26 | Sprint 9 |
| 438 | 1.1.11.6.2 | Análise Tecnored | inactive | 1d | 2026-07-02 | 2026-07-02 | 437 |  |  | 2026-06-25 | 2026-06-25 | 1d | 6d | 0d |  | AUTOMAÇÃO E INSTRUMENTAÇÃO | Qua 24/06/26 | Qua 24/06/26 | Atendimento de comentários | Seg 08/06/26 | Ter 09/06/26 | Sprint 10 |
| 439 | 1.1.11.6.3 | Atendimento de comentários | inactive | 1d | 2026-07-03 | 2026-07-03 | 438 |  |  | 2026-06-26 | 2026-06-29 | 2d | 6d | 0d |  | AUTOMAÇÃO E INSTRUMENTAÇÃO | Qui 25/06/26 | Sex 26/06/26 | Aprovação | Qua 10/06/26 | Qua 10/06/26 | Sprint 10 |
| 440 | 1.1.11.6.4 | Aprovação | inactive | 1d | 2026-07-06 | 2026-07-06 | 439 |  |  | 2026-06-30 | 2026-06-30 | 1d | 6d |  |  | AUTOMAÇÃO E INSTRUMENTAÇÃO | Seg 29/06/26 | Seg 29/06/26 | FD-F0009-0306-MB-E-00002 | Sex 29/05/26 | Qua 10/06/26 | Sprint 11 |
| 441 | 1.1.11.7 | **PQ-F0009-0306-MB-J-00001** |  | 11d | 2026-06-26 A | 2026-07-14 |  | 73% | 3d | 2026-06-23 | 2026-06-29 | 5d | 2d |  |  | AUTOMAÇÃO E INSTRUMENTAÇÃO | Qua 01/07/26 | Ter 07/07/26 | Emissão inicial | Sex 29/05/26 | Qui 04/06/26 | Sprint 9 |
| 442 | 1.1.11.7.1 | Emissão inicial |  | 8d | 2026-06-26 A | 2026-07-07 A | 497FS-5d | 100% |  | 2026-06-23 | 2026-06-23 | 1d |  |  |  | AUTOMAÇÃO E INSTRUMENTAÇÃO | Qua 01/07/26 | Qua 01/07/26 | Análise Tecnored | Sex 05/06/26 | Sex 05/06/26 | Sprint 9 |
| 443 | 1.1.11.7.2 | Análise Tecnored |  | 1d | 2026-07-08 | 2026-07-08 | 442 |  |  | 2026-06-24 | 2026-06-24 | 1d | 2d | 0d |  | AUTOMAÇÃO E INSTRUMENTAÇÃO | Qui 02/07/26 | Qui 02/07/26 | Atendimento de comentários | Seg 08/06/26 | Ter 09/06/26 | Sprint 11 |
| 444 | 1.1.11.7.3 | Atendimento de comentários |  | 1d | 2026-07-13 | 2026-07-13 | 443 |  |  | 2026-06-25 | 2026-06-26 | 2d | 2d | 0d |  | AUTOMAÇÃO E INSTRUMENTAÇÃO | Sex 03/07/26 | Seg 06/07/26 | Aprovação | Qua 10/06/26 | Qua 10/06/26 | Sprint 12 |
| 445 | 1.1.11.7.4 | Aprovação |  | 1d | 2026-07-14 | 2026-07-14 | 444 |  |  | 2026-06-29 | 2026-06-29 | 1d | 2d |  |  | AUTOMAÇÃO E INSTRUMENTAÇÃO | Ter 07/07/26 | Ter 07/07/26 | FD-F0009-0306-MB-E-00003 | Sex 29/05/26 | Qua 10/06/26 | Sprint 12 |
| 446 | 1.1.11.8 | **FG-F0009-0306-MB-J-00001** |  | 12d | 2026-06-16 A | 2026-07-01 |  | 46% | 6.46d | 2026-06-02 | 2026-06-12 | 9d | 9d |  |  | AUTOMAÇÃO E INSTRUMENTAÇÃO | Sex 15/05/26 | Qua 27/05/26 | Emissão inicial | Sex 29/05/26 | Qui 04/06/26 | Sprint 8 |
| 447 | 1.1.11.8.1 | Emissão inicial |  | 6d | 2026-06-16 A | 2026-06-23 A | 62FS-4d | 100% |  | 2026-06-02 | 2026-06-08 | 5d |  |  | finish no earlier than 2026-06-12 | AUTOMAÇÃO E INSTRUMENTAÇÃO | Sex 15/05/26 | Qui 21/05/26 | Análise Tecnored | Sex 05/06/26 | Sex 05/06/26 | Sprint 8 |
| 448 | 1.1.11.8.2 | Análise Tecnored |  | 4d | 2026-06-24 | 2026-06-29 | 447 |  |  | 2026-06-09 | 2026-06-09 | 1d | 9d | 0d |  | AUTOMAÇÃO E INSTRUMENTAÇÃO | Sex 22/05/26 | Sex 22/05/26 | Atendimento de comentários | Seg 08/06/26 | Ter 09/06/26 | Sprint 9 |
| 449 | 1.1.11.8.3 | Atendimento de comentários |  | 2d | 2026-06-30 | 2026-07-01 | 448 |  |  | 2026-06-10 | 2026-06-11 | 2d | 9d | 0d |  | AUTOMAÇÃO E INSTRUMENTAÇÃO | Seg 25/05/26 | Ter 26/05/26 | Aprovação | Qua 10/06/26 | Qua 10/06/26 | Sprint 10 |
| 450 | 1.1.11.8.4 | Aprovação |  | 1d | 2026-07-01 | 2026-07-01 | 449FF |  |  | 2026-06-12 | 2026-06-12 | 1d | 9d |  |  | AUTOMAÇÃO E INSTRUMENTAÇÃO | Qua 27/05/26 | Qua 27/05/26 | FD-F0009-0306-MB-E-00004 | Sex 29/05/26 | Qua 10/06/26 | Sprint 10 |
| 451 | 1.1.11.9 | **FG-F0009-0306-MB-J-00002** |  | 10d | 2026-05-29 A | 2026-06-15 |  | 60% | 4d | 2026-06-02 | 2026-06-10 | 7d | 21d |  |  | AUTOMAÇÃO E INSTRUMENTAÇÃO | Sex 15/05/26 | Seg 25/05/26 | Emissão inicial | Sex 29/05/26 | Qui 04/06/26 | Sprint 5 |
| 452 | 1.1.11.9.1 | Emissão inicial |  | 6d | 2026-05-29 A | 2026-06-09 A | 62FS-4d | 100% |  | 2026-06-02 | 2026-06-04 | 3d |  |  |  | AUTOMAÇÃO E INSTRUMENTAÇÃO | Sex 15/05/26 | Ter 19/05/26 | Análise Tecnored | Sex 05/06/26 | Sex 05/06/26 | Sprint 5 |
| 453 | 1.1.11.9.2 | Análise Tecnored |  | 1d | 2026-06-10 | 2026-06-10 | 452 |  |  | 2026-06-05 | 2026-06-05 | 1d | 21d | 0d |  | AUTOMAÇÃO E INSTRUMENTAÇÃO | Qua 20/05/26 | Qua 20/05/26 | Atendimento de comentários | Seg 08/06/26 | Ter 09/06/26 | Sprint 7 |
| 454 | 1.1.11.9.3 | Atendimento de comentários |  | 2d | 2026-06-11 | 2026-06-12 | 453 |  |  | 2026-06-08 | 2026-06-09 | 2d | 21d | 0d |  | AUTOMAÇÃO E INSTRUMENTAÇÃO | Qui 21/05/26 | Sex 22/05/26 | Aprovação | Qua 10/06/26 | Qua 10/06/26 | Sprint 7 |
| 455 | 1.1.11.9.4 | Aprovação |  | 1d | 2026-06-15 | 2026-06-15 | 454 |  |  | 2026-06-10 | 2026-06-10 | 1d | 21d |  |  | AUTOMAÇÃO E INSTRUMENTAÇÃO | Seg 25/05/26 | Seg 25/05/26 | FD-F0009-0306-MB-E-00005 | Sex 29/05/26 | Qua 10/06/26 | Sprint 8 |
| 456 | 1.1.11.10 | **FG-F0009-0306-MB-J-00003** |  | 10d | 2026-06-03 A | 2026-06-18 |  | 60% | 4d | 2026-06-02 | 2026-06-12 | 9d | 18d |  |  | AUTOMAÇÃO E INSTRUMENTAÇÃO | Sex 15/05/26 | Qua 27/05/26 | Emissão inicial | Sex 29/05/26 | Qui 04/06/26 | Sprint 6 |
| 457 | 1.1.11.10.1 | Emissão inicial |  | 6d | 2026-06-03 A | 2026-06-12 A | 62FS-4d | 100% |  | 2026-06-02 | 2026-06-08 | 5d |  |  | finish no earlier than 2026-06-12 | AUTOMAÇÃO E INSTRUMENTAÇÃO | Sex 15/05/26 | Qui 21/05/26 | Análise Tecnored | Sex 05/06/26 | Sex 05/06/26 | Sprint 6 |
| 458 | 1.1.11.10.2 | Análise Tecnored |  | 1d | 2026-06-15 | 2026-06-15 | 457 |  |  | 2026-06-09 | 2026-06-09 | 1d | 18d | 0d |  | AUTOMAÇÃO E INSTRUMENTAÇÃO | Sex 22/05/26 | Sex 22/05/26 | Atendimento de comentários | Seg 08/06/26 | Ter 09/06/26 | Sprint 8 |
| 459 | 1.1.11.10.3 | Atendimento de comentários |  | 2d | 2026-06-16 | 2026-06-17 | 458 |  |  | 2026-06-10 | 2026-06-11 | 2d | 18d | 0d |  | AUTOMAÇÃO E INSTRUMENTAÇÃO | Seg 25/05/26 | Ter 26/05/26 | Aprovação | Qua 10/06/26 | Qua 10/06/26 | Sprint 8 |
| 460 | 1.1.11.10.4 | Aprovação |  | 1d | 2026-06-18 | 2026-06-18 | 459 |  |  | 2026-06-12 | 2026-06-12 | 1d | 18d |  |  | AUTOMAÇÃO E INSTRUMENTAÇÃO | Qua 27/05/26 | Qua 27/05/26 | Automação e instrumentação | Ter 05/05/26 | Ter 07/07/26 | Sprint 8 |

| ID | WBS | Task | Type | Duration | Start | Finish | Predecessors | Complete | Remaining | Baseline start | Baseline finish | Baseline duration | Total slack | Free slack | Constraint | Disciplina | Início_LB_R0 | Término_LB_R0 | Text5 | ILB_2 | TLB_2 | Sprints |
| --- | --- | --- | --- | --- | --- | --- | --- | --- | --- | --- | --- | --- | --- | --- | --- | --- | --- | --- | --- | --- | --- | --- |
| 461 | 1.1.11.11 | **AG-F0009-0306-MB-J-00001** |  | 11d | 2026-06-23 A | 2026-07-07 |  | 82% | 2d | 2026-06-10 | 2026-06-29 | 14d | 5d |  |  | AUTOMAÇÃO E INSTRUMENTAÇÃO | Seg 25/05/26 | Qui 11/06/26 | LI-F0009-0306-MB-J-00001 | Qua 20/05/26 | Qui 28/05/26 | Sprint 9 |
| 462 | 1.1.11.11.1 | Emissão inicial |  | 4d | 2026-06-23 A | 2026-06-26 A | 417 | 100% |  | 2026-06-10 | 2026-06-23 | 10d |  |  | finish no earlier than 2026-06-23 | AUTOMAÇÃO E INSTRUMENTAÇÃO | Seg 25/05/26 | Sex 05/06/26 | Emissão inicial | Qua 20/05/26 | Sex 22/05/26 | Sprint 9 |
| 463 | 1.1.11.11.2 | Análise Tecnored |  | 4d | 2026-06-29 A | 2026-07-02 A | 462 | 100% |  | 2026-06-24 | 2026-06-24 | 1d |  |  |  | AUTOMAÇÃO E INSTRUMENTAÇÃO | Seg 08/06/26 | Seg 08/06/26 | Análise Tecnored | Seg 25/05/26 | Seg 25/05/26 | Sprint 10 |
| 464 | 1.1.11.11.3 | Atendimento de comentários |  | 2d | 2026-07-03 A | 2026-07-06 | 463 | 50% | 1d | 2026-06-25 | 2026-06-26 | 2d | 5d | 0d |  | AUTOMAÇÃO E INSTRUMENTAÇÃO | Ter 09/06/26 | Qua 10/06/26 | Atendimento de comentários | Ter 26/05/26 | Qua 27/05/26 | Sprint 10 |
| 465 | 1.1.11.11.4 | Aprovação |  | 1d | 2026-07-07 | 2026-07-07 | 464 |  |  | 2026-06-29 | 2026-06-29 | 1d | 5d |  |  | AUTOMAÇÃO E INSTRUMENTAÇÃO | Qui 11/06/26 | Qui 11/06/26 | Aprovação | Qui 28/05/26 | Qui 28/05/26 | Sprint 11 |
| 466 | 1.1.11.12 | **AG-F0009-0306-MB-J-00002** |  | 8d | 2026-06-23 A | 2026-07-02 |  | 50% | 4d | 2026-06-10 | 2026-06-29 | 14d | 8d |  |  | AUTOMAÇÃO E INSTRUMENTAÇÃO | Seg 25/05/26 | Qui 11/06/26 | LE-F0009-0306-MB-J-00001 | Sex 19/06/26 | Seg 29/06/26 | Sprint 9 |
| 467 | 1.1.11.12.1 | Emissão inicial |  | 4d | 2026-06-23 A | 2026-06-26 A | 417 | 100% |  | 2026-06-10 | 2026-06-23 | 10d |  |  | finish no earlier than 2026-06-26 | AUTOMAÇÃO E INSTRUMENTAÇÃO | Seg 25/05/26 | Sex 05/06/26 | Emissão inicial | Sex 19/06/26 | Ter 23/06/26 | Sprint 9 |
| 468 | 1.1.11.12.2 | Análise Tecnored |  | 1d | 2026-06-29 | 2026-06-29 | 467 |  |  | 2026-06-24 | 2026-06-24 | 1d | 8d | 0d |  | AUTOMAÇÃO E INSTRUMENTAÇÃO | Seg 08/06/26 | Seg 08/06/26 | Análise Tecnored | Qua 24/06/26 | Qua 24/06/26 | Sprint 10 |
| 469 | 1.1.11.12.3 | Atendimento de comentários |  | 2d | 2026-06-30 | 2026-07-01 | 468 |  |  | 2026-06-25 | 2026-06-26 | 2d | 8d | 0d |  | AUTOMAÇÃO E INSTRUMENTAÇÃO | Ter 09/06/26 | Qua 10/06/26 | Atendimento de comentários | Qui 25/06/26 | Sex 26/06/26 | Sprint 10 |
| 470 | 1.1.11.12.4 | Aprovação |  | 1d | 2026-07-02 | 2026-07-02 | 469 |  |  | 2026-06-29 | 2026-06-29 | 1d | 8d |  |  | AUTOMAÇÃO E INSTRUMENTAÇÃO | Qui 11/06/26 | Qui 11/06/26 | Aprovação | Seg 29/06/26 | Seg 29/06/26 | Sprint 10 |
| 471 | 1.1.11.13 | **AG-F0009-0306-MB-J-00003** |  | 8d | 2026-06-23 A | 2026-07-02 |  | 50% | 4d | 2026-06-10 | 2026-06-29 | 14d | 8d |  |  | AUTOMAÇÃO E INSTRUMENTAÇÃO | Seg 25/05/26 | Qui 11/06/26 | LZ-F0009-0306-MB-J-00001 | Qui 11/06/26 | Sex 19/06/26 | Sprint 9 |
| 472 | 1.1.11.13.1 | Emissão inicial |  | 4d | 2026-06-23 A | 2026-06-26 A | 417 | 100% |  | 2026-06-10 | 2026-06-23 | 10d |  |  | finish no earlier than 2026-06-26 | AUTOMAÇÃO E INSTRUMENTAÇÃO | Seg 25/05/26 | Sex 05/06/26 | Emissão inicial | Qui 11/06/26 | Seg 15/06/26 | Sprint 9 |
| 473 | 1.1.11.13.2 | Análise Tecnored |  | 1d | 2026-06-29 | 2026-06-29 | 472 |  |  | 2026-06-24 | 2026-06-24 | 1d | 8d | 0d |  | AUTOMAÇÃO E INSTRUMENTAÇÃO | Seg 08/06/26 | Seg 08/06/26 | Análise Tecnored | Ter 16/06/26 | Ter 16/06/26 | Sprint 10 |
| 474 | 1.1.11.13.3 | Atendimento de comentários |  | 2d | 2026-06-30 | 2026-07-01 | 473 |  |  | 2026-06-25 | 2026-06-26 | 2d | 8d | 0d |  | AUTOMAÇÃO E INSTRUMENTAÇÃO | Ter 09/06/26 | Qua 10/06/26 | Atendimento de comentários | Qua 17/06/26 | Qui 18/06/26 | Sprint 10 |
| 475 | 1.1.11.13.4 | Aprovação |  | 1d | 2026-07-02 | 2026-07-02 | 474 |  |  | 2026-06-29 | 2026-06-29 | 1d | 8d |  |  | AUTOMAÇÃO E INSTRUMENTAÇÃO | Qui 11/06/26 | Qui 11/06/26 | Aprovação | Sex 19/06/26 | Sex 19/06/26 | Sprint 10 |
| 476 | 1.1.11.14 | **AG-F0009-0306-MB-J-00004** | inactive | 6d | 2026-06-22 | 2026-06-29 |  |  |  | 2026-06-10 | 2026-06-29 | 14d | 11d |  |  | AUTOMAÇÃO E INSTRUMENTAÇÃO | Seg 25/05/26 | Qui 11/06/26 | LE-F0009-0306-MB-J-00002 | Sex 19/06/26 | Seg 29/06/26 | Sprint 9 |
| 477 | 1.1.11.14.1 | Emissão inicial | inactive | 2d | 2026-06-22 | 2026-06-23 | 417 |  |  | 2026-06-10 | 2026-06-23 | 10d | 11d | 0d |  | AUTOMAÇÃO E INSTRUMENTAÇÃO | Seg 25/05/26 | Sex 05/06/26 | Emissão inicial | Sex 19/06/26 | Ter 23/06/26 | Sprint 9 |
| 478 | 1.1.11.14.2 | Análise Tecnored | inactive | 1d | 2026-06-24 | 2026-06-24 | 477 |  |  | 2026-06-24 | 2026-06-24 | 1d | 11d | 0d |  | AUTOMAÇÃO E INSTRUMENTAÇÃO | Seg 08/06/26 | Seg 08/06/26 | Análise Tecnored | Qua 24/06/26 | Qua 24/06/26 | Sprint 9 |
| 479 | 1.1.11.14.3 | Atendimento de comentários | inactive | 2d | 2026-06-25 | 2026-06-26 | 478 |  |  | 2026-06-25 | 2026-06-26 | 2d | 11d | 0d |  | AUTOMAÇÃO E INSTRUMENTAÇÃO | Ter 09/06/26 | Qua 10/06/26 | Atendimento de comentários | Qui 25/06/26 | Sex 26/06/26 | Sprint 9 |
| 480 | 1.1.11.14.4 | Aprovação | inactive | 1d | 2026-06-29 | 2026-06-29 | 479 |  |  | 2026-06-29 | 2026-06-29 | 1d | 11d |  |  | AUTOMAÇÃO E INSTRUMENTAÇÃO | Qui 11/06/26 | Qui 11/06/26 | Aprovação | Seg 29/06/26 | Seg 29/06/26 | Sprint 10 |
| 481 | 1.1.11.15 | **DI-F0009-0306-MB-J-00001** |  | 8d | 2026-07-01 A | 2026-07-14 |  | 50% | 4d | 2026-06-24 | 2026-07-02 | 7d | 2d |  |  | AUTOMAÇÃO E INSTRUMENTAÇÃO | Seg 08/06/26 | Ter 16/06/26 | PQ-F0009-0306-MB-J-00001 | Qua 01/07/26 | Ter 07/07/26 | Sprint 10 |
| 482 | 1.1.11.15.1 | Emissão inicial |  | 4d | 2026-07-01 A | 2026-07-06 A |  | 100% |  | 2026-06-24 | 2026-06-26 | 3d |  |  | start no earlier than 2026-06-17 | AUTOMAÇÃO E INSTRUMENTAÇÃO | Seg 08/06/26 | Qua 10/06/26 | Emissão inicial | Qua 01/07/26 | Qua 01/07/26 | Sprint 10 |
| 483 | 1.1.11.15.2 | Análise Tecnored |  | 1d | 2026-07-07 | 2026-07-07 | 482 |  |  | 2026-06-29 | 2026-06-29 | 1d | 2d | 0d |  | AUTOMAÇÃO E INSTRUMENTAÇÃO | Qui 11/06/26 | Qui 11/06/26 | Análise Tecnored | Qui 02/07/26 | Qui 02/07/26 | Sprint 11 |
| 484 | 1.1.11.15.3 | Atendimento de comentários |  | 2d | 2026-07-08 | 2026-07-13 | 483 |  |  | 2026-06-30 | 2026-07-01 | 2d | 2d | 0d |  | AUTOMAÇÃO E INSTRUMENTAÇÃO | Sex 12/06/26 | Seg 15/06/26 | Atendimento de comentários | Sex 03/07/26 | Seg 06/07/26 | Sprint 11 |
| 485 | 1.1.11.15.4 | Aprovação |  | 1d | 2026-07-14 | 2026-07-14 | 484 |  |  | 2026-07-02 | 2026-07-02 | 1d | 2d |  |  | AUTOMAÇÃO E INSTRUMENTAÇÃO | Ter 16/06/26 | Ter 16/06/26 | Aprovação | Ter 07/07/26 | Ter 07/07/26 | Sprint 12 |

| ID | WBS | Task | Type | Duration | Start | Finish | Predecessors | Complete | Remaining | Baseline start | Baseline finish | Baseline duration | Total slack | Free slack | Constraint | Disciplina | Início_LB_R0 | Término_LB_R0 | Text5 | ILB_2 | TLB_2 | Sprints |
| --- | --- | --- | --- | --- | --- | --- | --- | --- | --- | --- | --- | --- | --- | --- | --- | --- | --- | --- | --- | --- | --- | --- |
| 486 | 1.1.11.16 | **LI-F0009-0306-MB-J-00002** | inactive | 8d | 2026-06-16 | 2026-06-25 |  |  |  | 2026-06-26 | 2026-07-06 | 7d | 13d |  |  | AUTOMAÇÃO E INSTRUMENTAÇÃO | Sex 19/06/26 | Seg 29/06/26 | FG-F0009-0306-MB-J-00001 | Sex 15/05/26 | Qua 27/05/26 | Sprint 8 |
| 487 | 1.1.11.16.1 | Emissão inicial | inactive | 4d | 2026-06-16 | 2026-06-19 |  |  |  | 2026-06-26 | 2026-06-30 | 3d | 13d | 0d | finish no earlier than 2026-06-19 | AUTOMAÇÃO E INSTRUMENTAÇÃO | Sex 19/06/26 | Ter 23/06/26 | Emissão inicial | Sex 15/05/26 | Qui 21/05/26 | Sprint 8 |
| 488 | 1.1.11.16.2 | Análise Tecnored | inactive | 1d | 2026-06-22 | 2026-06-22 | 487 |  |  | 2026-07-01 | 2026-07-01 | 1d | 13d | 0d | finish no earlier than 2026-06-22 | AUTOMAÇÃO E INSTRUMENTAÇÃO | Qua 24/06/26 | Qua 24/06/26 | Análise Tecnored | Sex 22/05/26 | Sex 22/05/26 | Sprint 9 |
| 489 | 1.1.11.16.3 | Atendimento de comentários | inactive | 2d | 2026-06-23 | 2026-06-24 | 488 |  |  | 2026-07-02 | 2026-07-03 | 2d | 13d | 0d | finish no earlier than 2026-06-24 | AUTOMAÇÃO E INSTRUMENTAÇÃO | Qui 25/06/26 | Sex 26/06/26 | Atendimento de comentários | Seg 25/05/26 | Ter 26/05/26 | Sprint 9 |
| 490 | 1.1.11.16.4 | Aprovação | inactive | 1d | 2026-06-25 | 2026-06-25 | 489 |  |  | 2026-07-06 | 2026-07-06 | 1d | 13d |  | finish no earlier than 2026-06-25 | AUTOMAÇÃO E INSTRUMENTAÇÃO | Seg 29/06/26 | Seg 29/06/26 | Aprovação | Qua 27/05/26 | Qua 27/05/26 | Sprint 9 |
| 491 | 1.1.11.17 | **LI-F0009-0306-MB-J-00003** | inactive | 8d | 2026-06-16 | 2026-06-25 |  |  |  | 2026-06-26 | 2026-07-03 | 6d | 13d |  |  | AUTOMAÇÃO E INSTRUMENTAÇÃO | Sex 19/06/26 | Seg 29/06/26 | FG-F0009-0306-MB-J-00002 | Sex 15/05/26 | Seg 25/05/26 | Sprint 8 |
| 492 | 1.1.11.17.1 | Emissão inicial | inactive | 4d | 2026-06-16 | 2026-06-19 |  |  |  | 2026-06-26 | 2026-06-29 | 2d | 13d | 0d | finish no earlier than 2026-06-19 | AUTOMAÇÃO E INSTRUMENTAÇÃO | Sex 19/06/26 | Ter 23/06/26 | Emissão inicial | Sex 15/05/26 | Ter 19/05/26 | Sprint 8 |
| 493 | 1.1.11.17.2 | Análise Tecnored | inactive | 1d | 2026-06-22 | 2026-06-22 | 492 |  |  | 2026-06-30 | 2026-06-30 | 1d | 13d | 0d | finish no earlier than 2026-06-22 | AUTOMAÇÃO E INSTRUMENTAÇÃO | Qua 24/06/26 | Qua 24/06/26 | Análise Tecnored | Qua 20/05/26 | Qua 20/05/26 | Sprint 9 |
| 494 | 1.1.11.17.3 | Atendimento de comentários | inactive | 2d | 2026-06-23 | 2026-06-24 | 493 |  |  | 2026-07-01 | 2026-07-02 | 2d | 13d | 0d | finish no earlier than 2026-06-24 | AUTOMAÇÃO E INSTRUMENTAÇÃO | Qui 25/06/26 | Sex 26/06/26 | Atendimento de comentários | Qui 21/05/26 | Sex 22/05/26 | Sprint 9 |
| 495 | 1.1.11.17.4 | Aprovação | inactive | 1d | 2026-06-25 | 2026-06-25 | 494 |  |  | 2026-07-03 | 2026-07-03 | 1d | 13d |  | finish no earlier than 2026-06-25 | AUTOMAÇÃO E INSTRUMENTAÇÃO | Seg 29/06/26 | Seg 29/06/26 | Aprovação | Seg 25/05/26 | Seg 25/05/26 | Sprint 9 |
| 496 | 1.1.11.18 | **LM-F0009-0306-MB-J-00001** |  | 9d | 2026-06-30 A | 2026-07-14 |  | 67% | 3d | 2026-06-26 | 2026-07-03 | 6d | 2d |  |  | AUTOMAÇÃO E INSTRUMENTAÇÃO | Seg 29/06/26 | Seg 06/07/26 | FG-F0009-0306-MB-J-00003 | Sex 15/05/26 | Qua 27/05/26 | Sprint 10 |
| 497 | 1.1.11.18.1 | Emissão inicial |  | 6d | 2026-06-30 A | 2026-07-07 A | 427SS, 432SS | 100% |  | 2026-06-26 | 2026-06-29 | 2d |  |  | finish no earlier than 2026-07-07 | AUTOMAÇÃO E INSTRUMENTAÇÃO | Seg 29/06/26 | Ter 30/06/26 | Emissão inicial | Sex 15/05/26 | Qui 21/05/26 | Sprint 10 |
| 498 | 1.1.11.18.2 | Análise Tecnored |  | 1d | 2026-07-08 | 2026-07-08 | 497 |  |  | 2026-06-30 | 2026-06-30 | 1d | 2d | 0d |  | AUTOMAÇÃO E INSTRUMENTAÇÃO | Qua 01/07/26 | Qua 01/07/26 | Análise Tecnored | Sex 22/05/26 | Sex 22/05/26 | Sprint 11 |
| 499 | 1.1.11.18.3 | Atendimento de comentários |  | 1d | 2026-07-13 | 2026-07-13 | 498 |  |  | 2026-07-01 | 2026-07-02 | 2d | 2d | 0d |  | AUTOMAÇÃO E INSTRUMENTAÇÃO | Qui 02/07/26 | Sex 03/07/26 | Atendimento de comentários | Seg 25/05/26 | Ter 26/05/26 | Sprint 12 |
| 500 | 1.1.11.18.4 | Aprovação |  | 1d | 2026-07-14 | 2026-07-14 | 499 |  |  | 2026-07-03 | 2026-07-03 | 1d | 2d |  |  | AUTOMAÇÃO E INSTRUMENTAÇÃO | Seg 06/07/26 | Seg 06/07/26 | Aprovação | Qua 27/05/26 | Qua 27/05/26 | Sprint 12 |
| 501 | 1.1.11.19 | **ET-F0009-0306-MB-J-00001** |  | 7d | 2026-06-30 | 2026-07-08 |  |  |  | 2026-06-24 | 2026-07-01 | 6d | 4d |  |  | AUTOMAÇÃO E INSTRUMENTAÇÃO | Ter 16/06/26 | Qua 24/06/26 | AG-F0009-0306-MB-J-00001 | Seg 25/05/26 | Qui 11/06/26 | Sprint 10 |
| 502 | 1.1.11.19.1 | Emissão inicial |  | 4d | 2026-06-30 | 2026-07-03 | 427SS, 432SS |  |  | 2026-06-24 | 2026-06-25 | 2d | 4d | 0d |  | AUTOMAÇÃO E INSTRUMENTAÇÃO | Ter 16/06/26 | Qui 18/06/26 | Emissão inicial | Seg 25/05/26 | Sex 05/06/26 | Sprint 10 |
| 503 | 1.1.11.19.2 | Análise Tecnored |  | 1d | 2026-07-06 | 2026-07-06 | 502 |  |  | 2026-06-26 | 2026-06-26 | 1d | 4d | 0d |  | AUTOMAÇÃO E INSTRUMENTAÇÃO | Sex 19/06/26 | Sex 19/06/26 | Análise Tecnored | Seg 08/06/26 | Seg 08/06/26 | Sprint 11 |
| 504 | 1.1.11.19.3 | Atendimento de comentários |  | 1d | 2026-07-07 | 2026-07-07 | 503 |  |  | 2026-06-29 | 2026-06-30 | 2d | 4d | 0d |  | AUTOMAÇÃO E INSTRUMENTAÇÃO | Seg 22/06/26 | Ter 23/06/26 | Atendimento de comentários | Ter 09/06/26 | Qua 10/06/26 | Sprint 11 |
| 505 | 1.1.11.19.4 | Aprovação |  | 1d | 2026-07-08 | 2026-07-08 | 504 |  |  | 2026-07-01 | 2026-07-01 | 1d | 4d |  |  | AUTOMAÇÃO E INSTRUMENTAÇÃO | Qua 24/06/26 | Qua 24/06/26 | Aprovação | Qui 11/06/26 | Qui 11/06/26 | Sprint 11 |
| 506 | 1.1.11.20 | **FD-F0009-0306-MB-J-00001** |  | 15d | 2026-06-18 A | 2026-07-08 |  | 80% | 3d | 2026-06-24 | 2026-07-08 | 11d | 4d |  |  | AUTOMAÇÃO E INSTRUMENTAÇÃO | Ter 16/06/26 | Sex 03/07/26 | AG-F0009-0306-MB-J-00002 | Seg 25/05/26 | Qui 11/06/26 | Sprint 8 |
| 507 | 1.1.11.20.1 | Emissão inicial |  | 9d | 2026-06-18 A | 2026-06-30 A |  | 100% |  | 2026-06-24 | 2026-07-02 | 7d |  |  | start no earlier than 2026-06-17 | AUTOMAÇÃO E INSTRUMENTAÇÃO | Ter 16/06/26 | Seg 29/06/26 | Emissão inicial | Seg 25/05/26 | Sex 05/06/26 | Sprint 8 |
| 508 | 1.1.11.20.2 | Análise Tecnored |  | 3d | 2026-07-01 A | 2026-07-03 A | 507 | 100% |  | 2026-07-03 | 2026-07-03 | 1d |  |  |  | AUTOMAÇÃO E INSTRUMENTAÇÃO | Ter 30/06/26 | Ter 30/06/26 | Análise Tecnored | Seg 08/06/26 | Seg 08/06/26 | Sprint 10 |
| 509 | 1.1.11.20.3 | Atendimento de comentários |  | 2d | 2026-07-06 | 2026-07-07 | 508 |  |  | 2026-07-06 | 2026-07-07 | 2d | 4d | 0d | start no earlier than 2026-07-06 | AUTOMAÇÃO E INSTRUMENTAÇÃO | Qua 01/07/26 | Qui 02/07/26 | Atendimento de comentários | Ter 09/06/26 | Qua 10/06/26 | Sprint 11 |
| 510 | 1.1.11.20.4 | Aprovação |  | 1d | 2026-07-08 | 2026-07-08 | 509 |  |  | 2026-07-08 | 2026-07-08 | 1d | 4d |  |  | AUTOMAÇÃO E INSTRUMENTAÇÃO | Sex 03/07/26 | Sex 03/07/26 | Aprovação | Qui 11/06/26 | Qui 11/06/26 | Sprint 11 |

| ID | WBS | Task | Duration | Start | Finish | Predecessors | Complete | Remaining | Baseline start | Baseline finish | Baseline duration | Total slack | Free slack | Constraint | Disciplina | Início_LB_R0 | Término_LB_R0 | Text5 | ILB_2 | TLB_2 | Sprints |
| --- | --- | --- | --- | --- | --- | --- | --- | --- | --- | --- | --- | --- | --- | --- | --- | --- | --- | --- | --- | --- | --- |
| 511 | 1.1.11.21 | **FD-F0009-0306-MB-J-00002** | 15d | 2026-06-18 A | 2026-07-08 |  | 80% | 3d | 2026-06-24 | 2026-07-08 | 11d | 4d |  |  | AUTOMAÇÃO E INSTRUMENTAÇÃO | Ter 16/06/26 | Sex 03/07/26 | AG-F0009-0306-MB-J-00003 | Seg 25/05/26 | Qui 11/06/26 | Sprint 8 |
| 512 | 1.1.11.21.1 | Emissão inicial | 9d | 2026-06-18 A | 2026-06-30 A | 507SS | 100% |  | 2026-06-24 | 2026-07-02 | 7d |  |  |  | AUTOMAÇÃO E INSTRUMENTAÇÃO | Ter 16/06/26 | Seg 29/06/26 | Emissão inicial | Seg 25/05/26 | Sex 05/06/26 | Sprint 8 |
| 513 | 1.1.11.21.2 | Análise Tecnored | 3d | 2026-07-01 A | 2026-07-03 A | 512 | 100% |  | 2026-07-03 | 2026-07-03 | 1d |  |  | finish no earlier than 2026-07-03 | AUTOMAÇÃO E INSTRUMENTAÇÃO | Ter 30/06/26 | Ter 30/06/26 | Análise Tecnored | Seg 08/06/26 | Seg 08/06/26 | Sprint 10 |
| 514 | 1.1.11.21.3 | Atendimento de comentários | 2d | 2026-07-06 | 2026-07-07 | 513 |  |  | 2026-07-06 | 2026-07-07 | 2d | 4d | 0d | finish no earlier than 2026-07-07 | AUTOMAÇÃO E INSTRUMENTAÇÃO | Qua 01/07/26 | Qui 02/07/26 | Atendimento de comentários | Ter 09/06/26 | Qua 10/06/26 | Sprint 11 |
| 515 | 1.1.11.21.4 | Aprovação | 1d | 2026-07-08 | 2026-07-08 | 514 |  |  | 2026-07-08 | 2026-07-08 | 1d | 4d |  | start no earlier than 2026-07-08 | AUTOMAÇÃO E INSTRUMENTAÇÃO | Sex 03/07/26 | Sex 03/07/26 | Aprovação | Qui 11/06/26 | Qui 11/06/26 | Sprint 11 |
| 516 | 1.1.11.22 | **FD-F0009-0306-MB-J-00003** | 15d | 2026-06-18 A | 2026-07-08 |  | 80% | 3d | 2026-06-24 | 2026-07-08 | 11d | 4d |  |  | AUTOMAÇÃO E INSTRUMENTAÇÃO | Ter 16/06/26 | Sex 03/07/26 | AG-F0009-0306-MB-J-00004 | Seg 25/05/26 | Qui 11/06/26 | Sprint 8 |
| 517 | 1.1.11.22.1 | Emissão inicial | 9d | 2026-06-18 A | 2026-06-30 A | 507SS | 100% |  | 2026-06-24 | 2026-07-02 | 7d |  |  | finish no earlier than 2026-06-30 | AUTOMAÇÃO E INSTRUMENTAÇÃO | Ter 16/06/26 | Seg 29/06/26 | Emissão inicial | Seg 25/05/26 | Sex 05/06/26 | Sprint 8 |
| 518 | 1.1.11.22.2 | Análise Tecnored | 3d | 2026-07-01 A | 2026-07-03 A | 517 | 100% |  | 2026-07-03 | 2026-07-03 | 1d |  |  | finish no earlier than 2026-07-03 | AUTOMAÇÃO E INSTRUMENTAÇÃO | Ter 30/06/26 | Ter 30/06/26 | Análise Tecnored | Seg 08/06/26 | Seg 08/06/26 | Sprint 10 |
| 519 | 1.1.11.22.3 | Atendimento de comentários | 2d | 2026-07-06 | 2026-07-07 | 518 |  |  | 2026-07-06 | 2026-07-07 | 2d | 4d | 0d | finish no earlier than 2026-07-07 | AUTOMAÇÃO E INSTRUMENTAÇÃO | Qua 01/07/26 | Qui 02/07/26 | Atendimento de comentários | Ter 09/06/26 | Qua 10/06/26 | Sprint 11 |
| 520 | 1.1.11.22.4 | Aprovação | 1d | 2026-07-08 | 2026-07-08 | 519 |  |  | 2026-07-08 | 2026-07-08 | 1d | 4d |  | start no earlier than 2026-07-08 | AUTOMAÇÃO E INSTRUMENTAÇÃO | Sex 03/07/26 | Sex 03/07/26 | Aprovação | Qui 11/06/26 | Qui 11/06/26 | Sprint 11 |
| 521 | 1.1.11.23 | **FD-F0009-0306-MB-J-00004** | 15d | 2026-06-18 A | 2026-07-08 |  | 80% | 3d | 2026-06-24 | 2026-07-08 | 11d | 4d |  |  | AUTOMAÇÃO E INSTRUMENTAÇÃO | Ter 16/06/26 | Sex 03/07/26 | DI-F0009-0306-MB-J-00001 | Seg 08/06/26 | Ter 16/06/26 | Sprint 8 |
| 522 | 1.1.11.23.1 | Emissão inicial | 9d | 2026-06-18 A | 2026-06-30 A | 507SS | 100% |  | 2026-06-24 | 2026-07-02 | 7d |  |  | finish no earlier than 2026-06-30 | AUTOMAÇÃO E INSTRUMENTAÇÃO | Ter 16/06/26 | Seg 29/06/26 | Emissão inicial | Seg 08/06/26 | Qua 10/06/26 | Sprint 8 |
| 523 | 1.1.11.23.2 | Análise Tecnored | 3d | 2026-07-01 A | 2026-07-03 A | 522 | 100% |  | 2026-07-03 | 2026-07-03 | 1d |  |  | finish no earlier than 2026-07-03 | AUTOMAÇÃO E INSTRUMENTAÇÃO | Ter 30/06/26 | Ter 30/06/26 | Análise Tecnored | Qui 11/06/26 | Qui 11/06/26 | Sprint 10 |
| 524 | 1.1.11.23.3 | Atendimento de comentários | 2d | 2026-07-06 | 2026-07-07 | 523 |  |  | 2026-07-06 | 2026-07-07 | 2d | 4d | 0d | finish no earlier than 2026-07-07 | AUTOMAÇÃO E INSTRUMENTAÇÃO | Qua 01/07/26 | Qui 02/07/26 | Atendimento de comentários | Sex 12/06/26 | Seg 15/06/26 | Sprint 11 |
| 525 | 1.1.11.23.4 | Aprovação | 1d | 2026-07-08 | 2026-07-08 | 524 |  |  | 2026-07-08 | 2026-07-08 | 1d | 4d |  | start no earlier than 2026-07-08 | AUTOMAÇÃO E INSTRUMENTAÇÃO | Sex 03/07/26 | Sex 03/07/26 | Aprovação | Ter 16/06/26 | Ter 16/06/26 | Sprint 11 |
| 526 | 1.1.11.24 | **FD-F0009-0306-MB-J-00005** | 15d | 2026-06-18 A | 2026-07-08 |  | 80% | 3d | 2026-06-24 | 2026-07-08 | 11d | 4d |  |  | AUTOMAÇÃO E INSTRUMENTAÇÃO | Ter 16/06/26 | Sex 03/07/26 | LI-F0009-0306-MB-J-00002 | Sex 19/06/26 | Seg 29/06/26 | Sprint 8 |
| 527 | 1.1.11.24.1 | Emissão inicial | 9d | 2026-06-18 A | 2026-06-30 A | 507SS | 100% |  | 2026-06-24 | 2026-07-02 | 7d |  |  | finish no earlier than 2026-06-30 | AUTOMAÇÃO E INSTRUMENTAÇÃO | Ter 16/06/26 | Seg 29/06/26 | Emissão inicial | Sex 19/06/26 | Ter 23/06/26 | Sprint 8 |
| 528 | 1.1.11.24.2 | Análise Tecnored | 3d | 2026-07-01 A | 2026-07-03 A | 527 | 100% |  | 2026-07-03 | 2026-07-03 | 1d |  |  | finish no earlier than 2026-07-03 | AUTOMAÇÃO E INSTRUMENTAÇÃO | Ter 30/06/26 | Ter 30/06/26 | Análise Tecnored | Qua 24/06/26 | Qua 24/06/26 | Sprint 10 |
| 529 | 1.1.11.24.3 | Atendimento de comentários | 2d | 2026-07-06 | 2026-07-07 | 528 |  |  | 2026-07-06 | 2026-07-07 | 2d | 4d | 0d | finish no earlier than 2026-07-07 | AUTOMAÇÃO E INSTRUMENTAÇÃO | Qua 01/07/26 | Qui 02/07/26 | Atendimento de comentários | Qui 25/06/26 | Sex 26/06/26 | Sprint 11 |
| 530 | 1.1.11.24.4 | Aprovação | 1d | 2026-07-08 | 2026-07-08 | 529 |  |  | 2026-07-08 | 2026-07-08 | 1d | 4d |  | start no earlier than 2026-07-08 | AUTOMAÇÃO E INSTRUMENTAÇÃO | Sex 03/07/26 | Sex 03/07/26 | Aprovação | Seg 29/06/26 | Seg 29/06/26 | Sprint 11 |
| 531 | 1.1.11.25 | **FD-F0009-0306-MB-J-00006** | 15d | 2026-06-18 A | 2026-07-08 |  | 80% | 3d | 2026-06-24 | 2026-07-08 | 11d | 4d |  |  | AUTOMAÇÃO E INSTRUMENTAÇÃO | Ter 16/06/26 | Sex 03/07/26 | LI-F0009-0306-MB-J-00003 | Sex 19/06/26 | Seg 29/06/26 | Sprint 8 |
| 532 | 1.1.11.25.1 | Emissão inicial | 9d | 2026-06-18 A | 2026-06-30 A | 507SS | 100% |  | 2026-06-24 | 2026-07-02 | 7d |  |  | finish no earlier than 2026-06-30 | AUTOMAÇÃO E INSTRUMENTAÇÃO | Ter 16/06/26 | Seg 29/06/26 | Emissão inicial | Sex 19/06/26 | Ter 23/06/26 | Sprint 8 |
| 533 | 1.1.11.25.2 | Análise Tecnored | 3d | 2026-07-01 A | 2026-07-03 A | 532 | 100% |  | 2026-07-03 | 2026-07-03 | 1d |  |  | finish no earlier than 2026-07-03 | AUTOMAÇÃO E INSTRUMENTAÇÃO | Ter 30/06/26 | Ter 30/06/26 | Análise Tecnored | Qua 24/06/26 | Qua 24/06/26 | Sprint 10 |
| 534 | 1.1.11.25.3 | Atendimento de comentários | 2d | 2026-07-06 | 2026-07-07 | 533 |  |  | 2026-07-06 | 2026-07-07 | 2d | 4d | 0d | finish no earlier than 2026-07-07 | AUTOMAÇÃO E INSTRUMENTAÇÃO | Qua 01/07/26 | Qui 02/07/26 | Atendimento de comentários | Qui 25/06/26 | Sex 26/06/26 | Sprint 11 |
| 535 | 1.1.11.25.4 | Aprovação | 1d | 2026-07-08 | 2026-07-08 | 534 |  |  | 2026-07-08 | 2026-07-08 | 1d | 4d |  | start no earlier than 2026-07-08 | AUTOMAÇÃO E INSTRUMENTAÇÃO | Sex 03/07/26 | Sex 03/07/26 | Aprovação | Seg 29/06/26 | Seg 29/06/26 | Sprint 11 |

| ID | WBS | Task | Duration | Start | Finish | Predecessors | Complete | Remaining | Baseline start | Baseline finish | Baseline duration | Total slack | Free slack | Constraint | Disciplina | Início_LB_R0 | Término_LB_R0 | Text5 | ILB_2 | TLB_2 | Sprints |
| --- | --- | --- | --- | --- | --- | --- | --- | --- | --- | --- | --- | --- | --- | --- | --- | --- | --- | --- | --- | --- | --- |
| 536 | 1.1.11.26 | **FD-F0009-0306-MB-J-00007** | 15d | 2026-06-18 A | 2026-07-08 |  | 80% | 3d | 2026-06-24 | 2026-07-08 | 11d | 4d |  |  | AUTOMAÇÃO E INSTRUMENTAÇÃO | Ter 16/06/26 | Sex 03/07/26 | LM-F0009-0306-MB-J-00001 | Seg 29/06/26 | Seg 06/07/26 | Sprint 8 |
| 537 | 1.1.11.26.1 | Emissão inicial | 9d | 2026-06-18 A | 2026-06-30 A | 507SS | 100% |  | 2026-06-24 | 2026-07-02 | 7d |  |  | finish no earlier than 2026-06-30 | AUTOMAÇÃO E INSTRUMENTAÇÃO | Ter 16/06/26 | Seg 29/06/26 | Emissão inicial | Seg 29/06/26 | Ter 30/06/26 | Sprint 8 |
| 538 | 1.1.11.26.2 | Análise Tecnored | 3d | 2026-07-01 A | 2026-07-03 A | 537 | 100% |  | 2026-07-03 | 2026-07-03 | 1d |  |  | finish no earlier than 2026-07-03 | AUTOMAÇÃO E INSTRUMENTAÇÃO | Ter 30/06/26 | Ter 30/06/26 | Análise Tecnored | Qua 01/07/26 | Qua 01/07/26 | Sprint 10 |
| 539 | 1.1.11.26.3 | Atendimento de comentários | 2d | 2026-07-06 | 2026-07-07 | 538 |  |  | 2026-07-06 | 2026-07-07 | 2d | 4d | 0d | finish no earlier than 2026-07-07 | AUTOMAÇÃO E INSTRUMENTAÇÃO | Qua 01/07/26 | Qui 02/07/26 | Atendimento de comentários | Qui 02/07/26 | Sex 03/07/26 | Sprint 11 |
| 540 | 1.1.11.26.4 | Aprovação | 1d | 2026-07-08 | 2026-07-08 | 539 |  |  | 2026-07-08 | 2026-07-08 | 1d | 4d |  | start no earlier than 2026-07-08 | AUTOMAÇÃO E INSTRUMENTAÇÃO | Sex 03/07/26 | Sex 03/07/26 | Aprovação | Seg 06/07/26 | Seg 06/07/26 | Sprint 11 |
| 541 | 1.1.11.27 | **FD-F0009-0306-MB-J-00008** | 15d | 2026-06-18 A | 2026-07-08 |  | 80% | 3d | 2026-06-24 | 2026-07-08 | 11d | 4d |  |  | AUTOMAÇÃO E INSTRUMENTAÇÃO | Ter 16/06/26 | Sex 03/07/26 | ET-F0009-0306-MB-J-00001 | Ter 16/06/26 | Qua 24/06/26 | Sprint 8 |
| 542 | 1.1.11.27.1 | Emissão inicial | 9d | 2026-06-18 A | 2026-06-30 A | 507SS | 100% |  | 2026-06-24 | 2026-07-02 | 7d |  |  | finish no earlier than 2026-06-30 | AUTOMAÇÃO E INSTRUMENTAÇÃO | Ter 16/06/26 | Seg 29/06/26 | Emissão inicial | Ter 16/06/26 | Qui 18/06/26 | Sprint 8 |
| 543 | 1.1.11.27.2 | Análise Tecnored | 3d | 2026-07-01 A | 2026-07-03 A | 542 | 100% |  | 2026-07-03 | 2026-07-03 | 1d |  |  | finish no earlier than 2026-07-03 | AUTOMAÇÃO E INSTRUMENTAÇÃO | Ter 30/06/26 | Ter 30/06/26 | Análise Tecnored | Sex 19/06/26 | Sex 19/06/26 | Sprint 10 |
| 544 | 1.1.11.27.3 | Atendimento de comentários | 2d | 2026-07-06 | 2026-07-07 | 543 |  |  | 2026-07-06 | 2026-07-07 | 2d | 4d | 0d | finish no earlier than 2026-07-07 | AUTOMAÇÃO E INSTRUMENTAÇÃO | Qua 01/07/26 | Qui 02/07/26 | Atendimento de comentários | Seg 22/06/26 | Ter 23/06/26 | Sprint 11 |
| 545 | 1.1.11.27.4 | Aprovação | 1d | 2026-07-08 | 2026-07-08 | 544 |  |  | 2026-07-08 | 2026-07-08 | 1d | 4d |  | start no earlier than 2026-07-08 | AUTOMAÇÃO E INSTRUMENTAÇÃO | Sex 03/07/26 | Sex 03/07/26 | Aprovação | Qua 24/06/26 | Qua 24/06/26 | Sprint 11 |
| 546 | 1.1.11.28 | **FD-F0009-0306-MB-J-00009** | 15d | 2026-06-18 A | 2026-07-08 |  | 80% | 3d | 2026-06-24 | 2026-07-08 | 11d | 4d |  |  | AUTOMAÇÃO E INSTRUMENTAÇÃO | Ter 16/06/26 | Sex 03/07/26 | FD-F0009-0306-MB-J-00001 | Ter 16/06/26 | Sex 03/07/26 | Sprint 8 |
| 547 | 1.1.11.28.1 | Emissão inicial | 9d | 2026-06-18 A | 2026-06-30 A | 507SS | 100% |  | 2026-06-24 | 2026-07-02 | 7d |  |  | finish no earlier than 2026-06-30 | AUTOMAÇÃO E INSTRUMENTAÇÃO | Ter 16/06/26 | Seg 29/06/26 | Emissão inicial | Ter 16/06/26 | Seg 29/06/26 | Sprint 8 |
| 548 | 1.1.11.28.2 | Análise Tecnored | 3d | 2026-07-01 A | 2026-07-03 A | 547 | 100% |  | 2026-07-03 | 2026-07-03 | 1d |  |  | finish no earlier than 2026-07-03 | AUTOMAÇÃO E INSTRUMENTAÇÃO | Ter 30/06/26 | Ter 30/06/26 | Análise Tecnored | Ter 30/06/26 | Ter 30/06/26 | Sprint 10 |
| 549 | 1.1.11.28.3 | Atendimento de comentários | 2d | 2026-07-06 | 2026-07-07 | 548 |  |  | 2026-07-06 | 2026-07-07 | 2d | 4d | 0d | finish no earlier than 2026-07-07 | AUTOMAÇÃO E INSTRUMENTAÇÃO | Qua 01/07/26 | Qui 02/07/26 | Atendimento de comentários | Qua 01/07/26 | Qui 02/07/26 | Sprint 11 |
| 550 | 1.1.11.28.4 | Aprovação | 1d | 2026-07-08 | 2026-07-08 | 549 |  |  | 2026-07-08 | 2026-07-08 | 1d | 4d |  | start no earlier than 2026-07-08 | AUTOMAÇÃO E INSTRUMENTAÇÃO | Sex 03/07/26 | Sex 03/07/26 | Aprovação | Sex 03/07/26 | Sex 03/07/26 | Sprint 11 |
| 551 | 1.1.11.29 | **FD-F0009-0306-MB-J-00010** | 15d | 2026-06-18 A | 2026-07-08 |  | 80% | 3d | 2026-06-24 | 2026-07-08 | 11d | 4d |  |  | AUTOMAÇÃO E INSTRUMENTAÇÃO | Ter 16/06/26 | Sex 03/07/26 | FD-F0009-0306-MB-J-00002 | Ter 16/06/26 | Sex 03/07/26 | Sprint 8 |
| 552 | 1.1.11.29.1 | Emissão inicial | 9d | 2026-06-18 A | 2026-06-30 A | 507SS | 100% |  | 2026-06-24 | 2026-07-02 | 7d |  |  | finish no earlier than 2026-06-30 | AUTOMAÇÃO E INSTRUMENTAÇÃO | Ter 16/06/26 | Seg 29/06/26 | Emissão inicial | Ter 16/06/26 | Seg 29/06/26 | Sprint 8 |
| 553 | 1.1.11.29.2 | Análise Tecnored | 3d | 2026-07-01 A | 2026-07-03 A | 552 | 100% |  | 2026-07-03 | 2026-07-03 | 1d |  |  | finish no earlier than 2026-07-03 | AUTOMAÇÃO E INSTRUMENTAÇÃO | Ter 30/06/26 | Ter 30/06/26 | Análise Tecnored | Ter 30/06/26 | Ter 30/06/26 | Sprint 10 |
| 554 | 1.1.11.29.3 | Atendimento de comentários | 2d | 2026-07-06 | 2026-07-07 | 553 |  |  | 2026-07-06 | 2026-07-07 | 2d | 4d | 0d | finish no earlier than 2026-07-07 | AUTOMAÇÃO E INSTRUMENTAÇÃO | Qua 01/07/26 | Qui 02/07/26 | Atendimento de comentários | Qua 01/07/26 | Qui 02/07/26 | Sprint 11 |
| 555 | 1.1.11.29.4 | Aprovação | 1d | 2026-07-08 | 2026-07-08 | 554 |  |  | 2026-07-08 | 2026-07-08 | 1d | 4d |  | start no earlier than 2026-07-08 | AUTOMAÇÃO E INSTRUMENTAÇÃO | Sex 03/07/26 | Sex 03/07/26 | Aprovação | Sex 03/07/26 | Sex 03/07/26 | Sprint 11 |
| 556 | 1.1.11.30 | **FD-F0009-0306-MB-J-00011** | 15d | 2026-06-18 A | 2026-07-08 |  | 80% | 3d | 2026-06-24 | 2026-07-08 | 11d | 4d |  |  | AUTOMAÇÃO E INSTRUMENTAÇÃO | Ter 16/06/26 | Sex 03/07/26 | FD-F0009-0306-MB-J-00003 | Ter 16/06/26 | Sex 03/07/26 | Sprint 8 |
| 557 | 1.1.11.30.1 | Emissão inicial | 9d | 2026-06-18 A | 2026-06-30 A | 507SS | 100% |  | 2026-06-24 | 2026-07-02 | 7d |  |  | finish no earlier than 2026-06-30 | AUTOMAÇÃO E INSTRUMENTAÇÃO | Ter 16/06/26 | Seg 29/06/26 | Emissão inicial | Ter 16/06/26 | Seg 29/06/26 | Sprint 8 |
| 558 | 1.1.11.30.2 | Análise Tecnored | 3d | 2026-07-01 A | 2026-07-03 A | 557 | 100% |  | 2026-07-03 | 2026-07-03 | 1d |  |  | finish no earlier than 2026-07-03 | AUTOMAÇÃO E INSTRUMENTAÇÃO | Ter 30/06/26 | Ter 30/06/26 | Análise Tecnored | Ter 30/06/26 | Ter 30/06/26 | Sprint 10 |
| 559 | 1.1.11.30.3 | Atendimento de comentários | 2d | 2026-07-06 | 2026-07-07 | 558 |  |  | 2026-07-06 | 2026-07-07 | 2d | 4d | 0d | finish no earlier than 2026-07-07 | AUTOMAÇÃO E INSTRUMENTAÇÃO | Qua 01/07/26 | Qui 02/07/26 | Atendimento de comentários | Qua 01/07/26 | Qui 02/07/26 | Sprint 11 |
| 560 | 1.1.11.30.4 | Aprovação | 1d | 2026-07-08 | 2026-07-08 | 559 |  |  | 2026-07-08 | 2026-07-08 | 1d | 4d |  | start no earlier than 2026-07-08 | AUTOMAÇÃO E INSTRUMENTAÇÃO | Sex 03/07/26 | Sex 03/07/26 | Aprovação | Sex 03/07/26 | Sex 03/07/26 | Sprint 11 |

| ID | WBS | Task | Duration | Start | Finish | Predecessors | Complete | Remaining | Baseline start | Baseline finish | Baseline duration | Total slack | Free slack | Constraint | Disciplina | Início_LB_R0 | Término_LB_R0 | Text5 | ILB_2 | TLB_2 | Sprints |
| --- | --- | --- | --- | --- | --- | --- | --- | --- | --- | --- | --- | --- | --- | --- | --- | --- | --- | --- | --- | --- | --- |
| 561 | 1.1.11.31 | **FD-F0009-0306-MB-J-00012** | 15d | 2026-06-18 A | 2026-07-08 |  | 80% | 3d | 2026-06-24 | 2026-07-08 | 11d | 4d |  |  | AUTOMAÇÃO E INSTRUMENTAÇÃO | Ter 16/06/26 | Sex 03/07/26 | FD-F0009-0306-MB-J-00004 | Ter 16/06/26 | Sex 03/07/26 | Sprint 8 |
| 562 | 1.1.11.31.1 | Emissão inicial | 9d | 2026-06-18 A | 2026-06-30 A | 507SS | 100% |  | 2026-06-24 | 2026-07-02 | 7d |  |  | finish no earlier than 2026-06-30 | AUTOMAÇÃO E INSTRUMENTAÇÃO | Ter 16/06/26 | Seg 29/06/26 | Emissão inicial | Ter 16/06/26 | Seg 29/06/26 | Sprint 8 |
| 563 | 1.1.11.31.2 | Análise Tecnored | 3d | 2026-07-01 A | 2026-07-03 A | 562 | 100% |  | 2026-07-03 | 2026-07-03 | 1d |  |  | finish no earlier than 2026-07-03 | AUTOMAÇÃO E INSTRUMENTAÇÃO | Ter 30/06/26 | Ter 30/06/26 | Análise Tecnored | Ter 30/06/26 | Ter 30/06/26 | Sprint 10 |
| 564 | 1.1.11.31.3 | Atendimento de comentários | 2d | 2026-07-06 | 2026-07-07 | 563 |  |  | 2026-07-06 | 2026-07-07 | 2d | 4d | 0d | finish no earlier than 2026-07-07 | AUTOMAÇÃO E INSTRUMENTAÇÃO | Qua 01/07/26 | Qui 02/07/26 | Atendimento de comentários | Qua 01/07/26 | Qui 02/07/26 | Sprint 11 |
| 565 | 1.1.11.31.4 | Aprovação | 1d | 2026-07-08 | 2026-07-08 | 564 |  |  | 2026-07-08 | 2026-07-08 | 1d | 4d |  | start no earlier than 2026-07-08 | AUTOMAÇÃO E INSTRUMENTAÇÃO | Sex 03/07/26 | Sex 03/07/26 | Aprovação | Sex 03/07/26 | Sex 03/07/26 | Sprint 11 |
| 566 | 1.1.11.32 | **FD-F0009-0306-MB-J-00013** | 15d | 2026-06-18 A | 2026-07-08 |  | 80% | 3d | 2026-06-24 | 2026-07-08 | 11d | 4d |  |  | AUTOMAÇÃO E INSTRUMENTAÇÃO | Ter 16/06/26 | Sex 03/07/26 | FD-F0009-0306-MB-J-00005 | Ter 16/06/26 | Sex 03/07/26 | Sprint 8 |
| 567 | 1.1.11.32.1 | Emissão inicial | 9d | 2026-06-18 A | 2026-06-30 A | 507SS | 100% |  | 2026-06-24 | 2026-07-02 | 7d |  |  | finish no earlier than 2026-06-30 | AUTOMAÇÃO E INSTRUMENTAÇÃO | Ter 16/06/26 | Seg 29/06/26 | Emissão inicial | Ter 16/06/26 | Seg 29/06/26 | Sprint 8 |
| 568 | 1.1.11.32.2 | Análise Tecnored | 3d | 2026-07-01 A | 2026-07-03 A | 567 | 100% |  | 2026-07-03 | 2026-07-03 | 1d |  |  | finish no earlier than 2026-07-03 | AUTOMAÇÃO E INSTRUMENTAÇÃO | Ter 30/06/26 | Ter 30/06/26 | Análise Tecnored | Ter 30/06/26 | Ter 30/06/26 | Sprint 10 |
| 569 | 1.1.11.32.3 | Atendimento de comentários | 2d | 2026-07-06 | 2026-07-07 | 568 |  |  | 2026-07-06 | 2026-07-07 | 2d | 4d | 0d | finish no earlier than 2026-07-07 | AUTOMAÇÃO E INSTRUMENTAÇÃO | Qua 01/07/26 | Qui 02/07/26 | Atendimento de comentários | Qua 01/07/26 | Qui 02/07/26 | Sprint 11 |
| 570 | 1.1.11.32.4 | Aprovação | 1d | 2026-07-08 | 2026-07-08 | 569 |  |  | 2026-07-08 | 2026-07-08 | 1d | 4d |  | start no earlier than 2026-07-08 | AUTOMAÇÃO E INSTRUMENTAÇÃO | Sex 03/07/26 | Sex 03/07/26 | Aprovação | Sex 03/07/26 | Sex 03/07/26 | Sprint 11 |
| 571 | 1.1.11.33 | **FD-F0009-0306-MB-J-00014** | 15d | 2026-06-18 A | 2026-07-08 |  | 80% | 3d | 2026-06-24 | 2026-07-08 | 11d | 4d |  |  | AUTOMAÇÃO E INSTRUMENTAÇÃO | Ter 16/06/26 | Sex 03/07/26 | FD-F0009-0306-MB-J-00006 | Ter 16/06/26 | Sex 03/07/26 | Sprint 8 |
| 572 | 1.1.11.33.1 | Emissão inicial | 9d | 2026-06-18 A | 2026-06-30 A | 507SS | 100% |  | 2026-06-24 | 2026-07-02 | 7d |  |  | finish no earlier than 2026-06-30 | AUTOMAÇÃO E INSTRUMENTAÇÃO | Ter 16/06/26 | Seg 29/06/26 | Emissão inicial | Ter 16/06/26 | Seg 29/06/26 | Sprint 8 |
| 573 | 1.1.11.33.2 | Análise Tecnored | 3d | 2026-07-01 A | 2026-07-03 A | 572 | 100% |  | 2026-07-03 | 2026-07-03 | 1d |  |  | finish no earlier than 2026-07-03 | AUTOMAÇÃO E INSTRUMENTAÇÃO | Ter 30/06/26 | Ter 30/06/26 | Análise Tecnored | Ter 30/06/26 | Ter 30/06/26 | Sprint 10 |
| 574 | 1.1.11.33.3 | Atendimento de comentários | 2d | 2026-07-06 | 2026-07-07 | 573 |  |  | 2026-07-06 | 2026-07-07 | 2d | 4d | 0d | finish no earlier than 2026-07-07 | AUTOMAÇÃO E INSTRUMENTAÇÃO | Qua 01/07/26 | Qui 02/07/26 | Atendimento de comentários | Qua 01/07/26 | Qui 02/07/26 | Sprint 11 |
| 575 | 1.1.11.33.4 | Aprovação | 1d | 2026-07-08 | 2026-07-08 | 574 |  |  | 2026-07-08 | 2026-07-08 | 1d | 4d |  | start no earlier than 2026-07-08 | AUTOMAÇÃO E INSTRUMENTAÇÃO | Sex 03/07/26 | Sex 03/07/26 | Aprovação | Sex 03/07/26 | Sex 03/07/26 | Sprint 11 |
| 576 | 1.1.11.34 | **FD-F0009-0306-MB-J-00015** | 15d | 2026-06-18 A | 2026-07-08 |  | 80% | 3d | 2026-06-24 | 2026-07-08 | 11d | 4d |  |  | AUTOMAÇÃO E INSTRUMENTAÇÃO | Ter 16/06/26 | Sex 03/07/26 | FD-F0009-0306-MB-J-00007 | Ter 16/06/26 | Sex 03/07/26 | Sprint 8 |
| 577 | 1.1.11.34.1 | Emissão inicial | 9d | 2026-06-18 A | 2026-06-30 A | 507SS | 100% |  | 2026-06-24 | 2026-07-02 | 7d |  |  | finish no earlier than 2026-06-30 | AUTOMAÇÃO E INSTRUMENTAÇÃO | Ter 16/06/26 | Seg 29/06/26 | Emissão inicial | Ter 16/06/26 | Seg 29/06/26 | Sprint 8 |
| 578 | 1.1.11.34.2 | Análise Tecnored | 3d | 2026-07-01 A | 2026-07-03 A | 577 | 100% |  | 2026-07-03 | 2026-07-03 | 1d |  |  | finish no earlier than 2026-07-03 | AUTOMAÇÃO E INSTRUMENTAÇÃO | Ter 30/06/26 | Ter 30/06/26 | Análise Tecnored | Ter 30/06/26 | Ter 30/06/26 | Sprint 10 |
| 579 | 1.1.11.34.3 | Atendimento de comentários | 2d | 2026-07-06 | 2026-07-07 | 578 |  |  | 2026-07-06 | 2026-07-07 | 2d | 4d | 0d | finish no earlier than 2026-07-07 | AUTOMAÇÃO E INSTRUMENTAÇÃO | Qua 01/07/26 | Qui 02/07/26 | Atendimento de comentários | Qua 01/07/26 | Qui 02/07/26 | Sprint 11 |
| 580 | 1.1.11.34.4 | Aprovação | 1d | 2026-07-08 | 2026-07-08 | 579 |  |  | 2026-07-08 | 2026-07-08 | 1d | 4d |  | start no earlier than 2026-07-08 | AUTOMAÇÃO E INSTRUMENTAÇÃO | Sex 03/07/26 | Sex 03/07/26 | Aprovação | Sex 03/07/26 | Sex 03/07/26 | Sprint 11 |
| 581 | 1.1.11.35 | **FD-F0009-0306-MB-J-00016** | 15d | 2026-06-18 A | 2026-07-08 |  | 80% | 3d | 2026-06-24 | 2026-07-08 | 11d | 4d |  |  | AUTOMAÇÃO E INSTRUMENTAÇÃO | Ter 16/06/26 | Sex 03/07/26 | FD-F0009-0306-MB-J-00008 | Ter 16/06/26 | Sex 03/07/26 | Sprint 8 |
| 582 | 1.1.11.35.1 | Emissão inicial | 9d | 2026-06-18 A | 2026-06-30 A | 507SS | 100% |  | 2026-06-24 | 2026-07-02 | 7d |  |  | finish no earlier than 2026-06-30 | AUTOMAÇÃO E INSTRUMENTAÇÃO | Ter 16/06/26 | Seg 29/06/26 | Emissão inicial | Ter 16/06/26 | Seg 29/06/26 | Sprint 8 |
| 583 | 1.1.11.35.2 | Análise Tecnored | 3d | 2026-07-01 A | 2026-07-03 A | 582 | 100% |  | 2026-07-03 | 2026-07-03 | 1d |  |  | finish no earlier than 2026-07-03 | AUTOMAÇÃO E INSTRUMENTAÇÃO | Ter 30/06/26 | Ter 30/06/26 | Análise Tecnored | Ter 30/06/26 | Ter 30/06/26 | Sprint 10 |
| 584 | 1.1.11.35.3 | Atendimento de comentários | 2d | 2026-07-06 | 2026-07-07 | 583 |  |  | 2026-07-06 | 2026-07-07 | 2d | 4d | 0d | finish no earlier than 2026-07-07 | AUTOMAÇÃO E INSTRUMENTAÇÃO | Qua 01/07/26 | Qui 02/07/26 | Atendimento de comentários | Qua 01/07/26 | Qui 02/07/26 | Sprint 11 |
| 585 | 1.1.11.35.4 | Aprovação | 1d | 2026-07-08 | 2026-07-08 | 584 |  |  | 2026-07-08 | 2026-07-08 | 1d | 4d |  | start no earlier than 2026-07-08 | AUTOMAÇÃO E INSTRUMENTAÇÃO | Sex 03/07/26 | Sex 03/07/26 | Aprovação | Sex 03/07/26 | Sex 03/07/26 | Sprint 11 |

| ID | WBS | Task | Duration | Start | Finish | Predecessors | Complete | Remaining | Baseline start | Baseline finish | Baseline duration | Total slack | Free slack | Constraint | Disciplina | Início_LB_R0 | Término_LB_R0 | Text5 | ILB_2 | TLB_2 | Sprints |
| --- | --- | --- | --- | --- | --- | --- | --- | --- | --- | --- | --- | --- | --- | --- | --- | --- | --- | --- | --- | --- | --- |
| 586 | 1.1.11.36 | **FD-F0009-0306-MB-J-00017** | 15d | 2026-06-18 A | 2026-07-08 |  | 80% | 3d | 2026-06-24 | 2026-07-08 | 11d | 4d |  |  | AUTOMAÇÃO E INSTRUMENTAÇÃO | Ter 16/06/26 | Sex 03/07/26 | FD-F0009-0306-MB-J-00008 | Ter 16/06/26 | Sex 03/07/26 | Sprint 8 |
| 587 | 1.1.11.36.1 | Emissão inicial | 9d | 2026-06-18 A | 2026-06-30 A | 507SS | 100% |  | 2026-06-19 | 2026-06-29 | 7d |  |  | finish no earlier than 2026-06-30 | AUTOMAÇÃO E INSTRUMENTAÇÃO | Sex 19/06/26 | Seg 29/06/26 | Emissão inicial | Ter 16/06/26 | Seg 29/06/26 | Sprint 8 |
| 588 | 1.1.11.36.2 | Análise Tecnored | 3d | 2026-07-01 A | 2026-07-03 A | 587 | 100% |  | 2026-06-30 | 2026-06-30 | 1d |  |  | finish no earlier than 2026-07-03 | AUTOMAÇÃO E INSTRUMENTAÇÃO | Ter 30/06/26 | Ter 30/06/26 | Análise Tecnored | Ter 30/06/26 | Ter 30/06/26 | Sprint 10 |
| 589 | 1.1.11.36.3 | Atendimento de comentários | 2d | 2026-07-06 | 2026-07-07 | 588 |  |  | 2026-07-01 | 2026-07-01 | 2d | 4d | 0d | finish no earlier than 2026-07-07 | AUTOMAÇÃO E INSTRUMENTAÇÃO | Qua 01/07/26 | Qua 01/07/26 | Atendimento de comentários | Qua 01/07/26 | Qui 02/07/26 | Sprint 11 |
| 590 | 1.1.11.36.4 | Aprovação | 1d | 2026-07-08 | 2026-07-08 | 589 |  |  | 2026-07-02 | 2026-07-02 | 1d | 4d |  | start no earlier than 2026-07-08 | AUTOMAÇÃO E INSTRUMENTAÇÃO | Qui 02/07/26 | Qui 02/07/26 | Aprovação | Sex 03/07/26 | Sex 03/07/26 | Sprint 11 |
| 591 | 1.1.11.37 | **FD-F0009-0306-MB-J-00018** | 15d | 2026-06-18 A | 2026-07-08 |  | 80% | 3d | 2026-06-24 | 2026-07-08 | 11d | 4d |  |  | AUTOMAÇÃO E INSTRUMENTAÇÃO | Ter 16/06/26 | Sex 03/07/26 | FD-F0009-0306-MB-J-00008 | Ter 16/06/26 | Sex 03/07/26 | Sprint 8 |
| 592 | 1.1.11.37.1 | Emissão inicial | 9d | 2026-06-18 A | 2026-06-30 A | 507SS | 100% |  | 2026-06-22 | 2026-06-30 | 7d |  |  | finish no earlier than 2026-06-30 | AUTOMAÇÃO E INSTRUMENTAÇÃO | Seg 22/06/26 | Ter 30/06/26 | Emissão inicial | Ter 16/06/26 | Seg 29/06/26 | Sprint 8 |
| 593 | 1.1.11.37.2 | Análise Tecnored | 3d | 2026-07-01 A | 2026-07-03 A | 592 | 100% |  | 2026-07-01 | 2026-07-01 | 1d |  |  | finish no earlier than 2026-07-03 | AUTOMAÇÃO E INSTRUMENTAÇÃO | Qua 01/07/26 | Qua 01/07/26 | Análise Tecnored | Ter 30/06/26 | Ter 30/06/26 | Sprint 10 |
| 594 | 1.1.11.37.3 | Atendimento de comentários | 2d | 2026-07-06 | 2026-07-07 | 593 |  |  | 2026-07-02 | 2026-07-02 | 2d | 4d | 0d | finish no earlier than 2026-07-07 | AUTOMAÇÃO E INSTRUMENTAÇÃO | Qui 02/07/26 | Qui 02/07/26 | Atendimento de comentários | Qua 01/07/26 | Qui 02/07/26 | Sprint 11 |
| 595 | 1.1.11.37.4 | Aprovação | 1d | 2026-07-08 | 2026-07-08 | 594 |  |  | 2026-07-03 | 2026-07-03 | 1d | 4d |  | start no earlier than 2026-07-08 | AUTOMAÇÃO E INSTRUMENTAÇÃO | Sex 03/07/26 | Sex 03/07/26 | Aprovação | Sex 03/07/26 | Sex 03/07/26 | Sprint 11 |
| 596 | 1.1.11.38 | **FD-F0009-0306-MB-J-00019** | 15d | 2026-06-18 A | 2026-07-08 |  | 80% | 3d | 2026-06-24 | 2026-07-08 | 11d | 4d |  |  | AUTOMAÇÃO E INSTRUMENTAÇÃO | Ter 16/06/26 | Sex 03/07/26 | FD-F0009-0306-MB-J-00008 | Ter 16/06/26 | Sex 03/07/26 | Sprint 8 |
| 597 | 1.1.11.38.1 | Emissão inicial | 9d | 2026-06-18 A | 2026-06-30 A | 507SS | 100% |  | 2026-06-22 | 2026-06-30 | 7d |  |  | finish no earlier than 2026-06-30 | AUTOMAÇÃO E INSTRUMENTAÇÃO | Seg 22/06/26 | Ter 30/06/26 | Emissão inicial | Ter 16/06/26 | Seg 29/06/26 | Sprint 8 |
| 598 | 1.1.11.38.2 | Análise Tecnored | 3d | 2026-07-01 A | 2026-07-03 A | 597 | 100% |  | 2026-07-01 | 2026-07-01 | 1d |  |  | finish no earlier than 2026-07-03 | AUTOMAÇÃO E INSTRUMENTAÇÃO | Qua 01/07/26 | Qua 01/07/26 | Análise Tecnored | Ter 30/06/26 | Ter 30/06/26 | Sprint 10 |
| 599 | 1.1.11.38.3 | Atendimento de comentários | 2d | 2026-07-06 | 2026-07-07 | 598 |  |  | 2026-07-02 | 2026-07-02 | 2d | 4d | 0d | finish no earlier than 2026-07-07 | AUTOMAÇÃO E INSTRUMENTAÇÃO | Qui 02/07/26 | Qui 02/07/26 | Atendimento de comentários | Qua 01/07/26 | Qui 02/07/26 | Sprint 11 |
| 600 | 1.1.11.38.4 | Aprovação | 1d | 2026-07-08 | 2026-07-08 | 599 |  |  | 2026-07-03 | 2026-07-03 | 1d | 4d |  | start no earlier than 2026-07-08 | AUTOMAÇÃO E INSTRUMENTAÇÃO | Sex 03/07/26 | Sex 03/07/26 | Aprovação | Sex 03/07/26 | Sex 03/07/26 | Sprint 11 |
| 601 | 1.1.11.39 | **FD-F0009-0306-MB-J-00020** | 15d | 2026-06-18 A | 2026-07-08 |  | 80% | 3d | 2026-06-24 | 2026-07-08 | 11d | 4d |  |  | AUTOMAÇÃO E INSTRUMENTAÇÃO | Ter 16/06/26 | Sex 03/07/26 | FD-F0009-0306-MB-J-00008 | Ter 16/06/26 | Sex 03/07/26 | Sprint 8 |
| 602 | 1.1.11.39.1 | Emissão inicial | 9d | 2026-06-18 A | 2026-06-30 A | 507SS | 100% |  | 2026-06-19 | 2026-06-29 | 7d |  |  | finish no earlier than 2026-06-30 | AUTOMAÇÃO E INSTRUMENTAÇÃO | Sex 19/06/26 | Seg 29/06/26 | Emissão inicial | Ter 16/06/26 | Seg 29/06/26 | Sprint 8 |
| 603 | 1.1.11.39.2 | Análise Tecnored | 3d | 2026-07-01 A | 2026-07-03 A | 602 | 100% |  | 2026-06-30 | 2026-06-30 | 1d |  |  | finish no earlier than 2026-07-03 | AUTOMAÇÃO E INSTRUMENTAÇÃO | Ter 30/06/26 | Ter 30/06/26 | Análise Tecnored | Ter 30/06/26 | Ter 30/06/26 | Sprint 10 |
| 604 | 1.1.11.39.3 | Atendimento de comentários | 2d | 2026-07-06 | 2026-07-07 | 603 |  |  | 2026-07-01 | 2026-07-01 | 2d | 4d | 0d | finish no earlier than 2026-07-07 | AUTOMAÇÃO E INSTRUMENTAÇÃO | Qua 01/07/26 | Qua 01/07/26 | Atendimento de comentários | Qua 01/07/26 | Qui 02/07/26 | Sprint 11 |
| 605 | 1.1.11.39.4 | Aprovação | 1d | 2026-07-08 | 2026-07-08 | 604 |  |  | 2026-07-02 | 2026-07-02 | 1d | 4d |  | start no earlier than 2026-07-08 | AUTOMAÇÃO E INSTRUMENTAÇÃO | Qui 02/07/26 | Qui 02/07/26 | Aprovação | Sex 03/07/26 | Sex 03/07/26 | Sprint 11 |
| 606 | 1.1.11.40 | **FD-F0009-0306-MB-J-00021** | 10d | 2026-06-19 A | 2026-07-02 |  | 80% | 2d | 2026-06-24 | 2026-07-08 | 11d | 8d |  |  | AUTOMAÇÃO E INSTRUMENTAÇÃO | Ter 16/06/26 | Sex 03/07/26 | FD-F0009-0306-MB-J-00008 | Ter 16/06/26 | Sex 03/07/26 | Sprint 8 |
| 607 | 1.1.11.40.1 | Emissão inicial | 6d | 2026-06-19 A | 2026-06-26 A | 507SS | 100% |  | 2026-06-19 | 2026-06-29 | 7d |  |  |  | AUTOMAÇÃO E INSTRUMENTAÇÃO | Sex 19/06/26 | Seg 29/06/26 | Emissão inicial | Ter 16/06/26 | Seg 29/06/26 | Sprint 8 |
| 608 | 1.1.11.40.2 | Análise Tecnored | 2d | 2026-06-29 A | 2026-06-30 A | 607 | 100% |  | 2026-06-30 | 2026-06-30 | 1d |  |  | finish no earlier than 2026-06-26 | AUTOMAÇÃO E INSTRUMENTAÇÃO | Ter 30/06/26 | Ter 30/06/26 | Análise Tecnored | Ter 30/06/26 | Ter 30/06/26 | Sprint 10 |
| 609 | 1.1.11.40.3 | Atendimento de comentários | 1d | 2026-07-01 | 2026-07-01 | 608 |  |  | 2026-07-01 | 2026-07-01 | 2d | 8d | 0d | start no earlier than 2026-06-29 | AUTOMAÇÃO E INSTRUMENTAÇÃO | Qua 01/07/26 | Qua 01/07/26 | Atendimento de comentários | Qua 01/07/26 | Qui 02/07/26 | Sprint 10 |
| 610 | 1.1.11.40.4 | Aprovação | 1d | 2026-07-02 | 2026-07-02 | 609 |  |  | 2026-07-02 | 2026-07-02 | 1d | 8d |  | finish no earlier than 2026-06-30 | AUTOMAÇÃO E INSTRUMENTAÇÃO | Qui 02/07/26 | Qui 02/07/26 | Aprovação | Sex 03/07/26 | Sex 03/07/26 | Sprint 10 |

| ID | WBS | Task | Duration | Start | Finish | Predecessors | Complete | Remaining | Baseline start | Baseline finish | Baseline duration | Total slack | Free slack | Constraint | Disciplina | Início_LB_R0 | Término_LB_R0 | Text5 | ILB_2 | TLB_2 | Sprints |
| --- | --- | --- | --- | --- | --- | --- | --- | --- | --- | --- | --- | --- | --- | --- | --- | --- | --- | --- | --- | --- | --- |
| 611 | 1.1.11.41 | **FD-F0009-0306-MB-J-00022** | 10d | 2026-06-18 A | 2026-07-01 |  | 70% | 3d | 2026-06-24 | 2026-07-08 | 11d | 9d |  |  | AUTOMAÇÃO E INSTRUMENTAÇÃO | Ter 16/06/26 | Sex 03/07/26 | FD-F0009-0306-MB-J-00008 | Ter 16/06/26 | Sex 03/07/26 | Sprint 8 |
| 612 | 1.1.11.41.1 | Emissão inicial | 7d | 2026-06-18 A | 2026-06-26 A | 507SS | 100% |  | 2026-06-19 | 2026-06-29 | 7d |  |  |  | AUTOMAÇÃO E INSTRUMENTAÇÃO | Sex 19/06/26 | Seg 29/06/26 | Emissão inicial | Ter 16/06/26 | Seg 29/06/26 | Sprint 8 |
| 613 | 1.1.11.41.2 | Análise Tecnored | 1d | 2026-06-29 | 2026-06-29 | 612 |  |  | 2026-06-30 | 2026-06-30 | 1d | 9d | 0d | finish no earlier than 2026-06-26 | AUTOMAÇÃO E INSTRUMENTAÇÃO | Ter 30/06/26 | Ter 30/06/26 | Análise Tecnored | Ter 30/06/26 | Ter 30/06/26 | Sprint 10 |
| 614 | 1.1.11.41.3 | Atendimento de comentários | 1d | 2026-06-30 | 2026-06-30 | 613 |  |  | 2026-07-01 | 2026-07-01 | 2d | 9d | 0d | start no earlier than 2026-06-29 | AUTOMAÇÃO E INSTRUMENTAÇÃO | Qua 01/07/26 | Qua 01/07/26 | Atendimento de comentários | Qua 01/07/26 | Qui 02/07/26 | Sprint 10 |
| 615 | 1.1.11.41.4 | Aprovação | 1d | 2026-07-01 | 2026-07-01 | 614 |  |  | 2026-07-02 | 2026-07-02 | 1d | 9d |  | finish no earlier than 2026-06-30 | AUTOMAÇÃO E INSTRUMENTAÇÃO | Qui 02/07/26 | Qui 02/07/26 | Aprovação | Sex 03/07/26 | Sex 03/07/26 | Sprint 10 |
| 616 | 1.1.11.42 | **FD-F0009-0306-MB-J-00023** | 11d | 2026-06-19 A | 2026-07-03 |  | 73% | 3d | 2026-06-24 | 2026-07-08 | 11d | 7d |  |  | AUTOMAÇÃO E INSTRUMENTAÇÃO | Ter 16/06/26 | Sex 03/07/26 | FD-F0009-0306-MB-J-00008 | Ter 16/06/26 | Sex 03/07/26 | Sprint 8 |
| 617 | 1.1.11.42.1 | Emissão inicial | 8d | 2026-06-19 A | 2026-06-30 A | 507SS | 100% |  | 2026-06-19 | 2026-06-29 | 7d |  |  | finish no earlier than 2026-06-30 | AUTOMAÇÃO E INSTRUMENTAÇÃO | Sex 19/06/26 | Seg 29/06/26 | Emissão inicial | Ter 16/06/26 | Seg 29/06/26 | Sprint 8 |
| 618 | 1.1.11.42.2 | Análise Tecnored | 1d | 2026-07-01 | 2026-07-01 | 617 |  |  | 2026-06-30 | 2026-06-30 | 1d | 7d | 0d | finish no earlier than 2026-06-26 | AUTOMAÇÃO E INSTRUMENTAÇÃO | Ter 30/06/26 | Ter 30/06/26 | Análise Tecnored | Ter 30/06/26 | Ter 30/06/26 | Sprint 10 |
| 619 | 1.1.11.42.3 | Atendimento de comentários | 1d | 2026-07-02 | 2026-07-02 | 618 |  |  | 2026-07-01 | 2026-07-01 | 2d | 7d | 0d | start no earlier than 2026-06-29 | AUTOMAÇÃO E INSTRUMENTAÇÃO | Qua 01/07/26 | Qua 01/07/26 | Atendimento de comentários | Qua 01/07/26 | Qui 02/07/26 | Sprint 10 |
| 620 | 1.1.11.42.4 | Aprovação | 1d | 2026-07-03 | 2026-07-03 | 619 |  |  | 2026-07-02 | 2026-07-02 | 1d | 7d |  | finish no earlier than 2026-06-30 | AUTOMAÇÃO E INSTRUMENTAÇÃO | Qui 02/07/26 | Qui 02/07/26 | Aprovação | Sex 03/07/26 | Sex 03/07/26 | Sprint 10 |
| 621 | 1.1.11.43 | **LB-F0009-0306-MB-J-00001** | 11d | 2026-06-30 A | 2026-07-16 |  | 49% | 5.64d | 2026-06-30 | 2026-07-08 | 7d | 0d |  |  | AUTOMAÇÃO E INSTRUMENTAÇÃO | Qua 24/06/26 | Qui 02/07/26 | FD-F0009-0306-MB-J-00009 | Ter 16/06/26 | Sex 03/07/26 | Sprint 10 |
| 622 | 1.1.11.43.1 | Emissão inicial | 3.8d | 2026-06-30 A | 2026-07-08 A | 482 | 100% |  | 2026-06-30 | 2026-07-06 | 3d |  |  | finish no earlier than 2026-07-08 | AUTOMAÇÃO E INSTRUMENTAÇÃO | Ter 30/06/26 | Seg 06/07/26 | Emissão inicial | Ter 16/06/26 | Seg 29/06/26 | Sprint 10 |
| 623 | 1.1.11.43.2 | Análise Tecnored | 1d | 2026-07-13 | 2026-07-13 | 622 |  |  | 2026-07-06 | 2026-07-07 | 1d | 0d |  |  | AUTOMAÇÃO E INSTRUMENTAÇÃO | Seg 06/07/26 | Ter 07/07/26 | Análise Tecnored | Ter 30/06/26 | Ter 30/06/26 | Sprint 12 |
| 624 | 1.1.11.43.3 | Atendimento de comentários | 2d | 2026-07-14 | 2026-07-15 | 623 |  |  | 2026-07-07 | 2026-07-13 | 2d | 0d |  |  | AUTOMAÇÃO E INSTRUMENTAÇÃO | Ter 07/07/26 | Seg 13/07/26 | Atendimento de comentários | Qua 01/07/26 | Qui 02/07/26 | Sprint 12 |
| 625 | 1.1.11.43.4 | Aprovação | 1d | 2026-07-16 | 2026-07-16 | 624 |  |  | 2026-07-13 | 2026-07-14 | 1d | 0d |  |  | AUTOMAÇÃO E INSTRUMENTAÇÃO | Seg 13/07/26 | Ter 14/07/26 | Aprovação | Sex 03/07/26 | Sex 03/07/26 | Sprint 12 |
| 626 | 1.1.11.44 | **RE-F0009-0306-MB-J-00001** | 13d | 2026-06-16 A | 2026-07-02 |  | 85% | 2d | 2026-06-30 | 2026-07-08 | 7d | 8d |  |  | AUTOMAÇÃO E INSTRUMENTAÇÃO | Qua 24/06/26 | Qui 02/07/26 | FD-F0009-0306-MB-J-00009 | Ter 16/06/26 | Sex 03/07/26 | Sprint 8 |
| 627 | 1.1.11.44.1 | Emissão inicial | 7d | 2026-06-16 A | 2026-06-24 A |  | 100% |  | 2026-06-16 | 2026-06-19 | 3d |  |  | finish no earlier than 2026-06-24 | AUTOMAÇÃO E INSTRUMENTAÇÃO | Ter 16/06/26 | Sex 19/06/26 | Emissão inicial | Ter 16/06/26 | Seg 29/06/26 | Sprint 8 |
| 628 | 1.1.11.44.2 | Análise Tecnored | 3d | 2026-06-25 A | 2026-06-29 A | 627 | 100% |  | 2026-06-22 | 2026-06-22 | 1d |  |  |  | AUTOMAÇÃO E INSTRUMENTAÇÃO | Seg 22/06/26 | Seg 22/06/26 | Análise Tecnored | Ter 30/06/26 | Ter 30/06/26 | Sprint 9 |
| 629 | 1.1.11.44.3 | Atendimento de comentários | 2d | 2026-06-30 A | 2026-07-01 | 628 | 50% | 1d | 2026-06-23 | 2026-06-24 | 2d | 8d | 0d |  | AUTOMAÇÃO E INSTRUMENTAÇÃO | Ter 23/06/26 | Qua 24/06/26 | Atendimento de comentários | Qua 01/07/26 | Qui 02/07/26 | Sprint 10 |
| 630 | 1.1.11.44.4 | Aprovação | 1d | 2026-07-02 | 2026-07-02 | 629 |  |  | 2026-06-25 | 2026-06-25 | 1d | 8d |  |  | AUTOMAÇÃO E INSTRUMENTAÇÃO | Qui 25/06/26 | Qui 25/06/26 | Aprovação | Sex 03/07/26 | Sex 03/07/26 | Sprint 10 |
| 631 | 1.1.11.45 | **DT-F0009-0306-MB-J-00001** | 12d | 2026-06-29 A | 2026-07-16 |  | 67% | 4d | 2026-06-30 | 2026-07-08 | 7d | 0d |  |  | AUTOMAÇÃO E INSTRUMENTAÇÃO | Qua 24/06/26 | Qui 02/07/26 | FD-F0009-0306-MB-J-00009 | Ter 16/06/26 | Sex 03/07/26 | Sprint 10 |
| 632 | 1.1.11.45.1 | Emissão inicial | 8d | 2026-06-29 A | 2026-07-08 A |  | 100% |  | 2026-06-30 | 2026-07-02 | 3d |  |  | finish no earlier than 2026-07-08 | AUTOMAÇÃO E INSTRUMENTAÇÃO | Qua 24/06/26 | Sex 26/06/26 | Emissão inicial | Ter 16/06/26 | Seg 29/06/26 | Sprint 10 |
| 633 | 1.1.11.45.2 | Análise Tecnored | 1d | 2026-07-13 | 2026-07-13 | 632 |  |  | 2026-07-03 | 2026-07-03 | 1d | 0d |  |  | AUTOMAÇÃO E INSTRUMENTAÇÃO | Seg 29/06/26 | Seg 29/06/26 | Análise Tecnored | Ter 30/06/26 | Ter 30/06/26 | Sprint 12 |
| 634 | 1.1.11.45.3 | Atendimento de comentários | 2d | 2026-07-14 | 2026-07-15 | 633 |  |  | 2026-07-06 | 2026-07-07 | 2d | 0d |  |  | AUTOMAÇÃO E INSTRUMENTAÇÃO | Ter 30/06/26 | Qua 01/07/26 | Atendimento de comentários | Qua 01/07/26 | Qui 02/07/26 | Sprint 12 |
| 635 | 1.1.11.45.4 | Aprovação | 1d | 2026-07-16 | 2026-07-16 | 634 |  |  | 2026-07-08 | 2026-07-08 | 1d | 0d |  |  | AUTOMAÇÃO E INSTRUMENTAÇÃO | Qui 02/07/26 | Qui 02/07/26 | Aprovação | Sex 03/07/26 | Sex 03/07/26 | Sprint 12 |

| ID | WBS | Task | Duration | Start | Finish | Predecessors | Complete | Remaining | Baseline start | Baseline finish | Baseline duration | Total slack | Constraint | Disciplina | Início_LB_R0 | Término_LB_R0 | Text5 | ILB_2 | TLB_2 | Sprints |
| --- | --- | --- | --- | --- | --- | --- | --- | --- | --- | --- | --- | --- | --- | --- | --- | --- | --- | --- | --- | --- |
| 636 | 1.1.12 | **Civil** | 9d | 2026-07-02 A | 2026-07-16 |  | 54% | 4.15d | 2026-06-16 | 2026-07-02 | 13d | 0d |  | CIVIL | Qua 03/06/26 | Sex 19/06/26 | FD-F0009-0306-MB-J-00010 | Ter 16/06/26 | Sex 03/07/26 | Sprint 10 |
| 637 | 1.1.12.1 | **MC-F0009-0306-MB-C-00001** | 9d | 2026-07-02 A | 2026-07-16 |  | 67% | 3d | 2026-06-16 | 2026-07-01 | 12d | 0d |  | CIVIL | Qua 03/06/26 | Qui 18/06/26 | Emissão inicial | Ter 16/06/26 | Seg 29/06/26 | Sprint 10 |
| 638 | 1.1.12.1.1 | Emissão inicial | 6d | 2026-07-02 A | 2026-07-13 A | 260FS-2d | 100% |  | 2026-06-16 | 2026-06-25 | 8d |  | finish no earlier than 2026-07-13 | CIVIL | Qua 03/06/26 | Sex 12/06/26 | Análise Tecnored | Ter 30/06/26 | Ter 30/06/26 | Sprint 10 |
| 639 | 1.1.12.1.2 | Análise Tecnored | 1d | 2026-07-14 | 2026-07-14 | 638 |  |  | 2026-06-26 | 2026-06-26 | 1d | 0d |  | CIVIL | Seg 15/06/26 | Seg 15/06/26 | Atendimento de comentários | Qua 01/07/26 | Qui 02/07/26 | Sprint 12 |
| 640 | 1.1.12.1.3 | Atendimento de comentários | 1d | 2026-07-15 | 2026-07-15 | 639 |  |  | 2026-06-29 | 2026-06-30 | 2d | 0d |  | CIVIL | Ter 16/06/26 | Qua 17/06/26 | Aprovação | Sex 03/07/26 | Sex 03/07/26 | Sprint 12 |
| 641 | 1.1.12.1.4 | Aprovação | 1d | 2026-07-16 | 2026-07-16 | 640 |  |  | 2026-07-01 | 2026-07-01 | 1d | 0d |  | CIVIL | Qui 18/06/26 | Qui 18/06/26 | FD-F0009-0306-MB-J-00011 | Ter 16/06/26 | Sex 03/07/26 | Sprint 12 |
| 642 | 1.1.12.2 | **PQ-F0009-0306-MB-C-00001** | 4d | 2026-07-13 A | 2026-07-16 |  | 25% | 3d | 2026-06-26 | 2026-07-02 | 5d | 0d |  | CIVIL | Seg 15/06/26 | Sex 19/06/26 | Emissão inicial | Ter 16/06/26 | Seg 29/06/26 | Sprint 12 |
| 643 | 1.1.12.2.1 | Emissão inicial | 1d | 2026-07-13 A | 2026-07-13 A | 638FF | 100% |  | 2026-06-26 | 2026-06-26 | 1d |  |  | CIVIL | Seg 15/06/26 | Seg 15/06/26 | Análise Tecnored | Ter 30/06/26 | Ter 30/06/26 | Sprint 12 |
| 644 | 1.1.12.2.2 | Análise Tecnored | 1d | 2026-07-14 | 2026-07-14 | 643 |  |  | 2026-06-29 | 2026-06-29 | 1d | 0d |  | CIVIL | Ter 16/06/26 | Ter 16/06/26 | Atendimento de comentários | Qua 01/07/26 | Qui 02/07/26 | Sprint 12 |
| 645 | 1.1.12.2.3 | Atendimento de comentários | 1d | 2026-07-15 | 2026-07-15 | 644 |  |  | 2026-06-30 | 2026-07-01 | 2d | 0d |  | CIVIL | Qua 17/06/26 | Qui 18/06/26 | Aprovação | Sex 03/07/26 | Sex 03/07/26 | Sprint 12 |
| 646 | 1.1.12.2.4 | Aprovação | 1d | 2026-07-16 | 2026-07-16 | 645 |  |  | 2026-07-02 | 2026-07-02 | 1d | 0d |  | CIVIL | Sex 19/06/26 | Sex 19/06/26 | FD-F0009-0306-MB-J-00012 | Ter 16/06/26 | Sex 03/07/26 | Sprint 12 |
